# LafroX — Etapas 1 y 2 con dependencias visibles

How a schedule from GanttProject changed from version to version. A marks actual dates.

## Version 1 (saved 2026-10-26)

Note of the change: Merge origin/LafroX-Subdoc7-LateX

| ID | Task | Duration | Start | Finish | Predecessors |
| --- | --- | --- | --- | --- | --- |
| 1 | RC / 5.1.4 Especificación y compra del sistema de cadena de frío | 42d | 2027-02-01 | 2027-03-31 |  |
| 2 | PT/H / 7 elementos: 1.1.1, 1.1.2, 1.1.3, 1.4.1, 1.4.2, 1.9.1, 1.9.2 | 7d | 2027-02-01 | 2027-02-09 |  |
| 3 | PT/H / 1.2.1 Documento de especificación de requerimientos y línea base de alcance de la Etapa 1 (H1) | 7d | 2027-02-01 | 2027-02-09 |  |
| 4 | PT/H / 1.2.2 Documento de reglas de ruteo capturadas al planificador de rutas | 64d | 2027-02-01 | 2027-04-30 |  |
| 5 | PT/H / 1.2.3 Documento de especificación de las interfaces sin documentación del ERP, del WMS de 2013 y de la telemetría del tercero | 7d | 2027-02-01 | 2027-02-09 |  |
| 6 | PT/H / 5 elementos: 1.3.5, 1.6.2, 1.8.1, 1.8.3, 1.8.6 | 419d | 2027-02-01 | 2028-09-29 |  |
| 7 | PT/H / 2 elementos: 2.3.1, 2.3.2 | 21d | 2027-02-01 | 2027-03-01 |  |
| 8 | PT/H / 1.3.1 Plan para la dirección del proyecto, con el calendario de congelamientos de septiembre, diciembre y el cierre mensual | 7d | 2027-02-10 | 2027-02-18 |  |
| 9 | PT/H / 1.2.4 Matriz de trazabilidad: requerimiento, módulo, paquete y prueba (H1) | 7d | 2027-03-01 | 2027-03-09 |  |
| 10 | PT/H / 7 elementos: 1.3.2, 1.3.3, 1.3.4, 1.5.1, 1.6.1, 1.9.3, 5.1.1 | 7d | 2027-03-01 | 2027-03-09 |  |
| 11 | PT/H / 2.1.1 Documento de arquitectura lógica: capas, módulos M1 a M12 e interfaces | 20d | 2027-03-01 | 2027-03-29 | 3FF, 21FF |
| 12 | PT/H / 3 elementos: 2.1.2, 2.1.3, 2.2.4 | 20d | 2027-03-01 | 2027-03-29 |  |
| 13 | PT/H / 2.2.1 Plan de seguridad de la información | 20d | 2027-03-01 | 2027-03-29 |  |
| 14 | PT/H / 2 elementos: 2.3.3, 2.6.1 | 20d | 2027-03-01 | 2027-03-29 |  |
| 15 | PT/H / 3.10.2.1 Innovación 2: informe de medición inicial y contrato de evidencia (INN-02.P1) | 36d | 2027-03-01 | 2027-04-20 |  |
| 16 | PT/H / 5.2.1 Contrato de los servicios de AWS | 7d | 2027-03-01 | 2027-03-09 |  |
| 17 | PT/H / 5.3.4 Contrato de SIM M2M y servicio satelital de los camiones con frío | 10d | 2027-03-01 | 2027-03-12 | 1SS |
| 18 | PT/H / 7.2.3 Diagnóstico del impacto organizacional por área y perfil, con agentes de cambio | 60d | 2027-03-01 | 2027-05-25 |  |
| 19 | PT/H / 5.1.2 Especificación y compra de la sala técnica, los racks, los servidores y los gabinetes de borde | 7d | 2027-03-02 | 2027-03-10 | 7 |
| 20 | PT/H / H1 — entrega del expediente | 0d | 2027-03-09 | 2027-03-09 | 3FS-1d, 9FS-1d |
| 21 | PT/H / H1 — acta del CLIENTE (límite: mes 2) | 0d | 2027-03-23 | 2027-03-23 | 20FS+10d |
| 22 | RC / 2.4.3 Validación del diseño del kit en banco de pruebas | 22d | 2027-04-01 | 2027-04-30 | 1, 17 |
| 23 | PT/H / 1.7.1 Plan de Reversibilidad inicial (primeros 90 días) | 7d | 2027-04-01 | 2027-04-09 |  |
| 24 | PT/H / 2.2.2 Modelado de amenazas por componente y por integración externa, actualizado ante cada cambio | 167d | 2027-04-01 | 2027-11-30 |  |
| 25 | PT/H / 2.2.3 Plan de respuesta a incidentes de seguridad, con aviso al CLIENTE en dos horas | 12d | 2027-04-01 | 2027-04-16 |  |
| 26 | PT/H / 2 elementos: 2.5.1, 2.5.2 | 21d | 2027-04-01 | 2027-04-29 |  |
| 27 | PT/H / 2.6.2 Prototipos y pruebas de usabilidad con participantes del CLIENTE | 21d | 2027-04-01 | 2027-04-29 |  |
| 28 | PT/H / 2 elementos: 3.10.2.2, 3.10.3.1 | 49d | 2027-04-01 | 2027-06-09 |  |
| 29 | PT/H / 4 elementos: 6.1.1, 6.1.2, 6.1.3, 6.1.4 | 14d | 2027-04-01 | 2027-04-20 | 19 |
| 30 | PT/H / 2.4.1 Acta de aprobación de la arquitectura, el plan de seguridad y el modelo de datos (H2) | 9d | 2027-04-19 | 2027-04-29 | 11, 12, 13, 25 |
| 31 | PT/H / H2 — entrega del expediente | 0d | 2027-04-29 | 2027-04-29 | 30FS-1d |
| 32 | RC / 2.6.3 Indicadores de usabilidad comprometidos por transacción crítica | 20d | 2027-05-03 | 2027-05-31 |  |
| 33 | RC / 3.1.4 Cadena de integración y entrega continua, e infraestructura como código | 20d | 2027-05-03 | 2027-05-31 |  |
| 34 | RC / 4 elementos: 3.2.1, 3.2.2, 3.2.4, 3.2.5 | 20d | 2027-05-03 | 2027-05-31 | 16 |
| 35 | RC / 3.2.3 Servicio de nube de ingesta de IoT, telemetría cruda y plataforma analítica | 20d | 2027-05-03 | 2027-05-31 | 16 |
| 36 | RC / 6.1.5 Acta de recepción técnica de la sala | 14d | 2027-05-03 | 2027-05-20 | 19, 29 |
| 37 | PT/H / 2.4.4 Mapeo térmico por tipo de carrocería | 19d | 2027-05-03 | 2027-05-28 | 22 |
| 38 | PT/H / 2 elementos: 3.11.3, 3.11.4 | 355d | 2027-05-03 | 2028-09-29 |  |
| 39 | PT/H / 5 elementos: 5.2.2, 5.2.3, 5.3.1, 5.3.2, 5.3.3 | 7d | 2027-05-03 | 2027-05-11 |  |
| 40 | PT/H / 6.2.1 Cableado de cobre Cat6A y fibra OM4 tendido, con dos ductos de ingreso independientes | 14d | 2027-05-03 | 2027-05-20 |  |
| 41 | PT/H / 6.3.3 Gabinete de borde de Concepción montado: servidores activo y en espera, firewalls, switches, UPS, climatización y monitoreo | 14d | 2027-05-03 | 2027-05-20 |  |
| 42 | PT/H / H2 — acta del CLIENTE (límite: mes 4) | 0d | 2027-05-13 | 2027-05-13 | 31FS+10d |
| 43 | RC / 2 elementos: 6.3.1, 6.3.2 | 13d | 2027-05-24 | 2027-06-09 | 36 |
| 44 | PT/H / 3 elementos: 3.1.1, 3.1.2, 3.1.3 | 14d | 2027-06-01 | 2027-06-18 | 34 |
| 45 | PT/H / 3.1.5 Observabilidad de los doce módulos y de los sitios, con tableros para el CLIENTE (H3) | 14d | 2027-06-01 | 2027-06-18 |  |
| 46 | PT/H / 3.2.6 Servicio de gestión de dispositivos móviles | 19d | 2027-06-01 | 2027-06-29 | 16 |
| 47 | PT/H / 3.3.1 Identidad y control de acceso, incluidos los conductores externos que rotan sin aviso | 45d | 2027-06-01 | 2027-08-05 | 13 |
| 48 | PT/H / 3.3.2 Integración con el ERP como único emisor de la guía de despacho (INT-06 e INT-07) | 21d | 2027-06-01 | 2027-07-01 | 5 |
| 49 | PT/H / 3.3.3 Convivencia con el WMS de 2013 durante el reemplazo | 25d | 2027-06-01 | 2027-07-07 |  |
| 50 | PT/H / 3.3.5 Registro auditable de stock, lotes y cobros | 43d | 2027-06-01 | 2027-08-03 |  |
| 51 | PT/H / 3.10.2.3 Innovación 2: captura de evidencia en las aplicaciones de preventa, preparación y reparto (INN-02.P3) | 90d | 2027-06-01 | 2027-10-08 |  |
| 52 | PT/H / 5.1.3 Actas de recepción técnica del equipamiento de terreno comprado por el CLIENTE y de la infraestructura provista por LafroX | 7d | 2027-06-01 | 2027-06-09 |  |
| 53 | PT/H / 6.4.1 Hardware de control de acceso biométrico y esclusa instalado | 14d | 2027-06-01 | 2027-06-18 |  |
| 54 | PT/H / 3.3.6 Operación sin conexión: 14 horas en terreno y 24 horas en el CD | 39d | 2027-06-07 | 2027-08-03 |  |
| 55 | PT/H / 3.10.3.2 Innovación 3: asociación lote–sensor en el borde y en el camión (INN-03.P2) | 72d | 2027-06-07 | 2027-09-20 |  |
| 56 | PT/H / 6.4.2 Hardware de videovigilancia instalado | 13d | 2027-06-07 | 2027-06-24 |  |
| 57 | RC / 2 elementos: 6.6.1, 6.6.2 | 13d | 2027-06-10 | 2027-06-30 | 41, 43 |
| 58 | PT/H / 3.3.4 Integración con la telemetría de los 42 camiones propios (INT-15) | 21d | 2027-06-10 | 2027-07-12 |  |
| 59 | PT/H / 3.4.1 Recepción de mercadería con captura de lote y vencimiento (M1 Recepción) | 41d | 2027-06-10 | 2027-08-10 | 27, 30, 33FF, 42, 44FF, 45FF, 47SS, 48SS, 49SS, 50SS, 54SS, 58SS |
| 60 | PT/H / 3.4.2 Inventario por ubicación y lote, con FEFO y conteo cíclico (M2 Inventario) | 42d | 2027-06-10 | 2027-08-11 | 27, 30, 33FF, 42, 44FF, 45FF, 47SS, 48SS, 49SS, 50SS, 54SS, 58SS |
| 61 | PT/H / 3.4.10 Cobro en ruta, rendición y conciliación (M7 Cobranza y rendición) | 79d | 2027-06-10 | 2027-10-04 | 27, 30, 33FF, 42, 44FF, 45FF, 47SS, 48SS, 49SS, 50SS, 54SS, 58SS, 68FF+2d |
| 62 | PT/H / 6.6.3 Borde de los CD en servicio, con la prueba de autonomía de 24 horas aprobada | 7d | 2027-06-10 | 2027-06-18 | 41, 43 |
| 63 | PT/H / 3.4.3 Preparación de pedidos en el turno de noche y en la cámara de congelado (M5 Preparación) | 45d | 2027-06-14 | 2027-08-18 | 27, 30, 33FF, 42, 44FF, 45FF, 47SS, 48SS, 49SS, 50SS, 54SS, 58SS, 59FF+2d, 60FF+2d |
| 64 | PT/H / 3.4.4 Cadena de frío, retención por SSCC y retiro sanitario (M9 Calidad y trazabilidad) | 74d | 2027-06-14 | 2027-09-29 | 22, 27, 30, 33FF, 37, 42, 44FF, 45FF, 47SS, 48SS, 49SS, 50SS, 54SS, 58SS, 59FF+2d, 60FF+2d |
| 65 | PT/H / 3.4.5 Ingesta de temperatura (M9) y posición de flota (M12) | 53d | 2027-06-14 | 2027-08-30 | 22, 27, 30, 33FF, 35, 37, 42, 44FF, 45FF, 47SS, 48SS, 49SS, 50SS, 54SS, 58SS |
| 66 | PT/H / 3.4.6 Aplicación móvil de preventa sin conexión, con stock y crédito (M3 Preventa) | 42d | 2027-06-16 | 2027-08-17 | 27, 30, 33FF, 42, 44FF, 45FF, 47SS, 48SS, 49SS, 50SS, 54SS, 58SS, 60SS |
| 67 | PT/H / 3.4.7 Planificación de rutas corregible por el planificador (M4 Rutas) | 58d | 2027-06-16 | 2027-09-08 | 4, 27, 30, 33FF, 42, 44FF, 45FF, 47SS, 48SS, 49SS, 50SS, 54SS, 58SS, 63FF+2d, 66FF+2d |
| 68 | PT/H / 3.4.8 Aplicación móvil de reparto con prueba de entrega digital (M6 Reparto) | 59d | 2027-06-16 | 2027-09-09 | 27, 30, 33FF, 42, 44FF, 45FF, 47SS, 48SS, 49SS, 50SS, 54SS, 58SS, 63FF+2d, 66FF+2d |
| 69 | RC / 3.4.9 Devoluciones en terreno y control de envases (M8 Devoluciones y envases) | 71d | 2027-06-18 | 2027-09-30 | 27, 30, 33FF, 42, 44FF, 45FF, 47SS, 48SS, 49SS, 50SS, 54SS, 58SS |
| 70 | PT/H / H3 — entrega del expediente | 0d | 2027-06-18 | 2027-06-18 | 44FS-1d, 45FS-1d, 62FS-1d |

| ID | Task | Duration | Start | Finish | Predecessors |
| --- | --- | --- | --- | --- | --- |
| 71 | PT/H / 6.4.3 Recinto de custodia de respaldos habilitado | 13d | 2027-06-22 | 2027-07-09 |  |
| 72 | PT/H / 2 elementos: 1.5.2, 3.11.5 | 315d | 2027-07-01 | 2028-09-29 |  |
| 73 | PT/H / 3 elementos: 3.6.2, 3.6.3, 3.6.4 | 22d | 2027-07-01 | 2027-08-02 |  |
| 74 | PT/H / 6.2.2 Certificación de enlaces, etiquetado y planos as-built | 13d | 2027-07-01 | 2027-07-20 |  |
| 75 | PT/H / H3 — acta del CLIENTE (límite: mes 6) | 0d | 2027-07-06 | 2027-07-06 | 70FS+10d |
| 76 | PT/H / 3.6.1 Intercambio de lote y trazabilidad con los proveedores | 23d | 2027-08-02 | 2027-09-01 |  |
| 77 | PT/H / 3.10.1.1 Innovación 1: documento de catálogo de acciones y protocolo del piloto (INN-01.P1) | 49d | 2027-08-02 | 2027-10-08 |  |
| 78 | PT/H / 5.4.4 Contrato de custodia de fuentes con un tercero independiente | 7d | 2027-08-02 | 2027-08-10 |  |
| 79 | PT/H / 6.2.3 Gabinetes de piso y switches de acceso instalados en las bodegas de Talca y Concepción | 14d | 2027-08-02 | 2027-08-19 |  |
| 80 | PT/H / 3.7.1 Informe de perfilamiento y datos saneados | 42d | 2027-08-04 | 2027-10-01 |  |
| 81 | PT/H / 6.5.4 Kit de cadena de frío instalado y recibido en los 28 camiones con frío | 94d | 2027-09-01 | 2028-01-14 | 1, 22, 37 |
| 82 | PT/H / 7.2.4 Procedimientos operativos rediseñados, contingencia de frío y ruptura confirmada | 272d | 2027-09-01 | 2028-09-29 |  |
| 83 | PT/H / 3.4.11 Indicadores operacionales y OTIF diario (M10 Analítica) | 17d | 2027-09-02 | 2027-09-27 | 27, 30, 33FF, 42, 44FF, 45FF, 47SS, 48SS, 49SS, 50SS, 54SS, 58SS |
| 84 | PT/H / Cuatro kits de frío recibidos para el piloto | 0d | 2027-09-30 | 2027-09-30 | 81SS |
| 85 | PT/H / 3 elementos: 3.10.1.2, 3.10.1.3, 3.10.3.3 | 34d | 2027-10-01 | 2027-11-19 |  |
| 86 | PT/H / 2 elementos: 5.4.1, 5.4.2 | 7d | 2027-10-01 | 2027-10-12 |  |
| 87 | PT/H / 6.3.4 Gabinetes de borde montados en Curicó, Chillán y Los Ángeles, con dos mini-PC (activo y en espera) por plataforma | 13d | 2027-10-01 | 2027-10-20 |  |
| 88 | PT/H / 3.7.2 Datos maestros cargados: 8.400 SKU, clientes e instalaciones | 21d | 2027-10-04 | 2027-11-03 |  |
| 89 | PT/H / 3.8.1 Pruebas de integración, regresión e idempotencia en QA (H4) | 13d | 2027-10-05 | 2027-10-22 | 59, 60, 61, 63, 64, 65, 66, 67, 68, 69, 73, 76, 83 |
| 90 | PT/H / 6.5.1 Terminales de preventa, reparto y bodega configurados y enrolados | 70d | 2027-10-06 | 2028-01-14 | 46 |
| 91 | PT/H / 6.5.3 Sensores de cámara y gateways IoT instalados en Talca y Concepción | 35d | 2027-10-06 | 2027-11-25 |  |
| 92 | PT/H / 6.5.6 Impresoras de andén y balanzas de recepción instaladas | 70d | 2027-10-06 | 2028-01-14 |  |
| 93 | PT/H / H4 — entrega del expediente | 0d | 2027-10-22 | 2027-10-22 | 89FS-1d |
| 94 | PT/H / 2 elementos: 3.8.2, 3.8.3 | 19d | 2027-10-25 | 2027-11-19 | 89 |
| 95 | PT/H / 4 elementos: 3.8.4, 3.8.5, 3.8.6, 3.8.8 | 13d | 2027-10-25 | 2027-11-11 | 89 |
| 96 | PT/H / 3.11.2 Base de conocimiento de incidentes y decisiones de diseño | 231d | 2027-11-02 | 2028-09-29 |  |
| 97 | PT/H / 4.1.1 Plan de olas de la Etapa 1 por sitio y zona: Talca, Concepción y plataformas de cross-docking | 7d | 2027-11-02 | 2027-11-10 |  |
| 98 | PT/H / 2 elementos: 7.1.1, 7.1.6 | 38d | 2027-11-02 | 2027-12-24 |  |
| 99 | PT/H / 7.1.5 Materiales de capacitación: manuales por perfil, guías rápidas, preguntas frecuentes y videos tutoriales | 190d | 2027-11-02 | 2028-07-31 |  |
| 100 | PT/H / 7.2.1 Acompañamiento del personal con 20 o 30 años en la compañía | 149d | 2027-11-02 | 2028-05-31 |  |
| 101 | PT/H / 2 elementos: 6.5.2, 6.5.5 | 51d | 2027-11-04 | 2028-01-14 |  |
| 102 | PT/H / H4 — acta del CLIENTE (límite: mes 10) | 0d | 2027-11-08 | 2027-11-08 | 93FS+10d |
| 103 | PT/H / 4.1.4 Piloto de cadena de frío en cuatro camiones | 29d | 2027-11-09 | 2027-12-20 | 17, 22, 37, 64, 65, 84, 89, 102 |
| 104 | PT/H / 3.8.7 Acta de certificación de la Etapa 1 (H5) | 8d | 2027-11-22 | 2027-12-01 | 94, 95 |
| 105 | RC / 2 elementos: 3.7.3, 3.7.4 | 22d | 2027-12-01 | 2027-12-31 |  |
| 106 | PT/H / 3 elementos: 3.10.1.4, 3.10.2.4, 3.10.3.4 | 78d | 2027-12-01 | 2028-03-20 |  |
| 107 | PT/H / 4.1.2 Procedimiento de reversión de la Etapa 1 antes de las 05:30, con versión operativa local y DTE emitidos por el ERP | 7d | 2027-12-01 | 2027-12-10 |  |
| 108 | PT/H / 7.1.3 Incorporación de conductores de transportistas, escaneos y lectura del rojo | 210d | 2027-12-01 | 2028-09-29 |  |
| 109 | PT/H / H5 — entrega del expediente | 0d | 2027-12-01 | 2027-12-01 | 104FS-1d |
| 110 | PT/H / 3.7.5 Acta de conciliación y corte fuera de las ventanas de congelamiento | 19d | 2028-01-03 | 2028-01-27 | 80FF+3d, 88FF+3d, 105FF+3d |
| 111 | PT/H / H5 — acta del CLIENTE (límite: mes 12) | 0d | 2028-01-03 | 2028-01-03 | 109FS+10d |
| 112 | RC / H6 — inicio de marcha blanca (mes 13) | 0d | 2028-02-01 | 2028-02-01 | 117SS |
| 113 | PT/H / 1.2.5 Documento de línea base de alcance de la Etapa 2: canal moderno y costo de servir (H8) | 7d | 2028-02-01 | 2028-02-09 |  |
| 114 | PT/H / 2.1.4 Documento de diseño detallado de M11 y del intercambio con las cadenas | 12d | 2028-02-01 | 2028-02-16 |  |
| 115 | PT/H / 3.6.5 Intercambio electrónico con la principal cadena, con sus pruebas aprobadas (INT-08) | 107d | 2028-02-01 | 2028-07-04 |  |
| 116 | PT/H / 3.10.4.1 Innovación 5: prototipo e informe de la prueba de comprensión (INN-05.P1) | 36d | 2028-02-01 | 2028-03-21 |  |
| 117 | PT/H / 4.2.1 Marcha blanca de la Etapa 1 con conciliación diaria (H6) | 63d | 2028-02-01 | 2028-04-28 | 97, 107, 110, 111 |
| 118 | PT/H / 7.2.5 Medición de la adopción y plan de acción correctiva | 187d | 2028-02-01 | 2028-10-31 |  |
| 119 | PT/H / 7.3.1 Certificación de preventistas, conductores y preparadores (Etapa 1) | 39d | 2028-02-01 | 2028-03-24 |  |
| 120 | PT/H / 2.4.2 Acta de aprobación del diseño detallado de la Etapa 2 (H8) | 8d | 2028-02-17 | 2028-02-28 | 113, 114 |
| 121 | PT/H / H8 — entrega del expediente | 0d | 2028-02-28 | 2028-02-28 | 113FS-1d, 120FS-1d |
| 122 | PT/H / Inicio de la ola 3 de reparto | 0d | 2028-02-29 | 2028-02-29 | 81FS-1d, 86FS-1d, 103FS-1d |
| 123 | PT/H / 3.10.4.2 Innovación 5: evaluación de privacidad y diseño de la impresión en cabina (INN-05.P2) | 35d | 2028-03-01 | 2028-04-19 |  |
| 124 | PT/H / H8 — acta del CLIENTE (límite: mes 14) | 0d | 2028-03-13 | 2028-03-13 | 121FS+10d |
| 125 | RC / 4 elementos: 3.5.1, 3.5.2, 3.5.3, 3.5.4 | 32d | 2028-03-15 | 2028-04-28 | 113, 120, 124 |
| 126 | PT/H / 1.7.2 Primera actualización anual del Plan de Reversibilidad durante la implementación | 7d | 2028-04-03 | 2028-04-11 |  |
| 127 | PT/H / 3.10.4.3 Innovación 5: cálculo y bloques 1 a 3 de la hoja de negocio (INN-05.P3) | 48d | 2028-04-03 | 2028-06-09 |  |
| 128 | PT/H / 3.11.1 Documentación técnica, funcional, de arquitectura, de operación y de seguridad | 143d | 2028-04-03 | 2028-10-31 |  |
| 129 | PT/H / 7.1.4 Traspaso al equipo de TI de cuatro personas del CLIENTE | 123d | 2028-04-03 | 2028-09-29 |  |
| 130 | PT/H / 3.9.1 Pruebas de integración y regresión sin afectar la Etapa 1 en producción (H9) | 13d | 2028-05-02 | 2028-05-18 | 125 |
| 131 | PT/H / 4.2.2 Estabilización de la Etapa 1, acompañamiento en ruta y restauraciones de soporte puente | 104d | 2028-05-02 | 2028-09-29 |  |
| 132 | PT/H / 7.2.2 Gestión del cambio con las cadenas y los transportistas | 38d | 2028-05-02 | 2028-06-23 |  |
| 133 | PT/H / 4.2.3 Acta de paso a producción y cierre de la Etapa 1 (H7) | 7d | 2028-05-05 | 2028-05-15 | 117, 119 |
| 134 | PT/H / H7 — entrega del expediente | 0d | 2028-05-15 | 2028-05-15 | 133FS-1d |
| 135 | PT/H / H9 — entrega del expediente | 0d | 2028-05-18 | 2028-05-18 | 130FS-1d |
| 136 | PT/H / 3 elementos: 3.9.3, 3.9.4, 3.9.7 | 10d | 2028-05-19 | 2028-06-01 | 130 |
| 137 | PT/H / 3.9.5 Prueba de seguridad ofensiva de la Etapa 2, por un tercero independiente | 6d | 2028-05-19 | 2028-05-26 | 130 |
| 138 | RC / H7 — acta del CLIENTE (límite: mes 16) | 0d | 2028-05-29 | 2028-05-29 | 134FS+10d |
| 139 | PT/H / 3.6.6 Incorporación de las demás cadenas al intercambio electrónico (INT-08) | 57d | 2028-06-01 | 2028-08-23 |  |
| 140 | PT/H / 4.1.3 Plan de implantación y reversión de la Etapa 2 fuera de la ventana de 05:30 a 07:00 | 7d | 2028-06-01 | 2028-06-09 |  |

| ID | Task | Duration | Start | Finish | Predecessors |
| --- | --- | --- | --- | --- | --- |
| 141 | PT/H / 5.4.3 Fórmula aprobada del tramo variable: reglas de atribución, canasta e índices (INN-04.P1) | 7d | 2028-06-01 | 2028-06-09 |  |
| 142 | PT/H / H9 — acta del CLIENTE (límite: mes 17) | 0d | 2028-06-01 | 2028-06-01 | 135FS+10d |
| 143 | PT/H / 3.9.2 Pruebas de aceptación y de accesibilidad con cadenas, transportistas, Comercial y Finanzas | 10d | 2028-06-02 | 2028-06-15 | 130 |
| 144 | PT/H / 3.9.6 Acta de certificación de la Etapa 2 y cierre del desarrollo (H10) | 7d | 2028-06-16 | 2028-06-28 | 130, 136, 137, 143 |
| 145 | PT/H / H10 — entrega del expediente | 0d | 2028-06-28 | 2028-06-28 | 144FS-1d |
| 146 | PT/H / 3.10.4.4 Innovación 5: hoja certificada, en marcha blanca y en producción (INN-05.P4, primera parte) | 62d | 2028-07-03 | 2028-09-29 |  |
| 147 | PT/H / 7.3.2 Certificación de Comercial y Finanzas en costo de servir (Etapa 2) | 17d | 2028-07-03 | 2028-07-25 |  |
| 148 | PT/H / H10 — acta del CLIENTE (límite: mes 18) | 0d | 2028-07-12 | 2028-07-12 | 145FS+10d |
| 149 | RC / H11 — inicio de marcha blanca (mes 19) | 0d | 2028-08-01 | 2028-08-01 | 150SS |
| 150 | PT/H / 4.3.1 Marcha blanca de la Etapa 2 en convivencia con la Etapa 1 y fuente única de datos (H11) | 41d | 2028-08-01 | 2028-09-29 | 115, 140, 148 |
| 151 | PT/H / 4.3.4 Garantía de correcto funcionamiento constituida, condición de la aceptación final (H12) | 7d | 2028-09-13 | 2028-09-25 |  |
| 152 | PT/H / 4.3.2 Estabilización de la Etapa 2 con Comercial, Finanzas, cadenas y transportistas | 41d | 2028-10-02 | 2028-11-30 |  |
| 153 | PT/H / 4.3.3 Acta de paso a producción y aceptación final de la implementación (H12) | 7d | 2028-10-02 | 2028-10-11 | 129, 147, 150, 151 |
| 154 | PT/H / H12 — entrega del expediente | 0d | 2028-10-11 | 2028-10-11 | 151FS-1d, 153FS-1d |
| 155 | RC / H12 — acta del CLIENTE (límite: mes 21) | 0d | 2028-10-25 | 2028-10-25 | 154FS+10d |

## Version 2 (saved 2026-10-26)

Note of the change: docs(sd7): usa solo cartas Gantt de GanttProject y cumple calendario

Last finish stays 2028-11-30.

Changed:

| ID | Task | Start | Duration |
| --- | --- | --- | --- |
| 131 | PT/H / 4.2.2 Estabilización de la Etapa 1, acompañamiento en ruta y restauraciones de soporte puente | 2028-05-02 → 2028-05-05 (+3d) | 104d → 101d |
| 152 | PT/H / 4.3.2 Estabilización de la Etapa 2 con Comercial, Finanzas, cadenas y transportistas | 2028-10-02 → 2028-10-05 (+3d) | 41d → 38d |

## Version 3 (saved 2026-10-27)

Note of the change: docs(sd7): actualiza programación, formularios y evidencias de revisión

Last finish stays 2028-11-30.

Changed:

| ID | Task | Other |
| --- | --- | --- |
| 133 | PT/H / 4.2.3 Acta de aceptación de la Etapa 1 (H7) | was named PT/H / 4.2.3 Acta de paso a producción y cierre de la Etapa 1 (H7) |
| 153 | PT/H / 4.3.3 Acta de aceptación final de la implementación (H12) | was named PT/H / 4.3.3 Acta de paso a producción y aceptación final de la implementación (H12) |

## Version 4 (saved 2026-11-22)

Note of the change: update masivo

Last finish 2028-11-30 → 2031-09-30 (+1034d).

Added:

| ID | Task | Duration | Start | Finish | Predecessors |
| --- | --- | --- | --- | --- | --- |
| 52 | 7.2.1 · Fin de referencia para la precedencia | 0d | 2027-04-20 | 2027-04-20 | 29FS-1d |
| 93 | 7.2.2 · Fin de referencia para la precedencia | 0d | 2027-06-09 | 2027-06-09 | 45FS-1d |
| 94 | 7.3.1 · Fin de referencia para la precedencia | 0d | 2027-06-09 | 2027-06-09 | 46FS-1d |
| 159 | 4.2.1 · Cierre del paquete | 0d | 2027-08-24 | 2027-08-24 | 108FS-1d, 157SS+2d, 158SS+2d |
| 160 | 4.5.1 Indicadores operacionales y OTIF diario (M10 Analítica) | 25d | 2027-08-25 | 2027-09-29 | 43FS+80d, 72FS+74d, 77SF+85d, 78FF+70d, 79FF+70d, 80FF+70d, 81FF+70d, 83SS+59d, 84SS+59d, 85SS+59d, 86SS+59d, 90SS+55d, 99SS+52d, 159SS+1d |
| 161 | 3.3.4 Parametrización y motor de reglas versionados | 21d | 2027-09-01 | 2027-09-30 | 72FS+79d, 84FS+20d |
| 162 | 3.3.5 Gestión documental con versionado, búsqueda y vista previa | 21d | 2027-09-01 | 2027-09-30 | 72FS+79d, 83FS+18d |
| 163 | 3.3.6 Generación de documentos con plantillas administrables | 21d | 2027-09-01 | 2027-09-30 | 72FS+79d, 162SS |
| 164 | 8.6.4 Kit de cadena de frío instalado y recibido en los 28 camiones con frío | 94d | 2027-09-01 | 2028-01-14 | 12FS+106d, 44FS+84d, 58FS+65d |
| 165 | 4.3.2 · Integración con 4.1.3 | 0d | 2027-09-15 | 2027-09-15 | 146FS+29d, 153SS+23d |
| 166 | 4.3.2 · Integración con 4.3.1 | 0d | 2027-09-15 | 2027-09-15 | 140FS+30d, 154SS+23d |
| 167 | 4.3.2 · Cierre del paquete | 0d | 2027-09-20 | 2027-09-20 | 148FS-1d, 165SS+2d, 166SS+2d |
| 168 | 4.3.3 · Integración con 4.1.3 | 0d | 2027-09-24 | 2027-09-24 | 147FS+35d, 151SS+31d |
| 169 | 4.3.3 · Integración con 4.3.1 | 0d | 2027-09-24 | 2027-09-24 | 141FS+36d, 152SS+31d |
| 170 | 4.3.3 · Cierre del paquete | 0d | 2027-09-27 | 2027-09-27 | 142FS-1d, 168SS+1d, 169SS+1d, 171SS |
| 171 | 4.3.3 → 4.3.5 · Incremento para integración | 0d | 2027-09-27 | 2027-09-27 | 149FS+33d |
| 172 | 4.3.5 · Integración con 4.3.3 | 0d | 2027-09-28 | 2027-09-28 | 156SS+28d, 171FS+1d |
| 173 | 4.3.5 · Cierre del paquete | 0d | 2027-09-30 | 2027-09-30 | 150FS-1d, 172SS+2d |
| 174 | 8.6.4 · Recepción parcial de cuatro kits | 0d | 2027-09-30 | 2027-09-30 | 164SS+20d |
| 175 | 5.3.1 Intercambio electrónico certificado con la cadena principal (INT-08) | 171d | 2027-10-01 | 2028-06-02 | 9FS+162d, 79SS+85d, 235FF+23d |
| 176 | 7.1.2 Innovación 1: estimador de saldo y ritmo de reposición (INN-01.P2) | 34d | 2027-10-01 | 2027-11-19 | 133SS+43d, 187SF+29d |
| 177 | 7.1.3 Innovación 1: función de lista sin conexión en la aplicación de preventa (INN-01.P3) | 34d | 2027-10-01 | 2027-11-19 | 133SS+43d, 187SF+29d |
| 178 | 7.3.3 Innovación 3: vista en M9 y orden de salida sugerido (INN-03.P3) | 34d | 2027-10-01 | 2027-11-19 | 91FS+8d |
| 179 | 8.4.7 Gabinetes de borde de plataformas de cross-docking montados | 13d | 2027-10-01 | 2027-10-20 | 71FS+91d |
| 180 | 9.7.1 Acuerdos operacionales firmados con los diez transportistas | 7d | 2027-10-01 | 2027-10-12 | 5FS+162d, 33FS+89d |
| 181 | 9.7.2 Acta de acuerdo con el sindicato sobre terminales, GPS y cámaras | 7d | 2027-10-01 | 2027-10-12 | 33FS+89d |
| 182 | 5.4.2 Datos maestros cargados: 8.400 SKU, clientes e instalaciones | 21d | 2027-10-04 | 2027-11-03 | 138 |
| 183 | 6.1.1 Pruebas de integración, regresión e idempotencia en QA (H4) | 13d | 2027-10-05 | 2027-10-22 | 109FS+34d, 121FS+44d, 126FS+34d, 127SS+47d, 130FS+12d, 131FS+22d, 139SS+43d, 143SS+42d, 144SS+42d, 155FS+15d, 159SS+29d, 160FS+3d, 161FS+2d, 162FS+2d, 163FS+2d, 167SS+11d, 170SS+6d, 173SS+3d |
| 184 | 8.6.1 Terminales de preventa, reparto y bodega configurados y enrolados | 70d | 2027-10-06 | 2028-01-14 | 82FS+69d |
| 185 | 8.6.3 Sensores de cámara y gateways IoT instalados en Talca y Concepción | 35d | 2027-10-06 | 2027-11-25 | 88FS+81d, 134FS+32d |
| 186 | 8.6.6 Impresoras de andén y balanzas de recepción instaladas | 70d | 2027-10-06 | 2028-01-14 | 88FS+81d, 134FS+32d |
| 187 | 7.1.1 · Fin de referencia para la precedencia | 0d | 2027-10-08 | 2027-10-08 | 133FS-1d |
| 188 | H4 · Entrega de expediente | 0d | 2027-10-20 | 2027-10-20 | 189SS |
| 189 | H4 · Evidencia disponible (6.1.1) | 0d | 2027-10-20 | 2027-10-20 | 121FS+54d, 126FS+44d, 131FS+32d, 155FS+25d, 161FS+12d, 162FS+12d, 163FS+12d, 183SS+10d |
| 190 | H4 · Revisión de la Contraparte (10 días hábiles) | 10d | 2027-10-21 | 2027-11-04 | 188FS+1d |
| 191 | 6.1.1 · Cierre del paquete | 0d | 2027-10-22 | 2027-10-22 | 183FS-1d, 189SS+2d |
| 192 | 6.2.1 Pruebas de aceptación y de accesibilidad con preventistas, conductores y bodega | 19d | 2027-10-25 | 2027-11-19 | 191SS+1d |
| 193 | 6.2.2 Pruebas de operación en condiciones físicas extremas y sin conexión | 19d | 2027-10-25 | 2027-11-19 | 191SS+1d |
| 194 | 6.3.1 Pruebas de carga con el peak de septiembre y de resiliencia | 13d | 2027-10-25 | 2027-11-11 | 191SS+1d |
| 195 | 6.4.1 Prueba de recuperación ante desastres con conmutación real | 13d | 2027-10-25 | 2027-11-11 | 191SS+1d |
| 196 | 6.5.1 Prueba de seguridad ofensiva de la Etapa 1, por un tercero independiente | 13d | 2027-10-25 | 2027-11-11 | 191SS+1d |
| 197 | 6.6.1 Demostración en Preproducción del despliegue sin interrupción de la Etapa 1 | 13d | 2027-10-25 | 2027-11-11 | 191SS+1d |
| 198 | 9.1.1 Plan de olas de la Etapa 1 por sitio y zona | 7d | 2027-11-02 | 2027-11-10 | 191SS+6d |
| 199 | 9.5.1 Plan de capacitación por perfil | 38d | 2027-11-02 | 2027-12-24 | 57FS+105d, 198SS |
| 200 | 9.5.6 Plataforma de autoformación en línea con registro de avance | 38d | 2027-11-02 | 2027-12-24 | 199SS |
| 201 | 8.6.2 Terminales de pago configurados, uno por camión | 51d | 2027-11-04 | 2028-01-14 | 88FS+100d, 121FS+64d |
| 202 | 8.6.5 Impresoras de cabina instaladas | 51d | 2027-11-04 | 2028-01-14 | 88FS+100d |
| 203 | H4 · Firma del acta | 0d | 2027-11-04 | 2027-11-04 | 190FS-1d |
| 204 | 2.7.3 Informe de piloto de cadena de frío en cuatro camiones | 29d | 2027-11-09 | 2027-12-20 | 32FS+164d, 44FS+130d, 58FS+111d, 109FS+57d, 159SS+52d, 174FS+26d, 191SS+11d, 203FS+3d |
| 205 | 6.7.1 Acta de certificación de la Etapa 1 (H5) | 8d | 2027-11-22 | 2027-12-01 | 192, 193, 194FS+6d, 195FS+6d, 196FS+6d, 197FS+6d |
| 206 | H5 · Entrega de expediente | 0d | 2027-11-24 | 2027-11-24 | 207SS |
| 207 | H5 · Evidencia disponible (6.7.1) | 0d | 2027-11-24 | 2027-11-24 | 192FS+2d, 193FS+2d, 194FS+8d, 195FS+8d, 196FS+8d, 197FS+8d, 205SS+2d |
| 208 | H5 · Revisión de la Contraparte (10 días hábiles) | 10d | 2027-11-25 | 2027-12-09 | 206FS+1d |
| 209 | 5.4.3 Saldos migrados desde el WMS de Talca | 22d | 2027-12-01 | 2027-12-31 | 182FS+19d |
| 210 | 5.4.4 Saldos cargados en Concepción desde el conteo físico | 22d | 2027-12-01 | 2027-12-31 | 182FS+19d |
| 211 | 7.1.4 Innovación 1: informe del piloto en marcha blanca y habilitación (INN-01.P4) | 107d | 2027-12-01 | 2028-05-02 | 176FS+7d, 177FS+7d |
| 212 | 7.2.4 Innovación 2: informe de validación comparada (INN-02.P4, parte 1) | 107d | 2027-12-01 | 2028-05-02 | 87FS+35d |
| 213 | 7.3.4 Innovación 3: informe de validación en marcha blanca con Calidad (INN-03.P4) | 107d | 2027-12-01 | 2028-05-02 | 178FS+7d |
| 214 | 9.1.2 Procedimiento y ensayo de reversión de la Etapa 1 | 7d | 2027-12-01 | 2027-12-10 | 182FS+19d, 192FS+7d, 198FS+14d |
| 215 | 6.7.1 · Cierre del paquete | 0d | 2027-12-01 | 2027-12-01 | 205FS-1d, 207SS+5d |
| 216 | 5.4.5 Acta de conciliación y corte fuera de las ventanas de congelamiento | 19d | 2028-01-03 | 2028-01-27 | 138FS+62d, 182FS+41d, 209, 210 |
| 217 | H5 · Firma del acta | 0d | 2028-01-03 | 2028-01-03 | 208FS+16d |
| 218 | 2.1.2 Documento de línea base de alcance de la Etapa 2: canal moderno y costo de servir (H8) | 7d | 2028-02-01 | 2028-02-09 | 217FS+21d |
| 219 | 2.2.4 Documento de diseño detallado de M11 y del intercambio con las cadenas | 11d | 2028-02-01 | 2028-02-15 | 218SS |
| 220 | 7.5.1 Innovación 5: prototipo e informe de la prueba de comprensión (INN-05.P1) | 36d | 2028-02-01 | 2028-03-21 | 170SS+88d, 218SS |
| 221 | 9.5.7 Certificación de preventistas, conductores y preparadores (Etapa 1) | 39d | 2028-02-01 | 2028-03-24 | 199FS+26d, 222SS |
| 222 | 9.2.1 Marcha blanca de la Etapa 1 | 65d | 2028-02-01 | 2028-05-03 | 223SS |
| 223 | H6 · Inicio contractual de marcha blanca | 0d | 2028-02-01 | 2028-02-01 | 125SS+141d, 198FS+57d, 214FS+36d, 216FS+2d, 217FS+21d, 225SS |
| 224 | Etapa 2 · Desarrollo (meses 13 a 18) | 128d | 2028-02-01 | 2028-08-02 |  |
| 225 | H6 · Entrega de expediente | 0d | 2028-02-01 | 2028-02-01 |  |
| 226 | 2.8.2 Acta de aprobación del diseño detallado de la Etapa 2 (H8) | 8d | 2028-02-16 | 2028-02-25 | 218FS+4d, 219 |
| 227 | H8 · Entrega de expediente | 0d | 2028-02-24 | 2028-02-24 | 228SS |
| 228 | H8 · Evidencia disponible (2.8.2) | 0d | 2028-02-24 | 2028-02-24 | 218FS+10d, 219FS+6d, 226SS+6d |
| 229 | 2.8.2 · Cierre del paquete | 0d | 2028-02-25 | 2028-02-25 | 226FS-1d, 228SS+1d |
| 230 | H8 · Revisión de la Contraparte (10 días hábiles) | 10d | 2028-02-25 | 2028-03-09 | 227FS+1d |
| 231 | E1 · Puerta de la ola de reparto | 0d | 2028-02-29 | 2028-02-29 | 164FS+31d, 180FS+97d, 181FS+97d, 204FS+50d |
| 232 | 7.5.2 Innovación 5: evaluación de privacidad y diseño de la impresión en cabina (INN-05.P2) | 36d | 2028-03-01 | 2028-04-20 | 220SS+21d, 238SF+22d |
| 233 | H8 · Firma del acta | 0d | 2028-03-09 | 2028-03-09 | 230FS-1d |
| 234 | 4.4.2 Portal web de clientes: cuenta, saldo, entregas y documentos | 35d | 2028-03-13 | 2028-05-02 | 218FS+22d, 233FS+2d |
| 235 | 4.4.1 Canal moderno y portal de proveedores (M11) | 33d | 2028-03-15 | 2028-05-02 | 218FS+24d, 233FS+4d |
| 236 | 4.4.3 Portal web de transportistas: rutas asignadas del día siguiente | 33d | 2028-03-15 | 2028-05-02 | 218FS+24d, 233FS+4d |
| 237 | 4.5.2 Costo de servir por cliente y por entrega (M10 Analítica) | 33d | 2028-03-15 | 2028-05-02 | 218FS+24d, 233FS+4d |
| 238 | 7.5.1 · Fin de referencia para la precedencia | 0d | 2028-03-21 | 2028-03-21 | 220FS-1d |
| 239 | 9.5.4 Traspaso al equipo de TI del CLIENTE | 126d | 2028-04-01 | 2028-10-04 |  |
| 240 | 1.6.2 Primera actualización anual del Plan de Reversibilidad | 7d | 2028-04-03 | 2028-04-11 | 39FS+249d |
| 241 | 7.5.3 Innovación 5: cálculo y bloques 1 a 3 de la hoja de negocio (INN-05.P3) | 49d | 2028-04-03 | 2028-06-12 | 220SS+45d, 232SS+24d, 238SF+59d, 242SF+38d |
| 242 | 7.5.2 · Fin de referencia para la precedencia | 0d | 2028-04-19 | 2028-04-19 | 232FS-1d |
| 243 | H7 · Cierre de cuatro semanas de evidencia | 0d | 2028-04-30 | 2028-04-30 | 222FS-1d, 231FS+44d |
| 244 | 5.3.2 Intercambio electrónico con las demás cadenas (INT-08) | 52d | 2028-05-02 | 2028-07-14 | 9FS+311d, 175SS+149d, 235FF+53d |
| 245 | 6.1.2 Pruebas de integración y regresión sin afectar la Etapa 1 en producción (H9) | 13d | 2028-05-02 | 2028-05-18 | 234FS+1d, 235FS+1d, 236FS+1d, 237FS+1d |
| 246 | 9.4.1 Expediente y acta de aceptación de la Etapa 1 (H7) | 12d | 2028-05-02 | 2028-05-17 | 248SS |
| 247 | 9.6.2 Plan de gestión del cambio con cadenas y transportistas | 38d | 2028-05-02 | 2028-06-23 | 175SS+149d, 233FS+38d |
| 248 | H7 · Entrega de expediente | 0d | 2028-05-02 | 2028-05-02 | 221FS+26d, 243FS+1d |
| 249 | H7 · Revisión de la Contraparte (10 días hábiles) | 10d | 2028-05-03 | 2028-05-16 | 248FS+1d |
| 250 | H7 · Firma del acta | 0d | 2028-05-16 | 2028-05-16 | 249FS-1d |
| 251 | 9.3.1 Estabilización y soporte puente E1 | 94d | 2028-05-17 | 2028-10-02 | 252SS |
| 252 | H7 · Paso a producción | 0d | 2028-05-17 | 2028-05-17 | 250FS+1d |
| 253 | 9.4.1 · Cierre del paquete | 0d | 2028-05-17 | 2028-05-17 | 246FS-1d, 254SS |
| 254 | H7 · Registro de producción y cumplimiento | 0d | 2028-05-17 | 2028-05-17 | 252SS |
| 255 | H9 · Entrega de expediente | 0d | 2028-05-18 | 2028-05-18 | 245FS-1d |
| 256 | 6.3.2 Pruebas de carga con ambas etapas activas y de resiliencia | 10d | 2028-05-19 | 2028-06-01 | 245 |
| 257 | 6.4.2 Prueba de recuperación ante desastres con ambas etapas | 10d | 2028-05-19 | 2028-06-01 | 245 |
| 258 | 6.5.2 Prueba de seguridad ofensiva de la Etapa 2, por un tercero independiente | 6d | 2028-05-19 | 2028-05-26 | 245 |
| 259 | 6.6.2 Demostración en Preproducción del despliegue sin interrupción de la Etapa 2 | 10d | 2028-05-19 | 2028-06-01 | 245 |
| 260 | H9 · Revisión de la Contraparte (10 días hábiles) | 10d | 2028-05-19 | 2028-06-01 | 255FS+1d |
| 261 | 7.4.1 Innovación 4: fórmula aprobada del tramo variable (INN-04.P1) | 7d | 2028-06-01 | 2028-06-09 | 237FS+23d |
| 262 | 9.1.3 Plan de implantación y reversión de la Etapa 2 | 7d | 2028-06-01 | 2028-06-09 | 214FS+123d, 245FS+9d |
| 263 | H9 · Firma del acta | 0d | 2028-06-01 | 2028-06-01 | 260FS-1d |
| 264 | 6.2.3 Pruebas de aceptación y de accesibilidad con cadenas, transportistas, Comercial y Finanzas | 10d | 2028-06-02 | 2028-06-15 | 245FS+10d |
| 265 | 6.7.2 Acta de certificación de la Etapa 2 y cierre del desarrollo (H10) | 7d | 2028-06-16 | 2028-06-28 | 245FS+20d, 256FS+10d, 257FS+10d, 258FS+14d, 259FS+10d, 264 |
| 266 | H10 · Entrega de expediente | 0d | 2028-06-27 | 2028-06-27 | 267SS |
| 267 | H10 · Evidencia disponible (6.7.2) | 0d | 2028-06-27 | 2028-06-27 | 245FS+25d, 256FS+15d, 257FS+15d, 258FS+19d, 259FS+15d, 264FS+5d, 265SS+5d |
| 268 | 6.7.2 · Cierre del paquete | 0d | 2028-06-28 | 2028-06-28 | 265FS-1d, 267SS+1d |
| 269 | H10 · Revisión de la Contraparte (10 días hábiles) | 10d | 2028-06-28 | 2028-07-11 | 266FS+1d |
| 270 | 7.5.4 Innovación 5: hoja certificada, en marcha blanca y en producción (INN-05.P4, primera parte) | 62d | 2028-07-03 | 2028-09-29 | 241FS+13d |
| 271 | 9.5.8 Certificación de Comercial y Finanzas en costo de servir (Etapa 2) | 17d | 2028-07-03 | 2028-07-25 | 237FS+43d, 264FS+9d |
| 272 | H10 · Firma del acta | 0d | 2028-07-11 | 2028-07-11 | 269FS-1d |
| 273 | 9.2.2 Marcha blanca de la Etapa 2 | 42d | 2028-08-01 | 2028-10-02 | 274SS |
| 274 | H11 · Inicio contractual de marcha blanca | 0d | 2028-08-01 | 2028-08-01 | 175FS+41d, 262FS+34d, 272FS+15d, 275SS |
| 275 | H11 · Entrega de expediente | 0d | 2028-08-01 | 2028-08-01 |  |
| 276 | E2 · Cadenas habilitadas antes de F − 28 | 0d | 2028-08-31 | 2028-08-31 | 244FS+32d |
| 277 | 9.4.3 Garantía de correcto funcionamiento constituida (H12) | 7d | 2028-09-13 | 2028-09-25 | 272FS+45d |
| 278 | H12 · Cierre de cuatro semanas de evidencia | 0d | 2028-09-30 | 2028-09-30 | 273FS-1d, 276FS+20d |
| 279 | Mes 21 · Cobertura de transición previa al corte E2 | 12d | 2028-10-01 | 2028-10-18 |  |
| 280 | 6.8.6 Entrega del código fuente, la infraestructura como código y los procedimientos de despliegue | 7d | 2028-10-02 | 2028-10-11 | 272FS+58d |
| 281 | 9.4.2 Expediente y acta de aceptación final (H12) | 12d | 2028-10-02 | 2028-10-18 | 282SS |
| 282 | H12 · Entrega de expediente | 0d | 2028-10-02 | 2028-10-02 | 239FS+1d, 271FS+47d, 277FS+6d, 278FS+2d |
| 283 | H12 · Revisión de la Contraparte (10 días hábiles) | 10d | 2028-10-03 | 2028-10-17 | 282FS+1d |
| 284 | H12 · Firma del acta | 0d | 2028-10-17 | 2028-10-17 | 280FS+3d, 283FS-1d |
| 285 | 9.3.2 Estabilización de la Etapa 2 | 30d | 2028-10-18 | 2028-11-30 | 286SS |
| 286 | H12 · Paso a producción | 0d | 2028-10-18 | 2028-10-18 | 284FS+1d |
| 287 | 9.4.2 · Cierre del paquete | 0d | 2028-10-18 | 2028-10-18 | 281FS-1d, 289SS |
| 288 | Producto 10 · Operación con ambos alcances (meses 21 a 56) | 730d | 2028-10-18 | 2031-09-30 | 279, 286SS |
| 289 | H12 · Registro de producción y cumplimiento | 0d | 2028-10-18 | 2028-10-18 | 286SS |
| 290 | 1.7.9 Informe de lecciones aprendidas y archivo de la implementación | 7d | 2028-10-26 | 2028-11-07 | 287SS+6d |
| 291 | 10.5.1 Traspaso de reversibilidad y acompañamiento de salida | 40d | 2031-08-01 | 2031-09-30 |  |
| 292 | 10.5.2 Certificado de devolución o eliminación de datos personales | 7d | 2031-09-01 | 2031-09-09 | 291SS+20d |

Changed:

| ID | Task | Start | Finish | Duration | Predecessors | Other |
| --- | --- | --- | --- | --- | --- | --- |
| 1 | 1.1.1 Acta de constitución del proyecto, firmada con la Contraparte Técnica |  | 2027-03-31 → 2027-02-09 (-50d) | 42d → 7d |  | was named RC / 5.1.4 Especificación y compra del sistema de cadena de frío |
| 2 | 1.1.2 Documento de validación con el CLIENTE de los problemas y metas del proyecto |  |  |  | none → 1SS | was named PT/H / 7 elementos: 1.1.1, 1.1.2, 1.1.3, 1.4.1, 1.4.2, 1.9.1, 1.9.2 |
| 3 | 1.1.3 Acta de confirmaciones iniciales con el CLIENTE (inicio, lácteos, ventanas y acuse tributario) |  |  |  | none → 1SS | was named PT/H / 1.2.1 Documento de especificación de requerimientos y línea base de alcance de la Etapa 1 (H1) |
| 4 | 1.3.1 Registro de interesados con su influencia, interés y estrategia |  | 2027-04-30 → 2027-02-09 (-80d) | 64d → 7d | none → 1SS | was named PT/H / 1.2.2 Documento de reglas de ruteo capturadas al planificador de rutas |
| 5 | 1.3.2 Plan de comunicaciones con calendario y canales por grupo de interés |  |  |  | none → 4SS | was named PT/H / 1.2.3 Documento de especificación de las interfaces sin documentación del ERP, del WMS de 2013 y de la telemetría del tercero |
| 6 | 1.8.1 Matriz de cumplimiento normativo por obligación legal, con su control y su evidencia |  | 2028-09-29 → 2027-02-09 (-598d) | 419d → 7d | none → 1SS | was named PT/H / 5 elementos: 1.3.5, 1.6.2, 1.8.1, 1.8.3, 1.8.6 |
| 7 | 1.8.2 Acuerdo de tratamiento de datos personales con el CLIENTE |  | 2027-03-01 → 2027-02-09 (-20d) | 21d → 7d | none → 1SS | was named PT/H / 2 elementos: 2.3.1, 2.3.2 |
| 8 | 2.1.1 Documento de especificación de requerimientos y línea base de alcance de la Etapa 1 (H1) | 2027-02-10 → 2027-02-01 (-9d) | 2027-02-18 → 2027-02-09 (-9d) |  | none → 2SS | was named PT/H / 1.3.1 Plan para la dirección del proyecto, con el calendario de congelamientos de septiembre, diciembre y el cierre mensual |
| 9 | 2.1.5 Especificación de interfaces heredadas y perfil de intercambio con cadenas | 2027-03-01 → 2027-02-01 (-28d) | 2027-03-09 → 2027-02-09 (-28d) |  | none → 1SS | was named PT/H / 1.2.4 Matriz de trazabilidad: requerimiento, módulo, paquete y prueba (H1) |
| 10 | 2.4.1 Plano de la sala técnica de Talca, con su cálculo eléctrico y térmico | 2027-03-01 → 2027-02-01 (-28d) | 2027-03-09 → 2027-02-26 (-11d) | 7d → 20d |  | was named PT/H / 7 elementos: 1.3.2, 1.3.3, 1.3.4, 1.5.1, 1.6.1, 1.9.3, 5.1.1 |
| 11 | 2.4.2 Plano de distribución de los racks R01 de servidores y R02 de comunicaciones | 2027-03-01 → 2027-02-01 (-28d) | 2027-03-29 → 2027-02-26 (-31d) |  | 3FF, 21FF → 10SS | was named PT/H / 2.1.1 Documento de arquitectura lógica: capas, módulos M1 a M12 e interfaces |
| 12 | 8.1.4 Especificación y compra del sistema de cadena de frío | 2027-03-01 → 2027-02-01 (-28d) | 2027-03-29 → 2027-03-31 (+2d) | 20d → 42d |  | was named PT/H / 3 elementos: 2.1.2, 2.1.3, 2.2.4 |
| 13 | 2.1.4 Captura de reglas de ruteo | 2027-03-01 → 2027-02-01 (-28d) | 2027-03-29 → 2027-04-30 (+32d) | 20d → 64d |  | was named PT/H / 2.2.1 Plan de seguridad de la información |
| 14 | Etapa 1 · Desarrollo (meses 1 a 12) | 2027-03-01 → 2027-02-01 (-28d) | 2027-03-29 → 2028-02-01 (+309d) | 20d → 253d |  | was named PT/H / 2 elementos: 2.3.3, 2.6.1 |
| 15 | 1.2.1 Plan para la dirección del proyecto y calendario de congelamientos | 2027-03-01 → 2027-02-10 (-19d) | 2027-04-20 → 2027-02-18 (-61d) | 36d → 7d | none → 1 | was named PT/H / 3.10.2.1 Innovación 2: informe de medición inicial y contrato de evidencia (INN-02.P1) |
| 16 | 1.2.2 EDT y diccionario de la EDT (línea base del alcance) |  |  |  | none → 8FS+13d | was named PT/H / 5.2.1 Contrato de los servicios de AWS |
| 17 | 1.2.3 Carta Gantt de 56 meses con los hitos H1 a H12 y la ruta crítica |  | 2027-03-12 → 2027-03-09 (-3d) | 10d → 7d | 1SS → 16SS | was named PT/H / 5.3.4 Contrato de SIM M2M y servicio satelital de los camiones con frío |
| 18 | 1.2.4 Documento de nivelación de recursos y frentes de solapamiento |  | 2027-05-25 → 2027-03-09 (-77d) | 60d → 7d | none → 17SS | was named PT/H / 7.2.3 Diagnóstico del impacto organizacional por área y perfil, con agentes de cambio |
| 19 | 1.4.1 Plan de calidad y plan de pruebas | 2027-03-02 → 2027-03-01 (-1d) | 2027-03-10 → 2027-03-09 (-1d) |  | 7 → 8FS+13d | was named PT/H / 5.1.2 Especificación y compra de la sala técnica, los racks, los servidores y los gabinetes de borde |
| 20 | 1.5.1 Plan de riesgos y registro inicial de riesgos según ISO 31000 | 2027-03-09 → 2027-03-01 (-8d) |  | 0d → 7d | 3FS-1d, 9FS-1d → 15FS+6d | was named PT/H / H1 — entrega del expediente |
| 21 | 1.8.3 Registro de actividades de tratamiento y evaluación de impacto en protección de datos | 2027-03-23 → 2027-03-01 (-22d) | 2027-03-23 → 2027-03-09 (-14d) | 0d → 7d | 20FS+10d → 7FS+13d | was named PT/H / H1 — acta del CLIENTE (límite: mes 2) |
| 22 | 2.1.3 Matriz de trazabilidad: requerimiento, módulo, paquete y prueba (H1) | 2027-04-01 → 2027-03-01 (-31d) | 2027-04-30 → 2027-03-09 (-52d) | 22d → 7d | 1, 17 → 8FS+13d, 16SS | was named RC / 2.4.3 Validación del diseño del kit en banco de pruebas |
| 23 | 2.2.1 Documento de arquitectura lógica: capas, módulos M1 a M12 e interfaces | 2027-04-01 → 2027-03-01 (-31d) | 2027-04-09 → 2027-03-29 (-11d) | 7d → 20d | none → 8SS+20d, 38FF+4d | was named PT/H / 1.7.1 Plan de Reversibilidad inicial (primeros 90 días) |
| 24 | 2.2.2 Documento de arquitectura física híbrida | 2027-04-01 → 2027-03-01 (-31d) | 2027-11-30 → 2027-03-29 (-246d) | 167d → 20d | none → 8FS+13d, 10SS+20d | was named PT/H / 2.2.2 Modelado de amenazas por componente y por integración externa, actualizado ante cada cambio |
| 25 | 2.2.3 Modelo de datos y diccionario de datos, con la trazabilidad por lote | 2027-04-01 → 2027-03-01 (-31d) | 2027-04-16 → 2027-03-29 (-18d) | 12d → 20d | none → 8FS+13d | was named PT/H / 2.2.3 Plan de respuesta a incidentes de seguridad, con aviso al CLIENTE en dos horas |
| 26 | 2.3.1 Plan de seguridad de la información | 2027-04-01 → 2027-03-01 (-31d) | 2027-04-29 → 2027-03-29 (-31d) | 21d → 20d | none → 6FS+13d, 23SS | was named PT/H / 2 elementos: 2.5.1, 2.5.2 |
| 27 | 2.3.4 Matriz de clasificación de la información y matriz de controles | 2027-04-01 → 2027-03-01 (-31d) | 2027-04-29 → 2027-03-29 (-31d) | 21d → 20d | none → 6FS+13d | was named PT/H / 2.6.2 Prototipos y pruebas de usabilidad con participantes del CLIENTE |
| 28 | 2.6.1 Informe de investigación con usuarios de terreno | 2027-04-01 → 2027-03-01 (-31d) | 2027-06-09 → 2027-03-29 (-72d) | 49d → 20d | none → 4FS+13d | was named PT/H / 2 elementos: 3.10.2.2, 3.10.3.1 |
| 29 | 7.2.1 Innovación 2: informe de medición inicial y contrato de evidencia (INN-02.P1) | 2027-04-01 → 2027-03-01 (-31d) |  | 14d → 36d | 19 → 8FS+13d | was named PT/H / 4 elementos: 6.1.1, 6.1.2, 6.1.3, 6.1.4 |
| 30 | 8.1.1 Especificación de compra de equipos de uso para el CLIENTE | 2027-04-19 → 2027-03-01 (-49d) | 2027-04-29 → 2027-03-09 (-51d) | 9d → 7d | 11, 12, 13, 25 → 8FS+13d | was named PT/H / 2.4.1 Acta de aprobación de la arquitectura, el plan de seguridad y el modelo de datos (H2) |
| 31 | 8.2.1 Contrato de los servicios de AWS | 2027-04-29 → 2027-03-01 (-59d) | 2027-04-29 → 2027-03-09 (-51d) | 0d → 7d | 30FS-1d → 24SS | was named PT/H / H2 — entrega del expediente |
| 32 | 8.2.7 Contrato de SIM M2M y servicio satelital de los camiones con frío | 2027-05-03 → 2027-03-01 (-63d) | 2027-05-31 → 2027-03-12 (-80d) | 20d → 10d | none → 12SS+20d | was named RC / 2.6.3 Indicadores de usabilidad comprometidos por transacción crítica |
| 33 | 9.6.3 Diagnóstico del impacto organizacional por área y perfil, con agentes de cambio | 2027-05-03 → 2027-03-01 (-63d) | 2027-05-31 → 2027-05-25 (-6d) | 20d → 60d | none → 4FS+13d | was named RC / 3.1.4 Cadena de integración y entrega continua, e infraestructura como código |
| 34 | 2.4.3 Plano de los gabinetes de borde de Concepción y de las plataformas de cross-docking | 2027-05-03 → 2027-03-02 (-62d) | 2027-05-31 → 2027-03-29 (-63d) | 20d → 19d | 16 → 10FS+1d | was named RC / 4 elementos: 3.2.1, 3.2.2, 3.2.4, 3.2.5 |
| 35 | 8.1.2 Especificación y compra de la sala técnica, los racks, los servidores y los gabinetes de borde | 2027-05-03 → 2027-03-02 (-62d) | 2027-05-31 → 2027-03-10 (-82d) | 20d → 7d | 16 → 10FS+1d, 11FS+1d | was named RC / 3.2.3 Servicio de nube de ingesta de IoT, telemetría cruda y plataforma analítica |
| 36 | H1 · Entrega de expediente | 2027-05-03 → 2027-03-09 (-55d) | 2027-05-20 → 2027-03-09 (-72d) | 14d → 0d | 19, 29 → 18FS-1d, 22FS-1d | was named RC / 6.1.5 Acta de recepción técnica de la sala |
| 37 | H1 · Revisión de la Contraparte (10 días hábiles) | 2027-05-03 → 2027-03-10 (-54d) | 2027-05-28 → 2027-03-23 (-66d) | 19d → 10d | 22 → 36FS+1d | was named PT/H / 2.4.4 Mapeo térmico por tipo de carrocería |
| 38 | H1 · Firma del acta | 2027-05-03 → 2027-03-23 (-41d) | 2028-09-29 → 2027-03-23 (-556d) | 355d → 0d | none → 37FS-1d | was named PT/H / 2 elementos: 3.11.3, 3.11.4 |
| 39 | 1.6.1 Plan de Reversibilidad inicial | 2027-05-03 → 2027-04-01 (-32d) | 2027-05-11 → 2027-04-09 (-32d) |  | none → 24FS+2d | was named PT/H / 5 elementos: 5.2.2, 5.2.3, 5.3.1, 5.3.2, 5.3.3 |
| 40 | 2.3.3 Plan de respuesta a incidentes de seguridad | 2027-05-03 → 2027-04-01 (-32d) | 2027-05-20 → 2027-04-16 (-34d) | 14d → 12d | none → 26FS+2d | was named PT/H / 6.2.1 Cableado de cobre Cat6A y fibra OM4 tendido, con dos ductos de ingreso independientes |
| 41 | 2.5.1 Plan de continuidad del negocio (ISO 22301) y análisis de impacto | 2027-05-03 → 2027-04-01 (-32d) | 2027-05-20 → 2027-04-29 (-21d) | 14d → 21d | none → 24FS+2d | was named PT/H / 6.3.3 Gabinete de borde de Concepción montado: servidores activo y en espera, firewalls, switches, UPS, climatización y monitoreo |
| 42 | 2.5.2 Plan de continuidad TIC según ISO/IEC 27031 y plan de recuperación ante desastres | 2027-05-13 → 2027-04-01 (-42d) | 2027-05-13 → 2027-04-29 (-14d) | 0d → 21d | 31FS+10d → 24FS+2d, 41SS | was named PT/H / H2 — acta del CLIENTE (límite: mes 4) |
| 43 | 2.6.2 Prototipos y pruebas de usabilidad con participantes del CLIENTE | 2027-05-24 → 2027-04-01 (-53d) | 2027-06-09 → 2027-04-29 (-41d) | 13d → 21d | 36 → 28FS+2d | was named RC / 2 elementos: 6.3.1, 6.3.2 |
| 44 | 2.7.1 Informe de validación del kit de cadena de frío en banco de pruebas | 2027-06-01 → 2027-04-01 (-61d) | 2027-06-18 → 2027-04-30 (-49d) | 14d → 22d | 34 → 12, 32FS+12d | was named PT/H / 3 elementos: 3.1.1, 3.1.2, 3.1.3 |
| 45 | 7.2.2 Innovación 2: circuito mínimo de reproducción en la preventa (INN-02.P2) | 2027-06-01 → 2027-04-01 (-61d) | 2027-06-18 → 2027-06-09 (-9d) | 14d → 49d | none → 29SS+22d, 52SF+36d | was named PT/H / 3.1.5 Observabilidad de los doce módulos y de los sitios, con tableros para el CLIENTE (H3) |
| 46 | 7.3.1 Innovación 3: documento de familias priorizadas y parámetros aprobados (INN-03.P1) | 2027-06-01 → 2027-04-01 (-61d) | 2027-06-29 → 2027-06-09 (-20d) | 19d → 49d | 16 → 8FS+35d, 25SS+22d | was named PT/H / 3.2.6 Servicio de gestión de dispositivos móviles |
| 47 | 8.3.1 Piso técnico de la sala y recepción de obra civil de separación (RT-06.06) | 2027-06-01 → 2027-04-01 (-61d) | 2027-08-05 → 2027-04-20 (-107d) | 45d → 14d | 13 → 35FS+14d | was named PT/H / 3.3.1 Identidad y control de acceso, incluidos los conductores externos que rotan sin aviso |
| 48 | 8.3.2 Sistema de energía de la sala instalado (UPS N+1, generador y PDU) | 2027-06-01 → 2027-04-01 (-61d) | 2027-07-01 → 2027-04-20 (-72d) | 21d → 14d | 5 → 35FS+14d | was named PT/H / 3.3.2 Integración con el ERP como único emisor de la guía de despacho (INT-06 e INT-07) |
| 49 | 8.3.3 Hardware de climatización de precisión N+1 instalado | 2027-06-01 → 2027-04-01 (-61d) | 2027-07-07 → 2027-04-20 (-78d) | 25d → 14d | none → 35FS+14d | was named PT/H / 3.3.3 Convivencia con el WMS de 2013 durante el reemplazo |
| 50 | 8.3.4 Hardware de detección temprana de incendio y extinción por agente limpio instalado | 2027-06-01 → 2027-04-01 (-61d) | 2027-08-03 → 2027-04-20 (-105d) | 43d → 14d | none → 35FS+14d | was named PT/H / 3.3.5 Registro auditable de stock, lotes y cobros |
| 51 | 2.8.1 Acta de aprobación de la arquitectura, el plan de seguridad y el modelo de datos (H2) | 2027-06-01 → 2027-04-19 (-43d) | 2027-10-08 → 2027-04-29 (-162d) | 90d → 9d | none → 23FS+14d, 24FS+14d, 25FS+14d, 26FS+14d, 27FS+14d, 40 | was named PT/H / 3.10.2.3 Innovación 2: captura de evidencia en las aplicaciones de preventa, preparación y reparto (INN-02.P3) |
| 53 | H2 · Entrega de expediente | 2027-06-01 → 2027-04-26 (-36d) | 2027-06-09 → 2027-04-26 (-44d) | 7d → 0d | none → 54SS | was named PT/H / 5.1.3 Actas de recepción técnica del equipamiento de terreno comprado por el CLIENTE y de la infraestructura provista por LafroX |
| 54 | H2 · Evidencia disponible (2.8.1) | 2027-06-01 → 2027-04-26 (-36d) | 2027-06-18 → 2027-04-26 (-53d) | 14d → 0d | none → 23FS+19d, 24FS+19d, 25FS+19d, 26FS+19d, 27FS+19d, 40FS+5d, 51SS+5d | was named PT/H / 6.4.1 Hardware de control de acceso biométrico y esclusa instalado |
| 55 | H2 · Revisión de la Contraparte (10 días hábiles) | 2027-06-07 → 2027-04-27 (-41d) | 2027-08-03 → 2027-05-10 (-85d) | 39d → 10d | none → 53FS+1d | was named PT/H / 3.3.6 Operación sin conexión: 14 horas en terreno y 24 horas en el CD |
| 56 | 2.8.1 · Cierre del paquete | 2027-06-07 → 2027-04-29 (-39d) | 2027-09-20 → 2027-04-29 (-144d) | 72d → 0d | none → 51FS-1d, 54SS+3d | was named PT/H / 3.10.3.2 Innovación 3: asociación lote–sensor en el borde y en el camión (INN-03.P2) |
| 57 | 2.6.3 Indicadores de usabilidad comprometidos por transacción crítica | 2027-06-07 → 2027-05-03 (-35d) | 2027-06-24 → 2027-05-31 (-24d) | 13d → 20d | none → 43FS+1d | was named PT/H / 6.4.2 Hardware de videovigilancia instalado |
| 58 | 2.7.2 Mapeo térmico por tipo de carrocería | 2027-06-10 → 2027-05-03 (-38d) | 2027-06-30 → 2027-05-28 (-33d) | 13d → 19d | 41, 43 → 44 | was named RC / 2 elementos: 6.6.1, 6.6.2 |
| 59 | 3.1.4 Cadena de integración y entrega continua, e infraestructura como código | 2027-06-10 → 2027-05-03 (-38d) | 2027-07-12 → 2027-05-31 (-42d) | 21d → 20d | none → 60SS | was named PT/H / 3.3.4 Integración con la telemetría de los 42 camiones propios (INT-15) |
| 60 | 3.2.1 Servicio de nube para la aplicación y los portales | 2027-06-10 → 2027-05-03 (-38d) | 2027-08-10 → 2027-05-31 (-71d) | 41d → 20d | 27, 30, 33FF, 42, 44FF, 45FF, 47SS, 48SS, 49SS, 50SS, 55SS, 59SS → 31FS+37d | was named PT/H / 3.4.1 Recepción de mercadería con captura de lote y vencimiento (M1 Recepción) |
| 61 | 3.2.2 Servicio de nube de base de datos, caché y mensajería | 2027-06-10 → 2027-05-03 (-38d) | 2027-08-11 → 2027-05-31 (-72d) | 42d → 20d | 27, 30, 33FF, 42, 44FF, 45FF, 47SS, 48SS, 49SS, 50SS, 55SS, 59SS → 31FS+37d | was named PT/H / 3.4.2 Inventario por ubicación y lote, con FEFO y conteo cíclico (M2 Inventario) |
| 62 | 3.2.3 Servicio de nube de ingesta de IoT, telemetría cruda y plataforma analítica | 2027-06-10 → 2027-05-03 (-38d) | 2027-10-04 → 2027-05-31 (-126d) | 79d → 20d | 27, 30, 33FF, 42, 44FF, 45FF, 47SS, 48SS, 49SS, 50SS, 55SS, 59SS, 69FF+2d → 31FS+37d | was named PT/H / 3.4.10 Cobro en ruta, rendición y conciliación (M7 Cobranza y rendición) |
| 63 | 3.2.4 Servicio de nube de respaldo inmutable y réplica entre regiones | 2027-06-10 → 2027-05-03 (-38d) | 2027-06-18 → 2027-05-31 (-18d) | 7d → 20d | 41, 43 → 31FS+37d | was named PT/H / 6.6.3 Borde de los CD en servicio, con la prueba de autonomía de 24 horas aprobada |
| 64 | 3.2.5 Servicio de nube de seguridad y gobierno, y detección en endpoints | 2027-06-14 → 2027-05-03 (-42d) | 2027-08-18 → 2027-05-31 (-79d) | 45d → 20d | 27, 30, 33FF, 42, 44FF, 45FF, 47SS, 48SS, 49SS, 50SS, 55SS, 59SS, 60FF+2d, 61FF+2d → 31FS+37d | was named PT/H / 3.4.3 Preparación de pedidos en el turno de noche y en la cámara de congelado (M5 Preparación) |
| 65 | 8.2.2 Suscripción del servicio de gestión de dispositivos y de detección en endpoints | 2027-06-14 → 2027-05-03 (-42d) | 2027-09-29 → 2027-05-11 (-141d) | 74d → 7d | 22, 27, 30, 33FF, 37, 42, 44FF, 45FF, 47SS, 48SS, 49SS, 50SS, 55SS, 59SS, 60FF+2d, 61FF+2d → 31FS+37d | was named PT/H / 3.4.4 Cadena de frío, retención por SSCC y retiro sanitario (M9 Calidad y trazabilidad) |
| 66 | 8.2.4 Contrato de fibra óptica de los CD de Talca y Concepción | 2027-06-14 → 2027-05-03 (-42d) | 2027-08-30 → 2027-05-11 (-111d) | 53d → 7d | 22, 27, 30, 33FF, 35, 37, 42, 44FF, 45FF, 47SS, 48SS, 49SS, 50SS, 55SS, 59SS → 24FS+24d | was named PT/H / 3.4.5 Ingesta de temperatura (M9) y posición de flota (M12) |
| 67 | 8.2.5 Contrato de planes LTE con dos proveedores (ocho planes) | 2027-06-16 → 2027-05-03 (-44d) | 2027-08-17 → 2027-05-11 (-98d) | 42d → 7d | 27, 30, 33FF, 42, 44FF, 45FF, 47SS, 48SS, 49SS, 50SS, 55SS, 59SS, 61SS → 24FS+24d | was named PT/H / 3.4.6 Aplicación móvil de preventa sin conexión, con stock y crédito (M3 Preventa) |
| 68 | 8.2.6 Contrato de Starlink para los cinco sitios | 2027-06-16 → 2027-05-03 (-44d) | 2027-09-08 → 2027-05-11 (-120d) | 58d → 7d | 4, 27, 30, 33FF, 42, 44FF, 45FF, 47SS, 48SS, 49SS, 50SS, 55SS, 59SS, 64FF+2d, 67FF+2d → 34FS+24d | was named PT/H / 3.4.7 Planificación de rutas corregible por el planificador (M4 Rutas) |
| 69 | 8.3.5 Acta de recepción técnica de la sala | 2027-06-16 → 2027-05-03 (-44d) | 2027-09-09 → 2027-05-20 (-112d) | 59d → 14d | 27, 30, 33FF, 42, 44FF, 45FF, 47SS, 48SS, 49SS, 50SS, 55SS, 59SS, 64FF+2d, 67FF+2d → 35FS+36d, 47FS+8d, 48FS+8d, 49FS+8d, 50FS+8d | was named PT/H / 3.4.8 Aplicación móvil de reparto con prueba de entrega digital (M6 Reparto) |
| 70 | 8.4.1 Cableado de cobre Cat6A y fibra OM4 tendido, con dos ductos de ingreso independientes | 2027-06-18 → 2027-05-03 (-46d) | 2027-09-30 → 2027-05-20 (-133d) | 71d → 14d | 27, 30, 33FF, 42, 44FF, 45FF, 47SS, 48SS, 49SS, 50SS, 55SS, 59SS → 11FS+44d, 47FS+8d | was named RC / 3.4.9 Devoluciones en terreno y control de envases (M8 Devoluciones y envases) |
| 71 | 8.4.6 Gabinete de borde de Concepción montado | 2027-06-18 → 2027-05-03 (-46d) | 2027-06-18 → 2027-05-20 (-29d) | 0d → 14d | 44FS-1d, 45FS-1d, 63FS-1d → 34FS+24d, 35FS+36d | was named PT/H / H3 — entrega del expediente |

| ID | Task | Start | Finish | Duration | Predecessors | Other |
| --- | --- | --- | --- | --- | --- | --- |
| 72 | H2 · Firma del acta | 2027-06-22 → 2027-05-10 (-43d) | 2027-07-09 → 2027-05-10 (-60d) | 13d → 0d | none → 55FS-1d | was named PT/H / 6.4.3 Recinto de custodia de respaldos habilitado |
| 73 | 8.2.3 Licencias de software de terceros constituidas a nombre del CLIENTE | 2027-07-01 → 2027-05-11 (-51d) | 2028-09-29 → 2027-05-19 (-499d) | 315d → 7d | none → 72FS+1d | was named PT/H / 2 elementos: 1.5.2, 3.11.5 |
| 74 | 3.1.4 · Habilitación de la cadena para QA | 2027-07-01 → 2027-05-12 (-50d) | 2027-08-02 → 2027-05-12 (-82d) | 22d → 0d | none → 59SS+7d, 72FS+2d | was named PT/H / 3 elementos: 3.6.2, 3.6.3, 3.6.4 |
| 75 | 8.4.4 Rack R01 de servidores montado y traslado del servidor ERP | 2027-07-01 → 2027-05-24 (-38d) | 2027-07-20 → 2027-07-13 (-7d) | 13d → 35d | none → 69 | was named PT/H / 6.2.2 Certificación de enlaces, etiquetado y planos as-built |
| 76 | 8.4.5 Rack R02 de comunicaciones montado | 2027-07-06 → 2027-05-24 (-43d) | 2027-07-06 → 2027-06-09 (-27d) | 0d → 13d | 71FS+10d → 69 | was named PT/H / H3 — acta del CLIENTE (límite: mes 6) |
| 77 | 3.1.4 · Cierre del paquete | 2027-08-02 → 2027-05-31 (-63d) | 2027-09-01 → 2027-05-31 (-93d) | 23d → 0d | none → 59FS-1d, 74SS+12d | was named PT/H / 3.6.1 Intercambio de lote y trazabilidad con los proveedores |
| 78 | 3.1.1 Ambientes de Desarrollo y QA en la nube (H3) | 2027-08-02 → 2027-06-01 (-62d) | 2027-10-08 → 2027-06-18 (-112d) | 49d → 14d | none → 60, 61, 63, 64, 77SS+1d | was named PT/H / 3.10.1.1 Innovación 1: documento de catálogo de acciones y protocolo del piloto (INN-01.P1) |
| 79 | 3.1.2 Ambientes de Preproducción y Producción en la nube (H3) | 2027-08-02 → 2027-06-01 (-62d) | 2027-08-10 → 2027-06-18 (-53d) | 7d → 14d | none → 60, 61, 63, 64 | was named PT/H / 5.4.4 Contrato de custodia de fuentes con un tercero independiente |
| 80 | 3.1.3 Ambiente de recuperación ante desastres en la región secundaria (H3) | 2027-08-02 → 2027-06-01 (-62d) | 2027-08-19 → 2027-06-18 (-62d) |  | none → 60, 61, 63, 64 | was named PT/H / 6.2.3 Gabinetes de piso y switches de acceso instalados en las bodegas de Talca y Concepción |
| 81 | 3.1.5 Observabilidad de los doce módulos y de los sitios, con tableros para el CLIENTE (H3) | 2027-08-04 → 2027-06-01 (-64d) | 2027-10-01 → 2027-06-18 (-105d) | 42d → 14d | none → 78SS | was named PT/H / 3.7.1 Informe de perfilamiento y datos saneados |
| 82 | 3.2.6 Servicio de gestión de dispositivos móviles | 2027-09-01 → 2027-06-01 (-92d) | 2028-01-14 → 2027-06-29 (-199d) | 94d → 19d | 1, 22, 37 → 31FS+57d | was named PT/H / 6.5.4 Kit de cadena de frío instalado y recibido en los 28 camiones con frío |
| 83 | 3.3.1 Identidad y control de acceso (incluidos conductores externos) | 2027-09-01 → 2027-06-01 (-92d) | 2028-09-29 → 2027-08-06 (-420d) | 272d → 46d | none → 26FS+44d | was named PT/H / 7.2.4 Procedimientos operativos rediseñados, contingencia de frío y ruptura confirmada |
| 84 | 3.3.2 Registro auditable de stock, lotes y cobros | 2027-09-02 → 2027-06-01 (-93d) | 2027-09-27 → 2027-08-04 (-54d) | 17d → 44d | 27, 30, 33FF, 42, 44FF, 45FF, 47SS, 48SS, 49SS, 50SS, 55SS, 59SS → 25FS+44d, 72FS+15d | was named PT/H / 3.4.11 Indicadores operacionales y OTIF diario (M10 Analítica) |
| 85 | 5.1.1 Integración con el ERP como único emisor de la guía de despacho (INT-06 e INT-07) | 2027-09-30 → 2027-06-01 (-121d) | 2027-09-30 → 2027-07-01 (-91d) | 0d → 21d | 82SS → 9FS+77d | was named PT/H / Cuatro kits de frío recibidos para el piloto |
| 86 | 5.1.2 Mecanismo de convivencia con el WMS de 2013 | 2027-10-01 → 2027-06-01 (-122d) | 2027-11-19 → 2027-07-07 (-135d) | 34d → 25d | none → 9FS+77d, 72FS+15d | was named PT/H / 3 elementos: 3.10.1.2, 3.10.1.3, 3.10.3.3 |
| 87 | 7.2.3 Innovación 2: captura de evidencia en las aplicaciones de preventa, preparación y reparto (INN-02.P3) | 2027-10-01 → 2027-06-01 (-122d) |  | 7d → 91d | none → 45SS+42d, 93SF+85d | was named PT/H / 2 elementos: 5.4.1, 5.4.2 |
| 88 | 8.1.3 Actas de recepción técnica de equipamiento de terreno e infraestructura | 2027-10-01 → 2027-06-01 (-122d) | 2027-10-20 → 2027-06-09 (-133d) | 13d → 7d | none → 30FS+57d, 35FS+56d | was named PT/H / 6.3.4 Gabinetes de borde montados en Curicó, Chillán y Los Ángeles, con dos mini-PC (activo y en espera) por plataforma |
| 89 | 8.5.1 Hardware de control de acceso biométrico y esclusa instalado | 2027-10-04 → 2027-06-01 (-125d) | 2027-11-03 → 2027-06-18 (-138d) | 21d → 14d | none → 69FS+6d | was named PT/H / 3.7.2 Datos maestros cargados: 8.400 SKU, clientes e instalaciones |
| 90 | 3.3.3 Operación sin conexión: 14 horas en terreno y 24 horas en el CD | 2027-10-05 → 2027-06-07 (-120d) | 2027-10-22 → 2027-08-04 (-79d) | 13d → 40d | 60, 61, 62, 64, 65, 66, 67, 68, 69, 70, 74, 77, 84 → 72FS+19d, 83SS+4d | was named PT/H / 3.8.1 Pruebas de integración, regresión e idempotencia en QA (H4) |
| 91 | 7.3.2 Innovación 3: asociación lote–sensor en el borde y en el camión (INN-03.P2) | 2027-10-06 → 2027-06-07 (-121d) | 2028-01-14 → 2027-09-21 (-115d) | 70d → 73d | 46 → 46SS+46d, 94SF+71d | was named PT/H / 6.5.1 Terminales de preventa, reparto y bodega configurados y enrolados |
| 92 | 8.5.2 Hardware de videovigilancia instalado | 2027-10-06 → 2027-06-07 (-121d) | 2027-11-25 → 2027-06-24 (-154d) | 35d → 13d | none → 69FS+10d | was named PT/H / 6.5.3 Sensores de cámara y gateways IoT instalados en Talca y Concepción |
| 95 | 8.4.4 · Rack R01 montado | 2027-10-06 → 2027-06-09 (-119d) | 2028-01-14 → 2027-06-09 (-219d) | 70d → 0d | none → 75SS+12d | was named PT/H / 6.5.6 Impresoras de andén y balanzas de recepción instaladas |
| 96 | 4.1.1 Recepción de mercadería con captura de lote y vencimiento (M1 Recepción) | 2027-10-22 → 2027-06-10 (-134d) | 2027-10-22 → 2027-08-06 (-77d) | 0d → 39d | 90FS-1d → 43FS+28d, 72FS+22d, 77SF+47d, 78FF+32d, 79FF+32d, 80FF+32d, 81FF+32d, 83SS+7d, 84SS+7d, 85SS+7d, 86SS+7d, 90SS+3d, 99SS | was named PT/H / H4 — entrega del expediente |
| 97 | 4.1.2 Inventario por ubicación y lote, con FEFO y conteo cíclico (M2 Inventario) | 2027-10-25 → 2027-06-10 (-137d) | 2027-11-19 → 2027-07-30 (-112d) | 19d → 34d | 90 → 43FS+28d, 72FS+22d, 77SF+42d, 78FF+27d, 79FF+27d, 80FF+27d, 81FF+27d, 83SS+7d, 84SS+7d, 85SS+7d, 86SS+7d, 90SS+3d, 99SS | was named PT/H / 2 elementos: 3.8.2, 3.8.3 |
| 98 | 4.3.1 Aplicación móvil de preventa sin conexión, con stock y crédito (M3 Preventa) | 2027-10-25 → 2027-06-10 (-137d) | 2027-11-11 → 2027-08-05 (-98d) | 13d → 38d | 90 → 43FS+28d, 72FS+22d, 77SF+46d, 78FF+31d, 79FF+31d, 80FF+31d, 81FF+31d, 83SS+7d, 84SS+7d, 85SS+7d, 86SS+7d, 90SS+3d, 97SS, 99SS | was named PT/H / 4 elementos: 3.8.4, 3.8.5, 3.8.6, 3.8.8 |
| 99 | 5.1.3 Integración con la telemetría de los 42 camiones propios (INT-15) | 2027-11-02 → 2027-06-10 (-145d) | 2028-09-29 → 2027-07-13 (-444d) | 231d → 22d | none → 9FS+84d, 62FS+7d | was named PT/H / 3.11.2 Base de conocimiento de incidentes y decisiones de diseño |
| 100 | 8.7.1 Software de base instalado en los cinco sitios | 2027-11-02 → 2027-06-10 (-145d) | 2027-11-10 → 2027-06-30 (-133d) | 7d → 13d | none → 71FS+13d, 76, 95FS+1d | was named PT/H / 4.1.1 Plan de olas de la Etapa 1 por sitio y zona: Talca, Concepción y plataformas de cross-docking |
| 101 | 8.7.2 Enlaces de fibra, LTE y Starlink habilitados, con conmutación al respaldo | 2027-11-02 → 2027-06-10 (-145d) | 2027-12-24 → 2027-06-30 (-177d) | 38d → 13d | none → 71FS+13d, 76, 95FS+1d | was named PT/H / 2 elementos: 7.1.1, 7.1.6 |
| 102 | 8.7.3 Borde de los CD en servicio, con la prueba de autonomía de 24 horas aprobada | 2027-11-02 → 2027-06-10 (-145d) | 2028-07-31 → 2027-06-18 (-409d) | 190d → 7d | none → 71FS+13d, 76, 95FS+1d | was named PT/H / 7.1.5 Materiales de capacitación: manuales por perfil, guías rápidas, preguntas frecuentes y videos tutoriales |
| 103 | 4.1.2 → 4.1.3 · Contrato de interfaz disponible | 2027-11-02 → 2027-06-16 (-139d) | 2028-05-31 → 2027-06-16 (-350d) | 149d → 0d | none → 97SS+4d | was named PT/H / 7.2.1 Acompañamiento del personal con 20 o 30 años en la compañía |
| 104 | 4.1.2 → 4.2.1 · Contrato de interfaz disponible | 2027-11-04 → 2027-06-16 (-141d) | 2028-01-14 → 2027-06-16 (-212d) | 51d → 0d | none → 97SS+4d | was named PT/H / 2 elementos: 6.5.2, 6.5.5 |
| 105 | 4.3.1 → 4.3.2 · Contrato de interfaz disponible | 2027-11-08 → 2027-06-16 (-145d) | 2027-11-08 → 2027-06-16 (-145d) |  | 96FS+10d → 98SS+4d | was named PT/H / H4 — acta del CLIENTE (límite: mes 10) |
| 106 | 4.3.1 → 4.3.3 · Contrato de interfaz disponible | 2027-11-09 → 2027-06-16 (-146d) | 2027-12-20 → 2027-06-16 (-187d) | 29d → 0d | 17, 22, 37, 65, 66, 85, 90, 105 → 98SS+4d | was named PT/H / 4.1.4 Piloto de cadena de frío en cuatro camiones |
| 107 | 4.1.3 Preparación de pedidos en el turno de noche y en la cámara de congelado (M5 Preparación) | 2027-11-22 → 2027-06-18 (-157d) | 2027-12-01 → 2027-08-06 (-117d) | 8d → 33d | 97, 98 → 43FS+34d, 72FS+28d, 77SF+47d, 78FF+32d, 79FF+32d, 80FF+32d, 81FF+32d, 83SS+13d, 84SS+13d, 85SS+13d, 86SS+13d, 90SS+9d, 97SS+6d, 99SS+6d | was named PT/H / 3.8.7 Acta de certificación de la Etapa 1 (H5) |
| 108 | 4.2.1 Cadena de frío, retención por SSCC y retiro sanitario (M9 Calidad y trazabilidad) | 2027-12-01 → 2027-06-18 (-166d) | 2027-12-31 → 2027-08-25 (-128d) | 22d → 46d | none → 43FS+34d, 44FS+33d, 58FS+14d, 72FS+28d, 77SF+60d, 78FF+45d, 79FF+45d, 80FF+45d, 81FF+45d, 83SS+13d, 84SS+13d, 85SS+13d, 86SS+13d, 90SS+9d, 97SS+6d, 99SS+6d | was named RC / 2 elementos: 3.7.3, 3.7.4 |
| 109 | 4.2.2 Ingesta de temperatura (M9) y posición de flota (M12) | 2027-12-01 → 2027-06-18 (-166d) | 2028-03-20 → 2027-08-17 (-216d) | 78d → 40d | none → 43FS+34d, 44FS+33d, 58FS+14d, 62FS+13d, 72FS+28d, 77SF+54d, 78FF+39d, 79FF+39d, 80FF+39d, 81FF+39d, 83SS+13d, 84SS+13d, 85SS+13d, 86SS+13d, 90SS+9d, 97SS+6d, 99SS+6d | was named PT/H / 3 elementos: 3.10.1.4, 3.10.2.4, 3.10.3.4 |
| 110 | 4.1.1 → 4.1.3 · Contrato de interfaz disponible | 2027-12-01 → 2027-06-18 (-166d) | 2027-12-10 → 2027-06-18 (-175d) | 7d → 0d | none → 96SS+6d | was named PT/H / 4.1.2 Procedimiento de reversión de la Etapa 1 antes de las 05:30, con versión operativa local y DTE emitidos por el ERP |
| 111 | 4.1.1 → 4.2.1 · Contrato de interfaz disponible | 2027-12-01 → 2027-06-18 (-166d) | 2028-09-29 → 2027-06-18 (-469d) | 210d → 0d | none → 96SS+6d | was named PT/H / 7.1.3 Incorporación de conductores de transportistas, escaneos y lectura del rojo |
| 112 | 8.5.3 Recinto de custodia de respaldos habilitado | 2027-12-01 → 2027-06-22 (-162d) | 2027-12-01 → 2027-07-09 (-145d) | 0d → 13d | 107FS-1d → 89 | was named PT/H / H5 — entrega del expediente |
| 113 | H3 · Entrega de expediente | 2028-01-03 → 2027-06-22 (-195d) | 2028-01-27 → 2027-06-22 (-219d) | 19d → 0d | 81FF+3d, 89FF+3d, 108FF+3d → 78, 79, 80, 81, 102 | was named PT/H / 3.7.5 Acta de conciliación y corte fuera de las ventanas de congelamiento |
| 114 | H3 · Revisión de la Contraparte (10 días hábiles) | 2028-01-03 → 2027-06-23 (-194d) | 2028-01-03 → 2027-07-07 (-180d) | 0d → 10d | 112FS+10d → 113FS+1d | was named PT/H / H5 — acta del CLIENTE (límite: mes 12) |
| 115 | 4.1.3 → 4.3.2 · Contrato de interfaz disponible | 2028-02-01 → 2027-06-25 (-221d) | 2028-02-01 → 2027-06-25 (-221d) |  | 120SS → 107SS+4d | was named RC / H6 — inicio de marcha blanca (mes 13) |
| 116 | 4.1.3 → 4.3.3 · Contrato de interfaz disponible | 2028-02-01 → 2027-06-25 (-221d) | 2028-02-09 → 2027-06-25 (-229d) | 7d → 0d | none → 107SS+4d | was named PT/H / 1.2.5 Documento de línea base de alcance de la Etapa 2: canal moderno y costo de servir (H8) |
| 117 | 4.1.3 · Construcción dependiente de 4.1.1 | 2028-02-01 → 2027-06-29 (-217d) | 2028-02-16 → 2027-06-29 (-232d) | 12d → 0d | none → 110FS+5d | was named PT/H / 2.1.4 Documento de diseño detallado de M11 y del intercambio con las cadenas |
| 118 | 4.2.1 · Construcción dependiente de 4.1.1 | 2028-02-01 → 2027-06-29 (-217d) | 2028-07-04 → 2027-06-29 (-371d) | 107d → 0d | none → 111FS+5d | was named PT/H / 3.6.5 Intercambio electrónico con la principal cadena, con sus pruebas aprobadas (INT-08) |
| 119 | 4.1.3 · Construcción dependiente de 4.1.2 | 2028-02-01 → 2027-06-29 (-217d) | 2028-03-21 → 2027-06-29 (-266d) | 36d → 0d | none → 103FS+7d | was named PT/H / 3.10.4.1 Innovación 5: prototipo e informe de la prueba de comprensión (INN-05.P1) |
| 120 | 4.2.1 · Construcción dependiente de 4.1.2 | 2028-02-01 → 2027-06-29 (-217d) | 2028-04-28 → 2027-06-29 (-304d) | 63d → 0d | 100, 110, 113, 114 → 104FS+7d | was named PT/H / 4.2.1 Marcha blanca de la Etapa 1 con conciliación diaria (H6) |
| 121 | 5.2.2 Integración con la pasarela de pago para el cobro con tarjeta (INT-09) | 2028-02-01 → 2027-07-01 (-215d) | 2028-10-31 → 2027-08-03 (-455d) | 187d → 23d | none → 9FS+97d | was named PT/H / 7.2.5 Medición de la adopción y plan de acción correctiva |
| 122 | 8.4.2 Certificación de enlaces, etiquetado y planos as-built | 2028-02-01 → 2027-07-01 (-215d) | 2028-03-24 → 2027-07-21 (-247d) | 39d → 14d | none → 70FS+26d | was named PT/H / 7.3.1 Certificación de preventistas, conductores y preparadores (Etapa 1) |
| 123 | H3 · Firma del acta | 2028-02-17 → 2027-07-07 (-225d) | 2028-02-28 → 2027-07-07 (-236d) | 8d → 0d | 116, 117 → 114FS-1d | was named PT/H / 2.4.2 Acta de aprobación del diseño detallado de la Etapa 2 (H8) |
| 124 | 8.4.4 · Traslado dominical del ERP a R01 | 2028-02-28 → 2027-07-11 (-232d) | 2028-02-28 → 2027-07-11 (-232d) |  | 116FS-1d, 123FS-1d → 95FS+21d, 123FS+3d | was named PT/H / H8 — entrega del expediente |
| 125 | 8.4.4 · Cierre del paquete | 2028-02-29 → 2027-07-12 (-232d) | 2028-02-29 → 2027-07-12 (-232d) |  | 82FS-1d, 87FS-1d, 106FS-1d → 75FS-1d, 124SS+1d | was named PT/H / Inicio de la ola 3 de reparto |
| 126 | 5.2.4 Integración con el servicio de avisos al cliente (INT-11) | 2028-03-01 → 2027-07-20 (-225d) | 2028-04-19 → 2027-08-16 (-247d) | 35d → 20d | none → 9FS+110d | was named PT/H / 3.10.4.2 Innovación 5: evaluación de privacidad y diseño de la impresión en cabina (INN-05.P2) |
| 127 | 4.1.2 · Cierre del paquete | 2028-03-13 → 2027-07-29 (-228d) | 2028-03-13 → 2027-07-29 (-228d) |  | 124FS+10d → 97FS-1d, 128SS, 129SS | was named PT/H / H8 — acta del CLIENTE (límite: mes 14) |
| 128 | 4.1.2 → 4.1.3 · Incremento para integración | 2028-03-15 → 2027-07-29 (-230d) | 2028-04-28 → 2027-07-29 (-274d) | 32d → 0d | 116, 123, 127 → 103FS+29d | was named RC / 4 elementos: 3.5.1, 3.5.2, 3.5.3, 3.5.4 |
| 129 | 4.1.2 → 4.2.1 · Incremento para integración | 2028-04-03 → 2027-07-29 (-249d) | 2028-04-11 → 2027-07-29 (-257d) | 7d → 0d | none → 104FS+29d | was named PT/H / 1.7.2 Primera actualización anual del Plan de Reversibilidad durante la implementación |
| 130 | 4.3.4 Devoluciones en terreno y control de envases (M8 Devoluciones y envases) | 2028-04-03 → 2027-07-30 (-248d) | 2028-06-09 → 2027-09-15 (-268d) | 48d → 34d | none → 43FS+62d, 72FS+56d, 77SF+76d, 78FF+61d, 79FF+61d, 80FF+61d, 81FF+61d, 83SS+41d, 84SS+41d, 85SS+41d, 86SS+41d, 90SS+37d, 99SS+34d, 127SS+1d | was named PT/H / 3.10.4.3 Innovación 5: cálculo y bloques 1 a 3 de la hoja de negocio (INN-05.P3) |
| 131 | 5.2.1 Intercambio de lote y trazabilidad con los proveedores | 2028-04-03 → 2027-08-02 (-245d) | 2028-10-31 → 2027-09-01 (-426d) | 143d → 23d | none → 3FS+119d | was named PT/H / 3.11.1 Documentación técnica, funcional, de arquitectura, de operación y de seguridad |
| 132 | 6.8.7 Contrato de custodia de fuentes con un tercero independiente | 2028-04-03 → 2027-08-02 (-245d) | 2028-09-29 → 2027-08-10 (-416d) | 123d → 7d | none → 77SS+43d | was named PT/H / 7.1.4 Traspaso al equipo de TI de cuatro personas del CLIENTE |
| 133 | 7.1.1 Innovación 1: documento de catálogo de acciones y protocolo del piloto (INN-01.P1) | 2028-05-02 → 2027-08-02 (-274d) | 2028-05-18 → 2027-10-08 (-223d) | 13d → 49d | 128 → 72FS+57d | was named PT/H / 3.9.1 Pruebas de integración y regresión sin afectar la Etapa 1 en producción (H9) |
| 134 | 8.4.3 Gabinetes de piso y switches de acceso instalados en las bodegas de Talca y Concepción | 2028-05-05 → 2027-08-02 (-277d) | 2028-09-29 → 2027-08-19 (-407d) | 101d → 14d | none → 34FS+86d, 122FS+8d | was named PT/H / 4.2.2 Estabilización de la Etapa 1, acompañamiento en ruta y restauraciones de soporte puente |
| 135 | 4.1.1 → 4.1.3 · Incremento para integración | 2028-05-02 → 2027-08-02 (-274d) | 2028-06-23 → 2027-08-02 (-326d) | 38d → 0d | none → 110FS+29d | was named PT/H / 7.2.2 Gestión del cambio con las cadenas y los transportistas |
| 136 | 4.1.3 · Integración con 4.1.1 | 2028-05-05 → 2027-08-03 (-276d) | 2028-05-15 → 2027-08-03 (-286d) | 7d → 0d | 120, 122 → 117SS+25d, 135FS+1d | was named PT/H / 4.2.3 Acta de aceptación de la Etapa 1 (H7) |
| 137 | 4.1.3 · Integración con 4.1.2 | 2028-05-15 → 2027-08-03 (-286d) | 2028-05-15 → 2027-08-03 (-286d) |  | 136FS-1d → 119SS+25d, 128FS+3d | was named PT/H / H7 — entrega del expediente |
| 138 | 5.4.1 Informe de perfilamiento y datos saneados | 2028-05-18 → 2027-08-04 (-288d) | 2028-05-18 → 2027-10-01 (-230d) | 0d → 42d | 133FS-1d → 25FS+88d, 85FS+23d | was named PT/H / H9 — entrega del expediente |
| 139 | 4.3.1 · Cierre del paquete | 2028-05-19 → 2027-08-04 (-289d) | 2028-06-01 → 2027-08-04 (-302d) | 10d → 0d | 133 → 98FS-1d, 140SS, 141SS | was named PT/H / 3 elementos: 3.9.3, 3.9.4, 3.9.7 |
| 140 | 4.3.1 → 4.3.2 · Incremento para integración | 2028-05-19 → 2027-08-04 (-289d) | 2028-05-26 → 2027-08-04 (-296d) | 6d → 0d | 133 → 105FS+33d | was named PT/H / 3.9.5 Prueba de seguridad ofensiva de la Etapa 2, por un tercero independiente |
| 141 | 4.3.1 → 4.3.3 · Incremento para integración | 2028-05-29 → 2027-08-04 (-299d) | 2028-05-29 → 2027-08-04 (-299d) |  | 137FS+10d → 106FS+33d | was named RC / H7 — acta del CLIENTE (límite: mes 16) |
| 142 | 4.3.3 Aplicación móvil de reparto con prueba de entrega digital (M6 Reparto) | 2028-06-01 → 2027-08-05 (-301d) | 2028-08-23 → 2027-09-27 (-331d) | 57d → 37d | none → 43FS+66d, 72FS+60d, 77SF+83d, 78FF+68d, 79FF+68d, 80FF+68d, 81FF+68d, 83SS+45d, 84SS+45d, 85SS+45d, 86SS+45d, 90SS+41d, 99SS+38d, 139SS+1d | was named PT/H / 3.6.6 Incorporación de las demás cadenas al intercambio electrónico (INT-08) |
| 143 | 4.1.1 · Cierre del paquete | 2028-06-01 → 2027-08-05 (-301d) | 2028-06-09 → 2027-08-05 (-309d) | 7d → 0d | none → 96FS-1d, 135SS+3d, 145SS | was named PT/H / 4.1.3 Plan de implantación y reversión de la Etapa 2 fuera de la ventana de 05:30 a 07:00 |

| ID | Task | Start | Finish | Duration | Predecessors | Other |
| --- | --- | --- | --- | --- | --- | --- |
| 144 | 4.1.3 · Cierre del paquete | 2028-06-01 → 2027-08-05 (-301d) | 2028-06-09 → 2027-08-05 (-309d) | 7d → 0d | none → 107FS-1d, 136SS+2d, 137SS+2d, 146SS, 147SS | was named PT/H / 5.4.3 Fórmula aprobada del tramo variable: reglas de atribución, canasta e índices (INN-04.P1) |
| 145 | 4.1.1 → 4.2.1 · Incremento para integración | 2028-06-01 → 2027-08-05 (-301d) | 2028-06-01 → 2027-08-05 (-301d) |  | 138FS+10d → 111FS+32d | was named PT/H / H9 — acta del CLIENTE (límite: mes 17) |
| 146 | 4.1.3 → 4.3.2 · Incremento para integración | 2028-06-02 → 2027-08-05 (-302d) | 2028-06-15 → 2027-08-05 (-315d) | 10d → 0d | 133 → 115FS+28d | was named PT/H / 3.9.2 Pruebas de aceptación y de accesibilidad con cadenas, transportistas, Comercial y Finanzas |
| 147 | 4.1.3 → 4.3.3 · Incremento para integración | 2028-06-16 → 2027-08-05 (-316d) | 2028-06-28 → 2027-08-05 (-328d) | 7d → 0d | 133, 139, 140, 146 → 116FS+28d | was named PT/H / 3.9.6 Acta de certificación de la Etapa 2 y cierre del desarrollo (H10) |
| 148 | 4.3.2 Planificación de rutas corregible por el planificador (M4 Rutas) | 2028-06-28 → 2027-08-06 (-327d) | 2028-06-28 → 2027-09-20 (-282d) | 0d → 31d | 147FS-1d → 13FS+66d, 43FS+67d, 72FS+61d, 77SF+78d, 78FF+63d, 79FF+63d, 80FF+63d, 81FF+63d, 83SS+46d, 84SS+46d, 85SS+46d, 86SS+46d, 90SS+42d, 99SS+39d, 143SS+1d | was named PT/H / H10 — entrega del expediente |
| 149 | 4.3.3 → 4.3.5 · Contrato de interfaz disponible | 2028-07-03 → 2027-08-10 (-328d) | 2028-09-29 → 2027-08-10 (-416d) | 62d → 0d | none → 142SS+3d | was named PT/H / 3.10.4.4 Innovación 5: hoja certificada, en marcha blanca y en producción (INN-05.P4, primera parte) |
| 150 | 4.3.5 Cobro en ruta, rendición y conciliación (M7 Cobranza y rendición) | 2028-07-03 → 2027-08-11 (-327d) | 2028-07-25 → 2027-09-30 (-299d) | 17d → 36d | none → 43FS+70d, 72FS+64d, 77SF+86d, 78FF+71d, 79FF+71d, 80FF+71d, 81FF+71d, 83SS+49d, 84SS+49d, 85SS+49d, 86SS+49d, 90SS+45d, 99SS+42d, 142SS+4d | was named PT/H / 7.3.2 Certificación de Comercial y Finanzas en costo de servir (Etapa 2) |
| 151 | 4.3.3 · Construcción dependiente de 4.1.3 | 2028-07-12 → 2027-08-11 (-336d) | 2028-07-12 → 2027-08-11 (-336d) |  | 148FS+10d → 116FS+32d | was named PT/H / H10 — acta del CLIENTE (límite: mes 18) |
| 152 | 4.3.3 · Construcción dependiente de 4.3.1 | 2028-08-01 → 2027-08-11 (-356d) | 2028-08-01 → 2027-08-11 (-356d) |  | 153SS → 106FS+38d | was named RC / H11 — inicio de marcha blanca (mes 19) |
| 153 | 4.3.2 · Construcción dependiente de 4.1.3 | 2028-08-01 → 2027-08-13 (-354d) | 2028-09-29 → 2027-08-13 (-413d) | 41d → 0d | 118, 143, 151 → 115FS+34d | was named PT/H / 4.3.1 Marcha blanca de la Etapa 2 en convivencia con la Etapa 1 y fuente única de datos (H11) |
| 154 | 4.3.2 · Construcción dependiente de 4.3.1 | 2028-09-13 → 2027-08-13 (-397d) | 2028-09-25 → 2027-08-13 (-409d) | 7d → 0d | none → 105FS+40d | was named PT/H / 4.3.4 Garantía de correcto funcionamiento constituida, condición de la aceptación final (H12) |
| 155 | 5.2.3 Integración con el servicio de mapas y geocodificación (INT-10) | 2028-10-05 → 2027-08-16 (-416d) | 2028-11-30 → 2027-09-10 (-447d) | 38d → 20d | none → 9FS+129d | was named PT/H / 4.3.2 Estabilización de la Etapa 2 con Comercial, Finanzas, cadenas y transportistas |
| 156 | 4.3.5 · Construcción dependiente de 4.3.3 | 2028-10-02 → 2027-08-18 (-411d) | 2028-10-11 → 2027-08-18 (-420d) | 7d → 0d | 132, 150, 153, 154 → 149FS+6d | was named PT/H / 4.3.3 Acta de aceptación final de la implementación (H12) |
| 157 | 4.2.1 · Integración con 4.1.1 | 2028-10-11 → 2027-08-20 (-418d) | 2028-10-11 → 2027-08-20 (-418d) |  | 154FS-1d, 156FS-1d → 118SS+38d, 145FS+11d | was named PT/H / H12 — entrega del expediente |
| 158 | 4.2.1 · Integración con 4.1.2 | 2028-10-25 → 2027-08-20 (-432d) | 2028-10-25 → 2027-08-20 (-432d) |  | 157FS+10d → 120SS+38d, 129FS+16d | was named RC / H12 — acta del CLIENTE (límite: mes 21) |

## Version 5 (saved 2026-11-23)

Note of the change: docs(sd7): mueve la entrega de H5 al 01-12-2027, al cierre de 6.7.1

Last finish stays 2031-09-30.

Changed:

| ID | Task | Start | Finish | Predecessors |
| --- | --- | --- | --- | --- |
| 212 | H5 · Entrega de expediente | 2027-11-24 → 2027-12-01 (+7d) | 2027-11-24 → 2027-12-01 (+7d) |  |
| 213 | H5 · Evidencia disponible (6.7.1) | 2027-11-24 → 2027-12-01 (+7d) | 2027-11-24 → 2027-12-01 (+7d) | 192FS+2d, 193FS+2d, 194FS+8d, 195FS+8d, 196FS+8d, 197FS+8d, 205SS+2d → 192FS+7d, 193FS+7d, 194FS+13d, 195FS+13d, 196FS+13d, 197FS+13d, 205SS+7d |
| 214 | 6.7.1 · Cierre del paquete |  |  | 205FS-1d, 213SS+5d → 205FS-1d, 213SS |
| 215 | H5 · Revisión de la Contraparte (10 días hábiles) | 2027-11-25 → 2027-12-02 (+7d) | 2027-12-09 → 2027-12-16 (+7d) |  |
| 217 | H5 · Firma del acta |  |  | 215FS+16d → 215FS+11d |

## Version 6 (saved 2026-11-23)

Note of the change: docs(t14): regenera el tramo 2 del Gantt con el nombre vigente de 8.3.1

Last finish stays 2031-09-30.

Changed:

| ID | Task | Other |
| --- | --- | --- |
| 47 | 8.3.1 Piso técnico de la sala y recepción de obra civil de separación (BTT, cap. 6, RT-06.06, p. 15) | was named 8.3.1 Piso técnico de la sala y recepción de obra civil de separación (RT-06.06) |

## Version 7 (saved 2026-11-23)

Note of the change: a

Last finish stays 2031-09-30.

Added:

| ID | Task | Duration | Start | Finish |
| --- | --- | --- | --- | --- |
| 293 | Inicio contractual (supuesto V-12) | 0d | 2027-02-01 | 2027-02-01 |
| 294 | Especificación de equipos de frío disponible (SD4) | 0d | 2027-02-01 | 2027-02-01 |
| 295 | Seguimiento de construcción E1 · 15/06/2027 | 0d | 2027-06-15 | 2027-06-15 |
| 296 | Seguimiento de construcción E1 · 30/06/2027 | 0d | 2027-06-30 | 2027-06-30 |
| 297 | Seguimiento de construcción E1 · 15/07/2027 | 0d | 2027-07-15 | 2027-07-15 |
| 298 | Seguimiento de construcción E1 · 30/07/2027 | 0d | 2027-07-30 | 2027-07-30 |
| 299 | Demostración de módulos en QA E1 · 30/07/2027 | 0d | 2027-07-30 | 2027-07-30 |
| 300 | Seguimiento de construcción E1 · 13/08/2027 | 0d | 2027-08-13 | 2027-08-13 |
| 301 | Demostración de módulos en QA E1 · 13/08/2027 | 0d | 2027-08-13 | 2027-08-13 |
| 302 | Seguimiento de construcción E1 · 31/08/2027 | 0d | 2027-08-31 | 2027-08-31 |
| 303 | Demostración de módulos en QA E1 · 31/08/2027 | 0d | 2027-08-31 | 2027-08-31 |
| 304 | Seguimiento de construcción E1 · 15/09/2027 | 0d | 2027-09-15 | 2027-09-15 |
| 305 | Demostración de módulos en QA E1 · 15/09/2027 | 0d | 2027-09-15 | 2027-09-15 |
| 306 | Seguimiento de construcción E1 · 30/09/2027 | 0d | 2027-09-30 | 2027-09-30 |
| 307 | Demostración de módulos en QA E1 · 30/09/2027 | 0d | 2027-09-30 | 2027-09-30 |
| 308 | Seguimiento de construcción E2 · 15/03/2028 | 0d | 2028-03-15 | 2028-03-15 |
| 309 | Seguimiento de construcción E2 · 31/03/2028 | 0d | 2028-03-31 | 2028-03-31 |
| 310 | Seguimiento de construcción E2 · 13/04/2028 | 0d | 2028-04-13 | 2028-04-13 |
| 311 | Seguimiento de construcción E2 · 28/04/2028 | 0d | 2028-04-28 | 2028-04-28 |
| 312 | Demostración de módulos en QA E2 · 28/04/2028 | 0d | 2028-04-28 | 2028-04-28 |
| 313 | Entrega a QA · 4.1.1 | 0d | 2027-08-05 | 2027-08-05 |
| 314 | Entrega a QA · 4.1.2 | 0d | 2027-07-29 | 2027-07-29 |
| 315 | Entrega a QA · 4.1.3 | 0d | 2027-08-05 | 2027-08-05 |
| 316 | Entrega a QA · 4.2.1 | 0d | 2027-08-24 | 2027-08-24 |
| 317 | Entrega a QA · 4.2.2 | 0d | 2027-08-16 | 2027-08-16 |
| 318 | Entrega a QA · 4.3.1 | 0d | 2027-08-04 | 2027-08-04 |
| 319 | Entrega a QA · 4.3.2 | 0d | 2027-09-20 | 2027-09-20 |
| 320 | Entrega a QA · 4.3.3 | 0d | 2027-09-27 | 2027-09-27 |
| 321 | Entrega a QA · 4.3.4 | 0d | 2027-09-15 | 2027-09-15 |
| 322 | Entrega a QA · 4.3.5 | 0d | 2027-09-30 | 2027-09-30 |
| 323 | Entrega a QA · 4.4.1 | 0d | 2028-04-28 | 2028-04-28 |
| 324 | Entrega a QA · 4.4.2 | 0d | 2028-04-28 | 2028-04-28 |
| 325 | Entrega a QA · 4.4.3 | 0d | 2028-04-28 | 2028-04-28 |
| 326 | Entrega a QA · 4.5.1 | 0d | 2027-09-29 | 2027-09-29 |
| 327 | Entrega a QA · 4.5.2 | 0d | 2028-04-28 | 2028-04-28 |

Changed:

| ID | Task | Predecessors |
| --- | --- | --- |
| 1 | 1.1.1 Acta de constitución del proyecto, firmada con la Contraparte Técnica | none → 293SS |
| 10 | 2.4.1 Plano de la sala técnica de Talca, con su cálculo eléctrico y térmico | none → 293SS |
| 12 | 8.1.4 Especificación y compra del sistema de cadena de frío | none → 294SS |

## Version 8 (saved 2026-11-23)

Note of the change: a

Last finish stays 2031-09-30.

Added:

| ID | Task | Duration | Start | Finish |
| --- | --- | --- | --- | --- |
| 15 | Especificación de equipos de frío disponible | 0d | 2027-02-01 | 2027-02-01 |

Removed: 294 Especificación de equipos de frío disponible (SD4)

Changed:

| ID | Task | Predecessors |
| --- | --- | --- |
| 12 | 8.1.4 Especificación y compra del sistema de cadena de frío | Especificación de equipos de frío disponible (SD4)SS → 15SS |
| 135 | Entrega a QA · 4.1.2 | none → 132SS |
| 137 | Demostración de módulos en QA E1 · 30/07/2027 | none → 135SS+1d |
| 150 | Entrega a QA · 4.3.1 | none → 147SS |
| 157 | Entrega a QA · 4.1.1 | none → 152SS |
| 158 | Entrega a QA · 4.1.3 | none → 153SS |
| 166 | Demostración de módulos en QA E1 · 13/08/2027 | none → 150SS+7d, 157SS+6d, 158SS+6d |
| 169 | Entrega a QA · 4.2.2 | none → 112FS-1d |
| 174 | Entrega a QA · 4.2.1 | none → 173SS |
| 176 | Demostración de módulos en QA E1 · 31/08/2027 | none → 169SS+11d, 174SS+5d |
| 184 | Demostración de módulos en QA E1 · 15/09/2027 | none → 185SS |
| 185 | Entrega a QA · 4.3.4 | none → 136FS-1d |
| 188 | Entrega a QA · 4.3.2 | none → 187SS |
| 193 | Entrega a QA · 4.3.3 | none → 191SS |
| 195 | Entrega a QA · 4.5.1 | none → 175FS-1d |
| 198 | Demostración de módulos en QA E1 · 30/09/2027 | none → 188SS+8d, 193SS+3d, 195SS+1d, 199SS |
| 199 | Entrega a QA · 4.3.5 | none → 196SS |
| 272 | Demostración de módulos en QA E2 · 28/04/2028 | none → 273SS, 274SS, 275SS, 276SS |
| 273 | Entrega a QA · 4.4.1 | none → 261FS-1d |
| 274 | Entrega a QA · 4.4.2 | none → 260FS-1d |
| 275 | Entrega a QA · 4.4.3 | none → 262FS-1d |
| 276 | Entrega a QA · 4.5.2 | none → 263FS-1d |
