How a schedule from an exported table changed from version to version. A marks actual dates.

## Version 1 (saved 2026-11-06)

Note of the change: Cambios y documentacion

| ID | Task | Start | Finish |
| --- | --- | --- | --- |
| 1 | RC / 5.1.4 Especificación y compra del sistema de cadena de frío | 2027-02-01 | 2027-03-31 |
| 2 | PT/H / 7 elementos: 1.1.1, 1.1.2, 1.1.3, 1.4.1, 1.4.2, 1.9.1, 1.9.2 | 2027-02-01 | 2027-02-09 |
| 3 | PT/H / 1.2.1 Documento de especificación de requerimientos y línea base de alcance de la Etapa 1 (H1) | 2027-02-01 | 2027-02-09 |
| 4 | PT/H / 1.2.2 Documento de reglas de ruteo capturadas al planificador de rutas | 2027-02-01 | 2027-04-30 |
| 5 | PT/H / 1.2.3 Documento de especificación de las interfaces sin documentación del ERP, del WMS de 2013 y de la telemetría del tercero | 2027-02-01 | 2027-02-09 |
| 6 | PT/H / 5 elementos: 1.3.5, 1.6.2, 1.8.1, 1.8.3, 1.8.6 | 2027-02-01 | 2028-09-29 |
| 7 | PT/H / 2 elementos: 2.3.1, 2.3.2 | 2027-02-01 | 2027-03-01 |
| 8 | PT/H / 1.3.1 Plan para la dirección del proyecto, con el calendario de congelamientos de septiembre, diciembre y el cierre mensual | 2027-02-10 | 2027-02-18 |
| 9 | PT/H / 1.2.4 Matriz de trazabilidad: requerimiento, módulo, paquete y prueba (H1) | 2027-03-01 | 2027-03-09 |
| 10 | PT/H / 7 elementos: 1.3.2, 1.3.3, 1.3.4, 1.5.1, 1.6.1, 1.9.3, 5.1.1 | 2027-03-01 | 2027-03-09 |
| 11 | PT/H / 2.1.1 Documento de arquitectura lógica: capas, módulos M1 a M12 e interfaces | 2027-03-01 | 2027-03-29 |
| 12 | PT/H / 3 elementos: 2.1.2, 2.1.3, 2.2.4 | 2027-03-01 | 2027-03-29 |
| 13 | PT/H / 2.2.1 Plan de seguridad de la información | 2027-03-01 | 2027-03-29 |
| 14 | PT/H / 2 elementos: 2.3.3, 2.6.1 | 2027-03-01 | 2027-03-29 |
| 15 | PT/H / 3.10.2.1 Innovación 2: informe de medición inicial y contrato de evidencia (INN-02.P1) | 2027-03-01 | 2027-04-20 |
| 16 | PT/H / 5.2.1 Contrato de los servicios de AWS | 2027-03-01 | 2027-03-09 |
| 17 | PT/H / 5.3.4 Contrato de SIM M2M y servicio satelital de los camiones con frío | 2027-03-01 | 2027-03-12 |
| 18 | PT/H / 7.2.3 Diagnóstico del impacto organizacional por área y perfil, con agentes de cambio | 2027-03-01 | 2027-05-25 |
| 19 | PT/H / 5.1.2 Especificación y compra de la sala técnica, los racks, los servidores y los gabinetes de borde | 2027-03-02 | 2027-03-10 |
| 20 | PT/H / H1 — entrega del expediente | 2027-03-09 | 2027-03-09 |
| 21 | PT/H / H1 — acta del CLIENTE (límite: mes 2) | 2027-03-23 | 2027-03-23 |
| 22 | RC / 2.4.3 Validación del diseño del kit en banco de pruebas | 2027-04-01 | 2027-04-30 |
| 23 | PT/H / 1.7.1 Plan de Reversibilidad inicial (primeros 90 días) | 2027-04-01 | 2027-04-09 |
| 24 | PT/H / 2.2.2 Modelado de amenazas por componente y por integración externa, actualizado ante cada cambio | 2027-04-01 | 2027-11-30 |
| 25 | PT/H / 2.2.3 Plan de respuesta a incidentes de seguridad, con aviso al CLIENTE en dos horas | 2027-04-01 | 2027-04-16 |
| 26 | PT/H / 2 elementos: 2.5.1, 2.5.2 | 2027-04-01 | 2027-04-29 |
| 27 | PT/H / 2.6.2 Prototipos y pruebas de usabilidad con participantes del CLIENTE | 2027-04-01 | 2027-04-29 |
| 28 | PT/H / 2 elementos: 3.10.2.2, 3.10.3.1 | 2027-04-01 | 2027-06-09 |
| 29 | PT/H / 4 elementos: 6.1.1, 6.1.2, 6.1.3, 6.1.4 | 2027-04-01 | 2027-04-20 |
| 30 | PT/H / 2.4.1 Acta de aprobación de la arquitectura, el plan de seguridad y el modelo de datos (H2) | 2027-04-19 | 2027-04-29 |
| 31 | PT/H / H2 — entrega del expediente | 2027-04-29 | 2027-04-29 |
| 32 | RC / 2.6.3 Indicadores de usabilidad comprometidos por transacción crítica | 2027-05-03 | 2027-05-31 |
| 33 | RC / 3.1.4 Cadena de integración y entrega continua, e infraestructura como código | 2027-05-03 | 2027-05-31 |
| 34 | RC / 4 elementos: 3.2.1, 3.2.2, 3.2.4, 3.2.5 | 2027-05-03 | 2027-05-31 |
| 35 | RC / 3.2.3 Servicio de nube de ingesta de IoT, telemetría cruda y plataforma analítica | 2027-05-03 | 2027-05-31 |
| 36 | RC / 6.1.5 Acta de recepción técnica de la sala | 2027-05-03 | 2027-05-20 |
| 37 | PT/H / 2.4.4 Mapeo térmico por tipo de carrocería | 2027-05-03 | 2027-05-28 |
| 38 | PT/H / 2 elementos: 3.11.3, 3.11.4 | 2027-05-03 | 2028-09-29 |
| 39 | PT/H / 5 elementos: 5.2.2, 5.2.3, 5.3.1, 5.3.2, 5.3.3 | 2027-05-03 | 2027-05-11 |
| 40 | PT/H / 6.2.1 Cableado de cobre Cat6A y fibra OM4 tendido, con dos ductos de ingreso independientes | 2027-05-03 | 2027-05-20 |
| 41 | PT/H / 6.3.3 Gabinete de borde de Concepción montado: servidores activo y en espera, firewalls, switches, UPS, climatización y monitoreo | 2027-05-03 | 2027-05-20 |
| 42 | PT/H / H2 — acta del CLIENTE (límite: mes 4) | 2027-05-13 | 2027-05-13 |
| 43 | RC / 2 elementos: 6.3.1, 6.3.2 | 2027-05-24 | 2027-06-09 |
| 44 | PT/H / 3 elementos: 3.1.1, 3.1.2, 3.1.3 | 2027-06-01 | 2027-06-18 |
| 45 | PT/H / 3.1.5 Observabilidad de los doce módulos y de los sitios, con tableros para el CLIENTE (H3) | 2027-06-01 | 2027-06-18 |
| 46 | PT/H / 3.2.6 Servicio de gestión de dispositivos móviles | 2027-06-01 | 2027-06-29 |
| 47 | PT/H / 3.3.1 Identidad y control de acceso, incluidos los conductores externos que rotan sin aviso | 2027-06-01 | 2027-08-05 |
| 48 | PT/H / 3.3.2 Integración con el ERP como único emisor de la guía de despacho (INT-06 e INT-07) | 2027-06-01 | 2027-07-01 |
| 49 | PT/H / 3.3.3 Convivencia con el WMS de 2013 durante el reemplazo | 2027-06-01 | 2027-07-07 |
| 50 | PT/H / 3.3.5 Registro auditable de stock, lotes y cobros | 2027-06-01 | 2027-08-03 |
| 51 | PT/H / 3.10.2.3 Innovación 2: captura de evidencia en las aplicaciones de preventa, preparación y reparto (INN-02.P3) | 2027-06-01 | 2027-10-08 |
| 52 | PT/H / 5.1.3 Actas de recepción técnica del equipamiento de terreno comprado por el CLIENTE y de la infraestructura provista por LafroX | 2027-06-01 | 2027-06-09 |
| 53 | PT/H / 6.4.1 Hardware de control de acceso biométrico y esclusa instalado | 2027-06-01 | 2027-06-18 |
| 54 | PT/H / 3.3.6 Operación sin conexión: 14 horas en terreno y 24 horas en el CD | 2027-06-07 | 2027-08-03 |
| 55 | PT/H / 3.10.3.2 Innovación 3: asociación lote–sensor en el borde y en el camión (INN-03.P2) | 2027-06-07 | 2027-09-20 |
| 56 | PT/H / 6.4.2 Hardware de videovigilancia instalado | 2027-06-07 | 2027-06-24 |
| 57 | RC / 2 elementos: 6.6.1, 6.6.2 | 2027-06-10 | 2027-06-30 |
| 58 | PT/H / 3.3.4 Integración con la telemetría de los 42 camiones propios (INT-15) | 2027-06-10 | 2027-07-12 |
| 59 | PT/H / 3.4.1 Recepción de mercadería con captura de lote y vencimiento (M1 Recepción) | 2027-06-10 | 2027-08-10 |
| 60 | PT/H / 3.4.2 Inventario por ubicación y lote, con FEFO y conteo cíclico (M2 Inventario) | 2027-06-10 | 2027-08-11 |
| 61 | PT/H / 3.4.10 Cobro en ruta, rendición y conciliación (M7 Cobranza y rendición) | 2027-06-10 | 2027-10-04 |
| 62 | PT/H / 6.6.3 Borde de los CD en servicio, con la prueba de autonomía de 24 horas aprobada | 2027-06-10 | 2027-06-18 |
| 63 | PT/H / 3.4.3 Preparación de pedidos en el turno de noche y en la cámara de congelado (M5 Preparación) | 2027-06-14 | 2027-08-18 |
| 64 | PT/H / 3.4.4 Cadena de frío, retención por SSCC y retiro sanitario (M9 Calidad y trazabilidad) | 2027-06-14 | 2027-09-29 |
| 65 | PT/H / 3.4.5 Ingesta de temperatura (M9) y posición de flota (M12) | 2027-06-14 | 2027-08-30 |
| 66 | PT/H / 3.4.6 Aplicación móvil de preventa sin conexión, con stock y crédito (M3 Preventa) | 2027-06-16 | 2027-08-17 |
| 67 | PT/H / 3.4.7 Planificación de rutas corregible por el planificador (M4 Rutas) | 2027-06-16 | 2027-09-08 |
| 68 | PT/H / 3.4.8 Aplicación móvil de reparto con prueba de entrega digital (M6 Reparto) | 2027-06-16 | 2027-09-09 |
| 69 | RC / 3.4.9 Devoluciones en terreno y control de envases (M8 Devoluciones y envases) | 2027-06-18 | 2027-09-30 |
| 70 | PT/H / H3 — entrega del expediente | 2027-06-18 | 2027-06-18 |

| ID | Task | Start | Finish |
| --- | --- | --- | --- |
| 71 | PT/H / 6.4.3 Recinto de custodia de respaldos habilitado | 2027-06-22 | 2027-07-09 |
| 72 | PT/H / 2 elementos: 1.5.2, 3.11.5 | 2027-07-01 | 2028-09-29 |
| 73 | PT/H / 3 elementos: 3.6.2, 3.6.3, 3.6.4 | 2027-07-01 | 2027-08-02 |
| 74 | PT/H / 6.2.2 Certificación de enlaces, etiquetado y planos as-built | 2027-07-01 | 2027-07-20 |
| 75 | PT/H / H3 — acta del CLIENTE (límite: mes 6) | 2027-07-06 | 2027-07-06 |
| 76 | PT/H / 3.6.1 Intercambio de lote y trazabilidad con los proveedores | 2027-08-02 | 2027-09-01 |
| 77 | PT/H / 3.10.1.1 Innovación 1: documento de catálogo de acciones y protocolo del piloto (INN-01.P1) | 2027-08-02 | 2027-10-08 |
| 78 | PT/H / 5.4.4 Contrato de custodia de fuentes con un tercero independiente | 2027-08-02 | 2027-08-10 |
| 79 | PT/H / 6.2.3 Gabinetes de piso y switches de acceso instalados en las bodegas de Talca y Concepción | 2027-08-02 | 2027-08-19 |
| 80 | PT/H / 3.7.1 Informe de perfilamiento y datos saneados | 2027-08-04 | 2027-10-01 |
| 81 | PT/H / 6.5.4 Kit de cadena de frío instalado y recibido en los 28 camiones con frío | 2027-09-01 | 2028-01-14 |
| 82 | PT/H / 7.2.4 Procedimientos operativos rediseñados, contingencia de frío y ruptura confirmada | 2027-09-01 | 2028-09-29 |
| 83 | PT/H / 3.4.11 Indicadores operacionales y OTIF diario (M10 Analítica) | 2027-09-02 | 2027-09-27 |
| 84 | PT/H / Cuatro kits de frío recibidos para el piloto | 2027-09-30 | 2027-09-30 |
| 85 | PT/H / 3 elementos: 3.10.1.2, 3.10.1.3, 3.10.3.3 | 2027-10-01 | 2027-11-19 |
| 86 | PT/H / 2 elementos: 5.4.1, 5.4.2 | 2027-10-01 | 2027-10-12 |
| 87 | PT/H / 6.3.4 Gabinetes de borde montados en Curicó, Chillán y Los Ángeles, con dos mini-PC (activo y en espera) por plataforma | 2027-10-01 | 2027-10-20 |
| 88 | PT/H / 3.7.2 Datos maestros cargados: 8.400 SKU, clientes e instalaciones | 2027-10-04 | 2027-11-03 |
| 89 | PT/H / 3.8.1 Pruebas de integración, regresión e idempotencia en QA (H4) | 2027-10-05 | 2027-10-22 |
| 90 | PT/H / 6.5.1 Terminales de preventa, reparto y bodega configurados y enrolados | 2027-10-06 | 2028-01-14 |
| 91 | PT/H / 6.5.3 Sensores de cámara y gateways IoT instalados en Talca y Concepción | 2027-10-06 | 2027-11-25 |
| 92 | PT/H / 6.5.6 Impresoras de andén y balanzas de recepción instaladas | 2027-10-06 | 2028-01-14 |
| 93 | PT/H / H4 — entrega del expediente | 2027-10-22 | 2027-10-22 |
| 94 | PT/H / 2 elementos: 3.8.2, 3.8.3 | 2027-10-25 | 2027-11-19 |
| 95 | PT/H / 4 elementos: 3.8.4, 3.8.5, 3.8.6, 3.8.8 | 2027-10-25 | 2027-11-11 |
| 96 | PT/H / 3.11.2 Base de conocimiento de incidentes y decisiones de diseño | 2027-11-02 | 2028-09-29 |
| 97 | PT/H / 4.1.1 Plan de olas de la Etapa 1 por sitio y zona: Talca, Concepción y plataformas de cross-docking | 2027-11-02 | 2027-11-10 |
| 98 | PT/H / 2 elementos: 7.1.1, 7.1.6 | 2027-11-02 | 2027-12-24 |
| 99 | PT/H / 7.1.5 Materiales de capacitación: manuales por perfil, guías rápidas, preguntas frecuentes y videos tutoriales | 2027-11-02 | 2028-07-31 |
| 100 | PT/H / 7.2.1 Acompañamiento del personal con 20 o 30 años en la compañía | 2027-11-02 | 2028-05-31 |
| 101 | PT/H / 2 elementos: 6.5.2, 6.5.5 | 2027-11-04 | 2028-01-14 |
| 102 | PT/H / H4 — acta del CLIENTE (límite: mes 10) | 2027-11-08 | 2027-11-08 |
| 103 | PT/H / 4.1.4 Piloto de cadena de frío en cuatro camiones | 2027-11-09 | 2027-12-20 |
| 104 | PT/H / 3.8.7 Acta de certificación de la Etapa 1 (H5) | 2027-11-22 | 2027-12-01 |
| 105 | RC / 2 elementos: 3.7.3, 3.7.4 | 2027-12-01 | 2027-12-31 |
| 106 | PT/H / 3 elementos: 3.10.1.4, 3.10.2.4, 3.10.3.4 | 2027-12-01 | 2028-03-20 |
| 107 | PT/H / 4.1.2 Procedimiento de reversión de la Etapa 1 antes de las 05:30, con versión operativa local y DTE emitidos por el ERP | 2027-12-01 | 2027-12-10 |
| 108 | PT/H / 7.1.3 Incorporación de conductores de transportistas, escaneos y lectura del rojo | 2027-12-01 | 2028-09-29 |
| 109 | PT/H / H5 — entrega del expediente | 2027-12-01 | 2027-12-01 |
| 110 | PT/H / 3.7.5 Acta de conciliación y corte fuera de las ventanas de congelamiento | 2028-01-03 | 2028-01-27 |
| 111 | PT/H / H5 — acta del CLIENTE (límite: mes 12) | 2028-01-03 | 2028-01-03 |
| 112 | RC / H6 — inicio de marcha blanca (mes 13) | 2028-02-01 | 2028-02-01 |
| 113 | PT/H / 1.2.5 Documento de línea base de alcance de la Etapa 2: canal moderno y costo de servir (H8) | 2028-02-01 | 2028-02-09 |
| 114 | PT/H / 2.1.4 Documento de diseño detallado de M11 y del intercambio con las cadenas | 2028-02-01 | 2028-02-16 |
| 115 | PT/H / 3.6.5 Intercambio electrónico con la principal cadena, con sus pruebas aprobadas (INT-08) | 2028-02-01 | 2028-07-04 |
| 116 | PT/H / 3.10.4.1 Innovación 5: prototipo e informe de la prueba de comprensión (INN-05.P1) | 2028-02-01 | 2028-03-21 |
| 117 | PT/H / 4.2.1 Marcha blanca de la Etapa 1 con conciliación diaria (H6) | 2028-02-01 | 2028-04-28 |
| 118 | PT/H / 7.2.5 Medición de la adopción y plan de acción correctiva | 2028-02-01 | 2028-10-31 |
| 119 | PT/H / 7.3.1 Certificación de preventistas, conductores y preparadores (Etapa 1) | 2028-02-01 | 2028-03-24 |
| 120 | PT/H / 2.4.2 Acta de aprobación del diseño detallado de la Etapa 2 (H8) | 2028-02-17 | 2028-02-28 |
| 121 | PT/H / H8 — entrega del expediente | 2028-02-28 | 2028-02-28 |
| 122 | PT/H / Inicio de la ola 3 de reparto | 2028-02-29 | 2028-02-29 |
| 123 | PT/H / 3.10.4.2 Innovación 5: evaluación de privacidad y diseño de la impresión en cabina (INN-05.P2) | 2028-03-01 | 2028-04-19 |
| 124 | PT/H / H8 — acta del CLIENTE (límite: mes 14) | 2028-03-13 | 2028-03-13 |
| 125 | RC / 4 elementos: 3.5.1, 3.5.2, 3.5.3, 3.5.4 | 2028-03-15 | 2028-04-28 |
| 126 | PT/H / 1.7.2 Primera actualización anual del Plan de Reversibilidad durante la implementación | 2028-04-03 | 2028-04-11 |
| 127 | PT/H / 3.10.4.3 Innovación 5: cálculo y bloques 1 a 3 de la hoja de negocio (INN-05.P3) | 2028-04-03 | 2028-06-09 |
| 128 | PT/H / 3.11.1 Documentación técnica, funcional, de arquitectura, de operación y de seguridad | 2028-04-03 | 2028-10-31 |
| 129 | PT/H / 7.1.4 Traspaso al equipo de TI de cuatro personas del CLIENTE | 2028-04-03 | 2028-09-29 |
| 130 | PT/H / 3.9.1 Pruebas de integración y regresión sin afectar la Etapa 1 en producción (H9) | 2028-05-02 | 2028-05-18 |
| 131 | PT/H / 4.2.2 Estabilización de la Etapa 1, acompañamiento en ruta y restauraciones de soporte puente | 2028-05-05 | 2028-09-29 |
| 132 | PT/H / 7.2.2 Gestión del cambio con las cadenas y los transportistas | 2028-05-02 | 2028-06-23 |
| 133 | PT/H / 4.2.3 Acta de aceptación de la Etapa 1 (H7) | 2028-05-05 | 2028-05-15 |
| 134 | PT/H / H7 — entrega del expediente | 2028-05-15 | 2028-05-15 |
| 135 | PT/H / H9 — entrega del expediente | 2028-05-18 | 2028-05-18 |
| 136 | PT/H / 3 elementos: 3.9.3, 3.9.4, 3.9.7 | 2028-05-19 | 2028-06-01 |
| 137 | PT/H / 3.9.5 Prueba de seguridad ofensiva de la Etapa 2, por un tercero independiente | 2028-05-19 | 2028-05-26 |
| 138 | RC / H7 — acta del CLIENTE (límite: mes 16) | 2028-05-29 | 2028-05-29 |
| 139 | PT/H / 3.6.6 Incorporación de las demás cadenas al intercambio electrónico (INT-08) | 2028-06-01 | 2028-08-23 |
| 140 | PT/H / 4.1.3 Plan de implantación y reversión de la Etapa 2 fuera de la ventana de 05:30 a 07:00 | 2028-06-01 | 2028-06-09 |

| ID | Task | Start | Finish |
| --- | --- | --- | --- |
| 141 | PT/H / 5.4.3 Fórmula aprobada del tramo variable: reglas de atribución, canasta e índices (INN-04.P1) | 2028-06-01 | 2028-06-09 |
| 142 | PT/H / H9 — acta del CLIENTE (límite: mes 17) | 2028-06-01 | 2028-06-01 |
| 143 | PT/H / 3.9.2 Pruebas de aceptación y de accesibilidad con cadenas, transportistas, Comercial y Finanzas | 2028-06-02 | 2028-06-15 |
| 144 | PT/H / 3.9.6 Acta de certificación de la Etapa 2 y cierre del desarrollo (H10) | 2028-06-16 | 2028-06-28 |
| 145 | PT/H / H10 — entrega del expediente | 2028-06-28 | 2028-06-28 |
| 146 | PT/H / 3.10.4.4 Innovación 5: hoja certificada, en marcha blanca y en producción (INN-05.P4, primera parte) | 2028-07-03 | 2028-09-29 |
| 147 | PT/H / 7.3.2 Certificación de Comercial y Finanzas en costo de servir (Etapa 2) | 2028-07-03 | 2028-07-25 |
| 148 | PT/H / H10 — acta del CLIENTE (límite: mes 18) | 2028-07-12 | 2028-07-12 |
| 149 | RC / H11 — inicio de marcha blanca (mes 19) | 2028-08-01 | 2028-08-01 |
| 150 | PT/H / 4.3.1 Marcha blanca de la Etapa 2 en convivencia con la Etapa 1 y fuente única de datos (H11) | 2028-08-01 | 2028-09-29 |
| 151 | PT/H / 4.3.4 Garantía de correcto funcionamiento constituida, condición de la aceptación final (H12) | 2028-09-13 | 2028-09-25 |
| 152 | PT/H / 4.3.2 Estabilización de la Etapa 2 con Comercial, Finanzas, cadenas y transportistas | 2028-10-05 | 2028-11-30 |
| 153 | PT/H / 4.3.3 Acta de aceptación final de la implementación (H12) | 2028-10-02 | 2028-10-11 |
| 154 | PT/H / H12 — entrega del expediente | 2028-10-11 | 2028-10-11 |
| 155 | RC / H12 — acta del CLIENTE (límite: mes 21) | 2028-10-25 | 2028-10-25 |

## Version 2 (saved 2026-11-22)

Note of the change: update masivo

Last finish 2028-11-30 → 2031-09-30 (+1034d).

Added:

| ID | Task | Start | Finish |
| --- | --- | --- | --- |
| 288 | 7.2.1 · Fin de referencia para la precedencia | 2027-04-20 | 2027-04-20 |
| 289 | 7.2.2 · Fin de referencia para la precedencia | 2027-06-09 | 2027-06-09 |
| 290 | 7.3.1 · Fin de referencia para la precedencia | 2027-06-09 | 2027-06-09 |
| 156 | 4.2.1 · Cierre del paquete | 2027-08-24 | 2027-08-24 |
| 157 | 4.5.1 Indicadores operacionales y OTIF diario (M10 Analítica) | 2027-08-25 | 2027-09-29 |
| 158 | 3.3.4 Parametrización y motor de reglas versionados | 2027-09-01 | 2027-09-30 |
| 159 | 3.3.5 Gestión documental con versionado, búsqueda y vista previa | 2027-09-01 | 2027-09-30 |
| 160 | 3.3.6 Generación de documentos con plantillas administrables | 2027-09-01 | 2027-09-30 |
| 161 | 8.6.4 Kit de cadena de frío instalado y recibido en los 28 camiones con frío | 2027-09-01 | 2028-01-14 |
| 162 | 4.3.2 · Integración con 4.1.3 | 2027-09-15 | 2027-09-15 |
| 163 | 4.3.2 · Integración con 4.3.1 | 2027-09-15 | 2027-09-15 |
| 164 | 4.3.2 · Cierre del paquete | 2027-09-20 | 2027-09-20 |
| 165 | 4.3.3 · Integración con 4.1.3 | 2027-09-24 | 2027-09-24 |
| 166 | 4.3.3 · Integración con 4.3.1 | 2027-09-24 | 2027-09-24 |
| 167 | 4.3.3 · Cierre del paquete | 2027-09-27 | 2027-09-27 |
| 168 | 4.3.3 → 4.3.5 · Incremento para integración | 2027-09-27 | 2027-09-27 |
| 169 | 4.3.5 · Integración con 4.3.3 | 2027-09-28 | 2027-09-28 |
| 170 | 4.3.5 · Cierre del paquete | 2027-09-30 | 2027-09-30 |
| 171 | 8.6.4 · Recepción parcial de cuatro kits | 2027-09-30 | 2027-09-30 |
| 172 | 5.3.1 Intercambio electrónico certificado con la cadena principal (INT-08) | 2027-10-01 | 2028-05-31 |
| 173 | 7.1.2 Innovación 1: estimador de saldo y ritmo de reposición (INN-01.P2) | 2027-10-01 | 2027-11-19 |
| 174 | 7.1.3 Innovación 1: función de lista sin conexión en la aplicación de preventa (INN-01.P3) | 2027-10-01 | 2027-11-19 |
| 175 | 7.3.3 Innovación 3: vista en M9 y orden de salida sugerido (INN-03.P3) | 2027-10-01 | 2027-11-19 |
| 176 | 8.4.7 Gabinetes de borde de plataformas de cross-docking montados | 2027-10-01 | 2027-10-20 |
| 177 | 9.7.1 Acuerdos operacionales firmados con los diez transportistas | 2027-10-01 | 2027-10-12 |
| 178 | 9.7.2 Acta de acuerdo con el sindicato sobre terminales, GPS y cámaras | 2027-10-01 | 2027-10-12 |
| 179 | 5.4.2 Datos maestros cargados: 8.400 SKU, clientes e instalaciones | 2027-10-04 | 2027-11-03 |
| 180 | 6.1.1 Pruebas de integración, regresión e idempotencia en QA (H4) | 2027-10-05 | 2027-10-22 |
| 181 | 8.6.1 Terminales de preventa, reparto y bodega configurados y enrolados | 2027-10-06 | 2028-01-14 |
| 182 | 8.6.3 Sensores de cámara y gateways IoT instalados en Talca y Concepción | 2027-10-06 | 2027-11-25 |
| 183 | 8.6.6 Impresoras de andén y balanzas de recepción instaladas | 2027-10-06 | 2028-01-14 |
| 287 | 7.1.1 · Fin de referencia para la precedencia | 2027-10-08 | 2027-10-08 |
| 184 | H4 · Entrega de expediente | 2027-10-20 | 2027-10-20 |
| 185 | H4 · Evidencia disponible (6.1.1) | 2027-10-20 | 2027-10-20 |
| 186 | H4 · Revisión de la Contraparte (10 días hábiles) | 2027-10-21 | 2027-11-04 |
| 187 | 6.1.1 · Cierre del paquete | 2027-10-22 | 2027-10-22 |
| 188 | 6.2.1 Pruebas de aceptación y de accesibilidad con preventistas, conductores y bodega | 2027-10-25 | 2027-11-19 |
| 189 | 6.2.2 Pruebas de operación en condiciones físicas extremas y sin conexión | 2027-10-25 | 2027-11-19 |
| 190 | 6.3.1 Pruebas de carga con el peak de septiembre y de resiliencia | 2027-10-25 | 2027-11-11 |
| 191 | 6.4.1 Prueba de recuperación ante desastres con conmutación real | 2027-10-25 | 2027-11-11 |
| 192 | 6.5.1 Prueba de seguridad ofensiva de la Etapa 1, por un tercero independiente | 2027-10-25 | 2027-11-11 |
| 193 | 6.6.1 Demostración en Preproducción del despliegue sin interrupción de la Etapa 1 | 2027-10-25 | 2027-11-11 |
| 194 | 9.1.1 Plan de olas de la Etapa 1 por sitio y zona | 2027-11-02 | 2027-11-10 |
| 195 | 9.5.1 Plan de capacitación por perfil | 2027-11-02 | 2027-12-24 |
| 196 | 9.5.6 Plataforma de autoformación en línea con registro de avance | 2027-11-02 | 2027-12-24 |
| 197 | 8.6.2 Terminales de pago configurados, uno por camión | 2027-11-04 | 2028-01-14 |
| 198 | 8.6.5 Impresoras de cabina instaladas | 2027-11-04 | 2028-01-14 |
| 199 | H4 · Firma del acta | 2027-11-04 | 2027-11-04 |
| 200 | 2.7.3 Informe de piloto de cadena de frío en cuatro camiones | 2027-11-09 | 2027-12-20 |
| 201 | 6.7.1 Acta de certificación de la Etapa 1 (H5) | 2027-11-22 | 2027-12-01 |
| 202 | H5 · Entrega de expediente | 2027-11-24 | 2027-11-24 |
| 203 | H5 · Evidencia disponible (6.7.1) | 2027-11-24 | 2027-11-24 |
| 204 | H5 · Revisión de la Contraparte (10 días hábiles) | 2027-11-25 | 2027-12-09 |
| 205 | 5.4.3 Saldos migrados desde el WMS de Talca | 2027-12-01 | 2027-12-31 |
| 206 | 5.4.4 Saldos cargados en Concepción desde el conteo físico | 2027-12-01 | 2027-12-31 |
| 207 | 7.1.4 Innovación 1: informe del piloto en marcha blanca y habilitación (INN-01.P4) | 2027-12-01 | 2028-04-28 |
| 208 | 7.2.4 Innovación 2: informe de validación comparada (INN-02.P4, parte 1) | 2027-12-01 | 2028-04-28 |
| 209 | 7.3.4 Innovación 3: informe de validación en marcha blanca con Calidad (INN-03.P4) | 2027-12-01 | 2028-04-28 |
| 210 | 9.1.2 Procedimiento y ensayo de reversión de la Etapa 1 | 2027-12-01 | 2027-12-10 |
| 211 | 6.7.1 · Cierre del paquete | 2027-12-01 | 2027-12-01 |
| 212 | 5.4.5 Acta de conciliación y corte fuera de las ventanas de congelamiento | 2028-01-03 | 2028-01-27 |
| 213 | H5 · Firma del acta | 2028-01-03 | 2028-01-03 |
| 214 | 2.1.2 Documento de línea base de alcance de la Etapa 2: canal moderno y costo de servir (H8) | 2028-02-01 | 2028-02-09 |
| 215 | 2.2.4 Documento de diseño detallado de M11 y del intercambio con las cadenas | 2028-02-01 | 2028-02-15 |
| 216 | 7.5.1 Innovación 5: prototipo e informe de la prueba de comprensión (INN-05.P1) | 2028-02-01 | 2028-03-21 |
| 217 | 9.5.7 Certificación de preventistas, conductores y preparadores (Etapa 1) | 2028-02-01 | 2028-03-24 |
| 218 | 9.2.1 Marcha blanca de la Etapa 1 | 2028-02-01 | 2028-04-30 |
| 219 | H6 · Inicio contractual de marcha blanca | 2028-02-01 | 2028-02-01 |
| 220 | Etapa 2 · Desarrollo (meses 13 a 18) | 2028-02-01 | 2028-07-31 |
| 221 | H6 · Entrega de expediente | 2028-02-01 | 2028-02-01 |
| 222 | 2.8.2 Acta de aprobación del diseño detallado de la Etapa 2 (H8) | 2028-02-16 | 2028-02-25 |
| 223 | H8 · Entrega de expediente | 2028-02-24 | 2028-02-24 |
| 224 | H8 · Evidencia disponible (2.8.2) | 2028-02-24 | 2028-02-24 |
| 225 | 2.8.2 · Cierre del paquete | 2028-02-25 | 2028-02-25 |
| 226 | H8 · Revisión de la Contraparte (10 días hábiles) | 2028-02-25 | 2028-03-09 |
| 227 | E1 · Puerta de la ola de reparto | 2028-02-29 | 2028-02-29 |
| 228 | 7.5.2 Innovación 5: evaluación de privacidad y diseño de la impresión en cabina (INN-05.P2) | 2028-03-01 | 2028-04-19 |
| 229 | H8 · Firma del acta | 2028-03-09 | 2028-03-09 |
| 230 | 4.4.2 Portal web de clientes: cuenta, saldo, entregas y documentos | 2028-03-13 | 2028-04-28 |
| 231 | 4.4.1 Canal moderno y portal de proveedores (M11) | 2028-03-15 | 2028-04-28 |
| 232 | 4.4.3 Portal web de transportistas: rutas asignadas del día siguiente | 2028-03-15 | 2028-04-28 |
| 233 | 4.5.2 Costo de servir por cliente y por entrega (M10 Analítica) | 2028-03-15 | 2028-04-28 |
| 291 | 7.5.1 · Fin de referencia para la precedencia | 2028-03-21 | 2028-03-21 |
| 234 | 9.5.4 Traspaso al equipo de TI del CLIENTE | 2028-04-01 | 2028-09-30 |
| 235 | 1.6.2 Primera actualización anual del Plan de Reversibilidad | 2028-04-03 | 2028-04-11 |
| 236 | 7.5.3 Innovación 5: cálculo y bloques 1 a 3 de la hoja de negocio (INN-05.P3) | 2028-04-03 | 2028-06-09 |
| 292 | 7.5.2 · Fin de referencia para la precedencia | 2028-04-19 | 2028-04-19 |
| 237 | H7 · Cierre de cuatro semanas de evidencia | 2028-04-30 | 2028-04-30 |
| 238 | 5.3.2 Intercambio electrónico con las demás cadenas (INT-08) | 2028-05-02 | 2028-07-14 |
| 239 | 6.1.2 Pruebas de integración y regresión sin afectar la Etapa 1 en producción (H9) | 2028-05-02 | 2028-05-18 |
| 240 | 9.4.1 Expediente y acta de aceptación de la Etapa 1 (H7) | 2028-05-02 | 2028-05-17 |
| 241 | 9.6.2 Plan de gestión del cambio con cadenas y transportistas | 2028-05-02 | 2028-06-23 |
| 242 | H7 · Entrega de expediente | 2028-05-02 | 2028-05-02 |
| 243 | H7 · Revisión de la Contraparte (10 días hábiles) | 2028-05-03 | 2028-05-16 |
| 244 | H7 · Firma del acta | 2028-05-16 | 2028-05-16 |
| 245 | 9.3.1 Estabilización y soporte puente E1 | 2028-05-17 | 2028-09-30 |
| 246 | H7 · Paso a producción | 2028-05-17 | 2028-05-17 |
| 247 | 9.4.1 · Cierre del paquete | 2028-05-17 | 2028-05-17 |
| 248 | H7 · Registro de producción y cumplimiento | 2028-05-17 | 2028-05-17 |
| 249 | H9 · Entrega de expediente | 2028-05-18 | 2028-05-18 |
| 250 | 6.3.2 Pruebas de carga con ambas etapas activas y de resiliencia | 2028-05-19 | 2028-06-01 |
| 251 | 6.4.2 Prueba de recuperación ante desastres con ambas etapas | 2028-05-19 | 2028-06-01 |
| 252 | 6.5.2 Prueba de seguridad ofensiva de la Etapa 2, por un tercero independiente | 2028-05-19 | 2028-05-26 |
| 253 | 6.6.2 Demostración en Preproducción del despliegue sin interrupción de la Etapa 2 | 2028-05-19 | 2028-06-01 |
| 254 | H9 · Revisión de la Contraparte (10 días hábiles) | 2028-05-19 | 2028-06-01 |
| 255 | 7.4.1 Innovación 4: fórmula aprobada del tramo variable (INN-04.P1) | 2028-06-01 | 2028-06-09 |
| 256 | 9.1.3 Plan de implantación y reversión de la Etapa 2 | 2028-06-01 | 2028-06-09 |
| 257 | H9 · Firma del acta | 2028-06-01 | 2028-06-01 |
| 258 | 6.2.3 Pruebas de aceptación y de accesibilidad con cadenas, transportistas, Comercial y Finanzas | 2028-06-02 | 2028-06-15 |
| 259 | 6.7.2 Acta de certificación de la Etapa 2 y cierre del desarrollo (H10) | 2028-06-16 | 2028-06-28 |
| 260 | H10 · Entrega de expediente | 2028-06-27 | 2028-06-27 |
| 261 | H10 · Evidencia disponible (6.7.2) | 2028-06-27 | 2028-06-27 |
| 262 | 6.7.2 · Cierre del paquete | 2028-06-28 | 2028-06-28 |
| 263 | H10 · Revisión de la Contraparte (10 días hábiles) | 2028-06-28 | 2028-07-11 |
| 264 | 7.5.4 Innovación 5: hoja certificada, en marcha blanca y en producción (INN-05.P4, primera parte) | 2028-07-03 | 2028-09-29 |
| 265 | 9.5.8 Certificación de Comercial y Finanzas en costo de servir (Etapa 2) | 2028-07-03 | 2028-07-25 |
| 266 | H10 · Firma del acta | 2028-07-11 | 2028-07-11 |
| 267 | 9.2.2 Marcha blanca de la Etapa 2 | 2028-08-01 | 2028-09-30 |
| 268 | H11 · Inicio contractual de marcha blanca | 2028-08-01 | 2028-08-01 |
| 269 | H11 · Entrega de expediente | 2028-08-01 | 2028-08-01 |
| 270 | E2 · Cadenas habilitadas antes de F − 28 | 2028-08-31 | 2028-08-31 |
| 271 | 9.4.3 Garantía de correcto funcionamiento constituida (H12) | 2028-09-13 | 2028-09-25 |
| 272 | H12 · Cierre de cuatro semanas de evidencia | 2028-09-30 | 2028-09-30 |
| 273 | Mes 21 · Cobertura de transición previa al corte E2 | 2028-10-01 | 2028-10-17 |
| 274 | 6.8.6 Entrega del código fuente, la infraestructura como código y los procedimientos de despliegue | 2028-10-02 | 2028-10-11 |
| 275 | 9.4.2 Expediente y acta de aceptación final (H12) | 2028-10-02 | 2028-10-18 |
| 276 | H12 · Entrega de expediente | 2028-10-02 | 2028-10-02 |
| 277 | H12 · Revisión de la Contraparte (10 días hábiles) | 2028-10-03 | 2028-10-17 |
| 278 | H12 · Firma del acta | 2028-10-17 | 2028-10-17 |
| 279 | 9.3.2 Estabilización de la Etapa 2 | 2028-10-18 | 2028-11-30 |
| 280 | H12 · Paso a producción | 2028-10-18 | 2028-10-18 |
| 281 | 9.4.2 · Cierre del paquete | 2028-10-18 | 2028-10-18 |
| 282 | Producto 10 · Operación con ambos alcances (meses 21 a 56) | 2028-10-18 | 2031-09-30 |
| 283 | H12 · Registro de producción y cumplimiento | 2028-10-18 | 2028-10-18 |
| 284 | 1.7.9 Informe de lecciones aprendidas y archivo de la implementación | 2028-10-26 | 2028-11-07 |
| 285 | 10.5.1 Traspaso de reversibilidad y acompañamiento de salida | 2031-08-01 | 2031-09-30 |
| 286 | 10.5.2 Certificado de devolución o eliminación de datos personales | 2031-09-01 | 2031-09-09 |

Changed:

| ID | Task | Start | Finish | Other |
| --- | --- | --- | --- | --- |
| 1 | 1.1.1 Acta de constitución del proyecto, firmada con la Contraparte Técnica |  | 2027-03-31 → 2027-02-09 (-50d) | was named RC / 5.1.4 Especificación y compra del sistema de cadena de frío |
| 2 | 1.1.2 Documento de validación con el CLIENTE de los problemas y metas del proyecto |  |  | was named PT/H / 7 elementos: 1.1.1, 1.1.2, 1.1.3, 1.4.1, 1.4.2, 1.9.1, 1.9.2 |
| 3 | 1.1.3 Acta de confirmaciones iniciales con el CLIENTE (inicio, lácteos, ventanas y acuse tributario) |  |  | was named PT/H / 1.2.1 Documento de especificación de requerimientos y línea base de alcance de la Etapa 1 (H1) |
| 4 | 1.3.1 Registro de interesados con su influencia, interés y estrategia |  | 2027-04-30 → 2027-02-09 (-80d) | was named PT/H / 1.2.2 Documento de reglas de ruteo capturadas al planificador de rutas |
| 5 | 1.3.2 Plan de comunicaciones con calendario y canales por grupo de interés |  |  | was named PT/H / 1.2.3 Documento de especificación de las interfaces sin documentación del ERP, del WMS de 2013 y de la telemetría del tercero |
| 6 | 1.8.1 Matriz de cumplimiento normativo por obligación legal, con su control y su evidencia |  | 2028-09-29 → 2027-02-09 (-598d) | was named PT/H / 5 elementos: 1.3.5, 1.6.2, 1.8.1, 1.8.3, 1.8.6 |
| 7 | 1.8.2 Acuerdo de tratamiento de datos personales con el CLIENTE |  | 2027-03-01 → 2027-02-09 (-20d) | was named PT/H / 2 elementos: 2.3.1, 2.3.2 |
| 8 | 2.1.1 Documento de especificación de requerimientos y línea base de alcance de la Etapa 1 (H1) | 2027-02-10 → 2027-02-01 (-9d) | 2027-02-18 → 2027-02-09 (-9d) | was named PT/H / 1.3.1 Plan para la dirección del proyecto, con el calendario de congelamientos de septiembre, diciembre y el cierre mensual |
| 9 | 2.1.5 Especificación de interfaces heredadas y perfil de intercambio con cadenas | 2027-03-01 → 2027-02-01 (-28d) | 2027-03-09 → 2027-02-09 (-28d) | was named PT/H / 1.2.4 Matriz de trazabilidad: requerimiento, módulo, paquete y prueba (H1) |
| 10 | 2.4.1 Plano de la sala técnica de Talca, con su cálculo eléctrico y térmico | 2027-03-01 → 2027-02-01 (-28d) | 2027-03-09 → 2027-02-26 (-11d) | was named PT/H / 7 elementos: 1.3.2, 1.3.3, 1.3.4, 1.5.1, 1.6.1, 1.9.3, 5.1.1 |
| 11 | 2.4.2 Plano de distribución de los racks R01 de servidores y R02 de comunicaciones | 2027-03-01 → 2027-02-01 (-28d) | 2027-03-29 → 2027-02-26 (-31d) | was named PT/H / 2.1.1 Documento de arquitectura lógica: capas, módulos M1 a M12 e interfaces |
| 12 | 8.1.4 Especificación y compra del sistema de cadena de frío | 2027-03-01 → 2027-02-01 (-28d) | 2027-03-29 → 2027-03-31 (+2d) | was named PT/H / 3 elementos: 2.1.2, 2.1.3, 2.2.4 |
| 13 | 2.1.4 Captura de reglas de ruteo | 2027-03-01 → 2027-02-01 (-28d) | 2027-03-29 → 2027-04-30 (+32d) | was named PT/H / 2.2.1 Plan de seguridad de la información |
| 14 | Etapa 1 · Desarrollo (meses 1 a 12) | 2027-03-01 → 2027-02-01 (-28d) | 2027-03-29 → 2028-01-31 (+308d) | was named PT/H / 2 elementos: 2.3.3, 2.6.1 |
| 15 | 1.2.1 Plan para la dirección del proyecto y calendario de congelamientos | 2027-03-01 → 2027-02-10 (-19d) | 2027-04-20 → 2027-02-18 (-61d) | was named PT/H / 3.10.2.1 Innovación 2: informe de medición inicial y contrato de evidencia (INN-02.P1) |
| 16 | 1.2.2 EDT y diccionario de la EDT (línea base del alcance) |  |  | was named PT/H / 5.2.1 Contrato de los servicios de AWS |
| 17 | 1.2.3 Carta Gantt de 56 meses con los hitos H1 a H12 y la ruta crítica |  | 2027-03-12 → 2027-03-09 (-3d) | was named PT/H / 5.3.4 Contrato de SIM M2M y servicio satelital de los camiones con frío |
| 18 | 1.2.4 Documento de nivelación de recursos y frentes de solapamiento |  | 2027-05-25 → 2027-03-09 (-77d) | was named PT/H / 7.2.3 Diagnóstico del impacto organizacional por área y perfil, con agentes de cambio |
| 19 | 1.4.1 Plan de calidad y plan de pruebas | 2027-03-02 → 2027-03-01 (-1d) | 2027-03-10 → 2027-03-09 (-1d) | was named PT/H / 5.1.2 Especificación y compra de la sala técnica, los racks, los servidores y los gabinetes de borde |
| 20 | 1.5.1 Plan de riesgos y registro inicial de riesgos según ISO 31000 | 2027-03-09 → 2027-03-01 (-8d) |  | was named PT/H / H1 — entrega del expediente |
| 21 | 1.8.3 Registro de actividades de tratamiento y evaluación de impacto en protección de datos | 2027-03-23 → 2027-03-01 (-22d) | 2027-03-23 → 2027-03-09 (-14d) | was named PT/H / H1 — acta del CLIENTE (límite: mes 2) |
| 22 | 2.1.3 Matriz de trazabilidad: requerimiento, módulo, paquete y prueba (H1) | 2027-04-01 → 2027-03-01 (-31d) | 2027-04-30 → 2027-03-09 (-52d) | was named RC / 2.4.3 Validación del diseño del kit en banco de pruebas |
| 23 | 2.2.1 Documento de arquitectura lógica: capas, módulos M1 a M12 e interfaces | 2027-04-01 → 2027-03-01 (-31d) | 2027-04-09 → 2027-03-29 (-11d) | was named PT/H / 1.7.1 Plan de Reversibilidad inicial (primeros 90 días) |
| 24 | 2.2.2 Documento de arquitectura física híbrida | 2027-04-01 → 2027-03-01 (-31d) | 2027-11-30 → 2027-03-29 (-246d) | was named PT/H / 2.2.2 Modelado de amenazas por componente y por integración externa, actualizado ante cada cambio |
| 25 | 2.2.3 Modelo de datos y diccionario de datos, con la trazabilidad por lote | 2027-04-01 → 2027-03-01 (-31d) | 2027-04-16 → 2027-03-29 (-18d) | was named PT/H / 2.2.3 Plan de respuesta a incidentes de seguridad, con aviso al CLIENTE en dos horas |
| 26 | 2.3.1 Plan de seguridad de la información | 2027-04-01 → 2027-03-01 (-31d) | 2027-04-29 → 2027-03-29 (-31d) | was named PT/H / 2 elementos: 2.5.1, 2.5.2 |
| 27 | 2.3.4 Matriz de clasificación de la información y matriz de controles | 2027-04-01 → 2027-03-01 (-31d) | 2027-04-29 → 2027-03-29 (-31d) | was named PT/H / 2.6.2 Prototipos y pruebas de usabilidad con participantes del CLIENTE |
| 28 | 2.6.1 Informe de investigación con usuarios de terreno | 2027-04-01 → 2027-03-01 (-31d) | 2027-06-09 → 2027-03-29 (-72d) | was named PT/H / 2 elementos: 3.10.2.2, 3.10.3.1 |
| 29 | 7.2.1 Innovación 2: informe de medición inicial y contrato de evidencia (INN-02.P1) | 2027-04-01 → 2027-03-01 (-31d) |  | was named PT/H / 4 elementos: 6.1.1, 6.1.2, 6.1.3, 6.1.4 |
| 30 | 8.1.1 Especificación de compra de equipos de uso para el CLIENTE | 2027-04-19 → 2027-03-01 (-49d) | 2027-04-29 → 2027-03-09 (-51d) | was named PT/H / 2.4.1 Acta de aprobación de la arquitectura, el plan de seguridad y el modelo de datos (H2) |
| 31 | 8.2.1 Contrato de los servicios de AWS | 2027-04-29 → 2027-03-01 (-59d) | 2027-04-29 → 2027-03-09 (-51d) | was named PT/H / H2 — entrega del expediente |
| 32 | 8.2.7 Contrato de SIM M2M y servicio satelital de los camiones con frío | 2027-05-03 → 2027-03-01 (-63d) | 2027-05-31 → 2027-03-12 (-80d) | was named RC / 2.6.3 Indicadores de usabilidad comprometidos por transacción crítica |
| 33 | 9.6.3 Diagnóstico del impacto organizacional por área y perfil, con agentes de cambio | 2027-05-03 → 2027-03-01 (-63d) | 2027-05-31 → 2027-05-25 (-6d) | was named RC / 3.1.4 Cadena de integración y entrega continua, e infraestructura como código |
| 34 | 2.4.3 Plano de los gabinetes de borde de Concepción y de las plataformas de cross-docking | 2027-05-03 → 2027-03-02 (-62d) | 2027-05-31 → 2027-03-29 (-63d) | was named RC / 4 elementos: 3.2.1, 3.2.2, 3.2.4, 3.2.5 |
| 35 | 8.1.2 Especificación y compra de la sala técnica, los racks, los servidores y los gabinetes de borde | 2027-05-03 → 2027-03-02 (-62d) | 2027-05-31 → 2027-03-10 (-82d) | was named RC / 3.2.3 Servicio de nube de ingesta de IoT, telemetría cruda y plataforma analítica |
| 36 | H1 · Entrega de expediente | 2027-05-03 → 2027-03-09 (-55d) | 2027-05-20 → 2027-03-09 (-72d) | was named RC / 6.1.5 Acta de recepción técnica de la sala |
| 37 | H1 · Revisión de la Contraparte (10 días hábiles) | 2027-05-03 → 2027-03-10 (-54d) | 2027-05-28 → 2027-03-23 (-66d) | was named PT/H / 2.4.4 Mapeo térmico por tipo de carrocería |
| 38 | H1 · Firma del acta | 2027-05-03 → 2027-03-23 (-41d) | 2028-09-29 → 2027-03-23 (-556d) | was named PT/H / 2 elementos: 3.11.3, 3.11.4 |
| 39 | 1.6.1 Plan de Reversibilidad inicial | 2027-05-03 → 2027-04-01 (-32d) | 2027-05-11 → 2027-04-09 (-32d) | was named PT/H / 5 elementos: 5.2.2, 5.2.3, 5.3.1, 5.3.2, 5.3.3 |
| 40 | 2.3.3 Plan de respuesta a incidentes de seguridad | 2027-05-03 → 2027-04-01 (-32d) | 2027-05-20 → 2027-04-16 (-34d) | was named PT/H / 6.2.1 Cableado de cobre Cat6A y fibra OM4 tendido, con dos ductos de ingreso independientes |
| 41 | 2.5.1 Plan de continuidad del negocio (ISO 22301) y análisis de impacto | 2027-05-03 → 2027-04-01 (-32d) | 2027-05-20 → 2027-04-29 (-21d) | was named PT/H / 6.3.3 Gabinete de borde de Concepción montado: servidores activo y en espera, firewalls, switches, UPS, climatización y monitoreo |
| 42 | 2.5.2 Plan de continuidad TIC según ISO/IEC 27031 y plan de recuperación ante desastres | 2027-05-13 → 2027-04-01 (-42d) | 2027-05-13 → 2027-04-29 (-14d) | was named PT/H / H2 — acta del CLIENTE (límite: mes 4) |
| 43 | 2.6.2 Prototipos y pruebas de usabilidad con participantes del CLIENTE | 2027-05-24 → 2027-04-01 (-53d) | 2027-06-09 → 2027-04-29 (-41d) | was named RC / 2 elementos: 6.3.1, 6.3.2 |
| 44 | 2.7.1 Informe de validación del kit de cadena de frío en banco de pruebas | 2027-06-01 → 2027-04-01 (-61d) | 2027-06-18 → 2027-04-30 (-49d) | was named PT/H / 3 elementos: 3.1.1, 3.1.2, 3.1.3 |
| 45 | 7.2.2 Innovación 2: circuito mínimo de reproducción en la preventa (INN-02.P2) | 2027-06-01 → 2027-04-01 (-61d) | 2027-06-18 → 2027-06-09 (-9d) | was named PT/H / 3.1.5 Observabilidad de los doce módulos y de los sitios, con tableros para el CLIENTE (H3) |
| 46 | 7.3.1 Innovación 3: documento de familias priorizadas y parámetros aprobados (INN-03.P1) | 2027-06-01 → 2027-04-01 (-61d) | 2027-06-29 → 2027-06-09 (-20d) | was named PT/H / 3.2.6 Servicio de gestión de dispositivos móviles |
| 47 | 8.3.1 Piso técnico de la sala y recepción de obra civil de separación (RT-06.06) | 2027-06-01 → 2027-04-01 (-61d) | 2027-08-05 → 2027-04-20 (-107d) | was named PT/H / 3.3.1 Identidad y control de acceso, incluidos los conductores externos que rotan sin aviso |
| 48 | 8.3.2 Sistema de energía de la sala instalado (UPS N+1, generador y PDU) | 2027-06-01 → 2027-04-01 (-61d) | 2027-07-01 → 2027-04-20 (-72d) | was named PT/H / 3.3.2 Integración con el ERP como único emisor de la guía de despacho (INT-06 e INT-07) |
| 49 | 8.3.3 Hardware de climatización de precisión N+1 instalado | 2027-06-01 → 2027-04-01 (-61d) | 2027-07-07 → 2027-04-20 (-78d) | was named PT/H / 3.3.3 Convivencia con el WMS de 2013 durante el reemplazo |
| 50 | 8.3.4 Hardware de detección temprana de incendio y extinción por agente limpio instalado | 2027-06-01 → 2027-04-01 (-61d) | 2027-08-03 → 2027-04-20 (-105d) | was named PT/H / 3.3.5 Registro auditable de stock, lotes y cobros |
| 51 | 2.8.1 Acta de aprobación de la arquitectura, el plan de seguridad y el modelo de datos (H2) | 2027-06-01 → 2027-04-19 (-43d) | 2027-10-08 → 2027-04-29 (-162d) | was named PT/H / 3.10.2.3 Innovación 2: captura de evidencia en las aplicaciones de preventa, preparación y reparto (INN-02.P3) |
| 52 | H2 · Entrega de expediente | 2027-06-01 → 2027-04-26 (-36d) | 2027-06-09 → 2027-04-26 (-44d) | was named PT/H / 5.1.3 Actas de recepción técnica del equipamiento de terreno comprado por el CLIENTE y de la infraestructura provista por LafroX |
| 53 | H2 · Evidencia disponible (2.8.1) | 2027-06-01 → 2027-04-26 (-36d) | 2027-06-18 → 2027-04-26 (-53d) | was named PT/H / 6.4.1 Hardware de control de acceso biométrico y esclusa instalado |
| 54 | H2 · Revisión de la Contraparte (10 días hábiles) | 2027-06-07 → 2027-04-27 (-41d) | 2027-08-03 → 2027-05-10 (-85d) | was named PT/H / 3.3.6 Operación sin conexión: 14 horas en terreno y 24 horas en el CD |
| 55 | 2.8.1 · Cierre del paquete | 2027-06-07 → 2027-04-29 (-39d) | 2027-09-20 → 2027-04-29 (-144d) | was named PT/H / 3.10.3.2 Innovación 3: asociación lote–sensor en el borde y en el camión (INN-03.P2) |
| 56 | 2.6.3 Indicadores de usabilidad comprometidos por transacción crítica | 2027-06-07 → 2027-05-03 (-35d) | 2027-06-24 → 2027-05-31 (-24d) | was named PT/H / 6.4.2 Hardware de videovigilancia instalado |
| 57 | 2.7.2 Mapeo térmico por tipo de carrocería | 2027-06-10 → 2027-05-03 (-38d) | 2027-06-30 → 2027-05-28 (-33d) | was named RC / 2 elementos: 6.6.1, 6.6.2 |
| 58 | 3.1.4 Cadena de integración y entrega continua, e infraestructura como código | 2027-06-10 → 2027-05-03 (-38d) | 2027-07-12 → 2027-05-31 (-42d) | was named PT/H / 3.3.4 Integración con la telemetría de los 42 camiones propios (INT-15) |
| 59 | 3.2.1 Servicio de nube para la aplicación y los portales | 2027-06-10 → 2027-05-03 (-38d) | 2027-08-10 → 2027-05-31 (-71d) | was named PT/H / 3.4.1 Recepción de mercadería con captura de lote y vencimiento (M1 Recepción) |
| 60 | 3.2.2 Servicio de nube de base de datos, caché y mensajería | 2027-06-10 → 2027-05-03 (-38d) | 2027-08-11 → 2027-05-31 (-72d) | was named PT/H / 3.4.2 Inventario por ubicación y lote, con FEFO y conteo cíclico (M2 Inventario) |
| 61 | 3.2.3 Servicio de nube de ingesta de IoT, telemetría cruda y plataforma analítica | 2027-06-10 → 2027-05-03 (-38d) | 2027-10-04 → 2027-05-31 (-126d) | was named PT/H / 3.4.10 Cobro en ruta, rendición y conciliación (M7 Cobranza y rendición) |
| 62 | 3.2.4 Servicio de nube de respaldo inmutable y réplica entre regiones | 2027-06-10 → 2027-05-03 (-38d) | 2027-06-18 → 2027-05-31 (-18d) | was named PT/H / 6.6.3 Borde de los CD en servicio, con la prueba de autonomía de 24 horas aprobada |
| 63 | 3.2.5 Servicio de nube de seguridad y gobierno, y detección en endpoints | 2027-06-14 → 2027-05-03 (-42d) | 2027-08-18 → 2027-05-31 (-79d) | was named PT/H / 3.4.3 Preparación de pedidos en el turno de noche y en la cámara de congelado (M5 Preparación) |
| 64 | 8.2.2 Suscripción del servicio de gestión de dispositivos y de detección en endpoints | 2027-06-14 → 2027-05-03 (-42d) | 2027-09-29 → 2027-05-11 (-141d) | was named PT/H / 3.4.4 Cadena de frío, retención por SSCC y retiro sanitario (M9 Calidad y trazabilidad) |
| 65 | 8.2.4 Contrato de fibra óptica de los CD de Talca y Concepción | 2027-06-14 → 2027-05-03 (-42d) | 2027-08-30 → 2027-05-11 (-111d) | was named PT/H / 3.4.5 Ingesta de temperatura (M9) y posición de flota (M12) |
| 66 | 8.2.5 Contrato de planes LTE con dos proveedores (ocho planes) | 2027-06-16 → 2027-05-03 (-44d) | 2027-08-17 → 2027-05-11 (-98d) | was named PT/H / 3.4.6 Aplicación móvil de preventa sin conexión, con stock y crédito (M3 Preventa) |
| 67 | 8.2.6 Contrato de Starlink para los cinco sitios | 2027-06-16 → 2027-05-03 (-44d) | 2027-09-08 → 2027-05-11 (-120d) | was named PT/H / 3.4.7 Planificación de rutas corregible por el planificador (M4 Rutas) |
| 68 | 8.3.5 Acta de recepción técnica de la sala | 2027-06-16 → 2027-05-03 (-44d) | 2027-09-09 → 2027-05-20 (-112d) | was named PT/H / 3.4.8 Aplicación móvil de reparto con prueba de entrega digital (M6 Reparto) |
| 69 | 8.4.1 Cableado de cobre Cat6A y fibra OM4 tendido, con dos ductos de ingreso independientes | 2027-06-18 → 2027-05-03 (-46d) | 2027-09-30 → 2027-05-20 (-133d) | was named RC / 3.4.9 Devoluciones en terreno y control de envases (M8 Devoluciones y envases) |
| 70 | 8.4.6 Gabinete de borde de Concepción montado | 2027-06-18 → 2027-05-03 (-46d) | 2027-06-18 → 2027-05-20 (-29d) | was named PT/H / H3 — entrega del expediente |

| ID | Task | Start | Finish | Other |
| --- | --- | --- | --- | --- |
| 71 | H2 · Firma del acta | 2027-06-22 → 2027-05-10 (-43d) | 2027-07-09 → 2027-05-10 (-60d) | was named PT/H / 6.4.3 Recinto de custodia de respaldos habilitado |
| 72 | 8.2.3 Licencias de software de terceros constituidas a nombre del CLIENTE | 2027-07-01 → 2027-05-11 (-51d) | 2028-09-29 → 2027-05-19 (-499d) | was named PT/H / 2 elementos: 1.5.2, 3.11.5 |
| 73 | 3.1.4 · Habilitación de la cadena para QA | 2027-07-01 → 2027-05-12 (-50d) | 2027-08-02 → 2027-05-12 (-82d) | was named PT/H / 3 elementos: 3.6.2, 3.6.3, 3.6.4 |
| 74 | 8.4.4 Rack R01 de servidores montado y traslado del servidor ERP | 2027-07-01 → 2027-05-24 (-38d) | 2027-07-20 → 2027-07-12 (-8d) | was named PT/H / 6.2.2 Certificación de enlaces, etiquetado y planos as-built |
| 75 | 8.4.5 Rack R02 de comunicaciones montado | 2027-07-06 → 2027-05-24 (-43d) | 2027-07-06 → 2027-06-09 (-27d) | was named PT/H / H3 — acta del CLIENTE (límite: mes 6) |
| 76 | 3.1.4 · Cierre del paquete | 2027-08-02 → 2027-05-31 (-63d) | 2027-09-01 → 2027-05-31 (-93d) | was named PT/H / 3.6.1 Intercambio de lote y trazabilidad con los proveedores |
| 77 | 3.1.1 Ambientes de Desarrollo y QA en la nube (H3) | 2027-08-02 → 2027-06-01 (-62d) | 2027-10-08 → 2027-06-18 (-112d) | was named PT/H / 3.10.1.1 Innovación 1: documento de catálogo de acciones y protocolo del piloto (INN-01.P1) |
| 78 | 3.1.2 Ambientes de Preproducción y Producción en la nube (H3) | 2027-08-02 → 2027-06-01 (-62d) | 2027-08-10 → 2027-06-18 (-53d) | was named PT/H / 5.4.4 Contrato de custodia de fuentes con un tercero independiente |
| 79 | 3.1.3 Ambiente de recuperación ante desastres en la región secundaria (H3) | 2027-08-02 → 2027-06-01 (-62d) | 2027-08-19 → 2027-06-18 (-62d) | was named PT/H / 6.2.3 Gabinetes de piso y switches de acceso instalados en las bodegas de Talca y Concepción |
| 80 | 3.1.5 Observabilidad de los doce módulos y de los sitios, con tableros para el CLIENTE (H3) | 2027-08-04 → 2027-06-01 (-64d) | 2027-10-01 → 2027-06-18 (-105d) | was named PT/H / 3.7.1 Informe de perfilamiento y datos saneados |
| 81 | 3.2.6 Servicio de gestión de dispositivos móviles | 2027-09-01 → 2027-06-01 (-92d) | 2028-01-14 → 2027-06-29 (-199d) | was named PT/H / 6.5.4 Kit de cadena de frío instalado y recibido en los 28 camiones con frío |
| 82 | 3.3.1 Identidad y control de acceso (incluidos conductores externos) | 2027-09-01 → 2027-06-01 (-92d) | 2028-09-29 → 2027-08-05 (-421d) | was named PT/H / 7.2.4 Procedimientos operativos rediseñados, contingencia de frío y ruptura confirmada |
| 83 | 3.3.2 Registro auditable de stock, lotes y cobros | 2027-09-02 → 2027-06-01 (-93d) | 2027-09-27 → 2027-08-03 (-55d) | was named PT/H / 3.4.11 Indicadores operacionales y OTIF diario (M10 Analítica) |
| 84 | 5.1.1 Integración con el ERP como único emisor de la guía de despacho (INT-06 e INT-07) | 2027-09-30 → 2027-06-01 (-121d) | 2027-09-30 → 2027-07-01 (-91d) | was named PT/H / Cuatro kits de frío recibidos para el piloto |
| 85 | 5.1.2 Mecanismo de convivencia con el WMS de 2013 | 2027-10-01 → 2027-06-01 (-122d) | 2027-11-19 → 2027-07-07 (-135d) | was named PT/H / 3 elementos: 3.10.1.2, 3.10.1.3, 3.10.3.3 |
| 86 | 7.2.3 Innovación 2: captura de evidencia en las aplicaciones de preventa, preparación y reparto (INN-02.P3) | 2027-10-01 → 2027-06-01 (-122d) | 2027-10-12 → 2027-10-08 (-4d) | was named PT/H / 2 elementos: 5.4.1, 5.4.2 |
| 87 | 8.1.3 Actas de recepción técnica de equipamiento de terreno e infraestructura | 2027-10-01 → 2027-06-01 (-122d) | 2027-10-20 → 2027-06-09 (-133d) | was named PT/H / 6.3.4 Gabinetes de borde montados en Curicó, Chillán y Los Ángeles, con dos mini-PC (activo y en espera) por plataforma |
| 88 | 8.5.1 Hardware de control de acceso biométrico y esclusa instalado | 2027-10-04 → 2027-06-01 (-125d) | 2027-11-03 → 2027-06-18 (-138d) | was named PT/H / 3.7.2 Datos maestros cargados: 8.400 SKU, clientes e instalaciones |
| 89 | 3.3.3 Operación sin conexión: 14 horas en terreno y 24 horas en el CD | 2027-10-05 → 2027-06-07 (-120d) | 2027-10-22 → 2027-08-03 (-80d) | was named PT/H / 3.8.1 Pruebas de integración, regresión e idempotencia en QA (H4) |
| 90 | 7.3.2 Innovación 3: asociación lote–sensor en el borde y en el camión (INN-03.P2) | 2027-10-06 → 2027-06-07 (-121d) | 2028-01-14 → 2027-09-20 (-116d) | was named PT/H / 6.5.1 Terminales de preventa, reparto y bodega configurados y enrolados |
| 91 | 8.5.2 Hardware de videovigilancia instalado | 2027-10-06 → 2027-06-07 (-121d) | 2027-11-25 → 2027-06-24 (-154d) | was named PT/H / 6.5.3 Sensores de cámara y gateways IoT instalados en Talca y Concepción |
| 92 | 8.4.4 · Rack R01 montado | 2027-10-06 → 2027-06-09 (-119d) | 2028-01-14 → 2027-06-09 (-219d) | was named PT/H / 6.5.6 Impresoras de andén y balanzas de recepción instaladas |
| 93 | 4.1.1 Recepción de mercadería con captura de lote y vencimiento (M1 Recepción) | 2027-10-22 → 2027-06-10 (-134d) | 2027-10-22 → 2027-08-05 (-78d) | was named PT/H / H4 — entrega del expediente |
| 94 | 4.1.2 Inventario por ubicación y lote, con FEFO y conteo cíclico (M2 Inventario) | 2027-10-25 → 2027-06-10 (-137d) | 2027-11-19 → 2027-07-29 (-113d) | was named PT/H / 2 elementos: 3.8.2, 3.8.3 |
| 95 | 4.3.1 Aplicación móvil de preventa sin conexión, con stock y crédito (M3 Preventa) | 2027-10-25 → 2027-06-10 (-137d) | 2027-11-11 → 2027-08-04 (-99d) | was named PT/H / 4 elementos: 3.8.4, 3.8.5, 3.8.6, 3.8.8 |
| 96 | 5.1.3 Integración con la telemetría de los 42 camiones propios (INT-15) | 2027-11-02 → 2027-06-10 (-145d) | 2028-09-29 → 2027-07-12 (-445d) | was named PT/H / 3.11.2 Base de conocimiento de incidentes y decisiones de diseño |
| 97 | 8.7.1 Software de base instalado en los cinco sitios | 2027-11-02 → 2027-06-10 (-145d) | 2027-11-10 → 2027-06-30 (-133d) | was named PT/H / 4.1.1 Plan de olas de la Etapa 1 por sitio y zona: Talca, Concepción y plataformas de cross-docking |
| 98 | 8.7.2 Enlaces de fibra, LTE y Starlink habilitados, con conmutación al respaldo | 2027-11-02 → 2027-06-10 (-145d) | 2027-12-24 → 2027-06-30 (-177d) | was named PT/H / 2 elementos: 7.1.1, 7.1.6 |
| 99 | 8.7.3 Borde de los CD en servicio, con la prueba de autonomía de 24 horas aprobada | 2027-11-02 → 2027-06-10 (-145d) | 2028-07-31 → 2027-06-18 (-409d) | was named PT/H / 7.1.5 Materiales de capacitación: manuales por perfil, guías rápidas, preguntas frecuentes y videos tutoriales |
| 100 | 4.1.2 → 4.1.3 · Contrato de interfaz disponible | 2027-11-02 → 2027-06-16 (-139d) | 2028-05-31 → 2027-06-16 (-350d) | was named PT/H / 7.2.1 Acompañamiento del personal con 20 o 30 años en la compañía |
| 101 | 4.1.2 → 4.2.1 · Contrato de interfaz disponible | 2027-11-04 → 2027-06-16 (-141d) | 2028-01-14 → 2027-06-16 (-212d) | was named PT/H / 2 elementos: 6.5.2, 6.5.5 |
| 102 | 4.3.1 → 4.3.2 · Contrato de interfaz disponible | 2027-11-08 → 2027-06-16 (-145d) | 2027-11-08 → 2027-06-16 (-145d) | was named PT/H / H4 — acta del CLIENTE (límite: mes 10) |
| 103 | 4.3.1 → 4.3.3 · Contrato de interfaz disponible | 2027-11-09 → 2027-06-16 (-146d) | 2027-12-20 → 2027-06-16 (-187d) | was named PT/H / 4.1.4 Piloto de cadena de frío en cuatro camiones |
| 104 | 4.1.3 Preparación de pedidos en el turno de noche y en la cámara de congelado (M5 Preparación) | 2027-11-22 → 2027-06-18 (-157d) | 2027-12-01 → 2027-08-05 (-118d) | was named PT/H / 3.8.7 Acta de certificación de la Etapa 1 (H5) |
| 105 | 4.2.1 Cadena de frío, retención por SSCC y retiro sanitario (M9 Calidad y trazabilidad) | 2027-12-01 → 2027-06-18 (-166d) | 2027-12-31 → 2027-08-24 (-129d) | was named RC / 2 elementos: 3.7.3, 3.7.4 |
| 106 | 4.2.2 Ingesta de temperatura (M9) y posición de flota (M12) | 2027-12-01 → 2027-06-18 (-166d) | 2028-03-20 → 2027-08-16 (-217d) | was named PT/H / 3 elementos: 3.10.1.4, 3.10.2.4, 3.10.3.4 |
| 107 | 4.1.1 → 4.1.3 · Contrato de interfaz disponible | 2027-12-01 → 2027-06-18 (-166d) | 2027-12-10 → 2027-06-18 (-175d) | was named PT/H / 4.1.2 Procedimiento de reversión de la Etapa 1 antes de las 05:30, con versión operativa local y DTE emitidos por el ERP |
| 108 | 4.1.1 → 4.2.1 · Contrato de interfaz disponible | 2027-12-01 → 2027-06-18 (-166d) | 2028-09-29 → 2027-06-18 (-469d) | was named PT/H / 7.1.3 Incorporación de conductores de transportistas, escaneos y lectura del rojo |
| 109 | 8.5.3 Recinto de custodia de respaldos habilitado | 2027-12-01 → 2027-06-22 (-162d) | 2027-12-01 → 2027-07-09 (-145d) | was named PT/H / H5 — entrega del expediente |
| 110 | H3 · Entrega de expediente | 2028-01-03 → 2027-06-22 (-195d) | 2028-01-27 → 2027-06-22 (-219d) | was named PT/H / 3.7.5 Acta de conciliación y corte fuera de las ventanas de congelamiento |
| 111 | H3 · Revisión de la Contraparte (10 días hábiles) | 2028-01-03 → 2027-06-23 (-194d) | 2028-01-03 → 2027-07-07 (-180d) | was named PT/H / H5 — acta del CLIENTE (límite: mes 12) |
| 112 | 4.1.3 → 4.3.2 · Contrato de interfaz disponible | 2028-02-01 → 2027-06-25 (-221d) | 2028-02-01 → 2027-06-25 (-221d) | was named RC / H6 — inicio de marcha blanca (mes 13) |
| 113 | 4.1.3 → 4.3.3 · Contrato de interfaz disponible | 2028-02-01 → 2027-06-25 (-221d) | 2028-02-09 → 2027-06-25 (-229d) | was named PT/H / 1.2.5 Documento de línea base de alcance de la Etapa 2: canal moderno y costo de servir (H8) |
| 114 | 4.1.3 · Construcción dependiente de 4.1.1 | 2028-02-01 → 2027-06-29 (-217d) | 2028-02-16 → 2027-06-29 (-232d) | was named PT/H / 2.1.4 Documento de diseño detallado de M11 y del intercambio con las cadenas |
| 115 | 4.2.1 · Construcción dependiente de 4.1.1 | 2028-02-01 → 2027-06-29 (-217d) | 2028-07-04 → 2027-06-29 (-371d) | was named PT/H / 3.6.5 Intercambio electrónico con la principal cadena, con sus pruebas aprobadas (INT-08) |
| 116 | 4.1.3 · Construcción dependiente de 4.1.2 | 2028-02-01 → 2027-06-29 (-217d) | 2028-03-21 → 2027-06-29 (-266d) | was named PT/H / 3.10.4.1 Innovación 5: prototipo e informe de la prueba de comprensión (INN-05.P1) |
| 117 | 4.2.1 · Construcción dependiente de 4.1.2 | 2028-02-01 → 2027-06-29 (-217d) | 2028-04-28 → 2027-06-29 (-304d) | was named PT/H / 4.2.1 Marcha blanca de la Etapa 1 con conciliación diaria (H6) |
| 118 | 5.2.2 Integración con la pasarela de pago para el cobro con tarjeta (INT-09) | 2028-02-01 → 2027-07-01 (-215d) | 2028-10-31 → 2027-08-02 (-456d) | was named PT/H / 7.2.5 Medición de la adopción y plan de acción correctiva |
| 119 | 8.4.2 Certificación de enlaces, etiquetado y planos as-built | 2028-02-01 → 2027-07-01 (-215d) | 2028-03-24 → 2027-07-20 (-248d) | was named PT/H / 7.3.1 Certificación de preventistas, conductores y preparadores (Etapa 1) |
| 120 | H3 · Firma del acta | 2028-02-17 → 2027-07-07 (-225d) | 2028-02-28 → 2027-07-07 (-236d) | was named PT/H / 2.4.2 Acta de aprobación del diseño detallado de la Etapa 2 (H8) |
| 121 | 8.4.4 · Traslado dominical del ERP a R01 | 2028-02-28 → 2027-07-11 (-232d) | 2028-02-28 → 2027-07-11 (-232d) | was named PT/H / H8 — entrega del expediente |
| 122 | 8.4.4 · Cierre del paquete | 2028-02-29 → 2027-07-12 (-232d) | 2028-02-29 → 2027-07-12 (-232d) | was named PT/H / Inicio de la ola 3 de reparto |
| 123 | 5.2.4 Integración con el servicio de avisos al cliente (INT-11) | 2028-03-01 → 2027-07-20 (-225d) | 2028-04-19 → 2027-08-16 (-247d) | was named PT/H / 3.10.4.2 Innovación 5: evaluación de privacidad y diseño de la impresión en cabina (INN-05.P2) |
| 124 | 4.1.2 · Cierre del paquete | 2028-03-13 → 2027-07-29 (-228d) | 2028-03-13 → 2027-07-29 (-228d) | was named PT/H / H8 — acta del CLIENTE (límite: mes 14) |
| 125 | 4.1.2 → 4.1.3 · Incremento para integración | 2028-03-15 → 2027-07-29 (-230d) | 2028-04-28 → 2027-07-29 (-274d) | was named RC / 4 elementos: 3.5.1, 3.5.2, 3.5.3, 3.5.4 |
| 126 | 4.1.2 → 4.2.1 · Incremento para integración | 2028-04-03 → 2027-07-29 (-249d) | 2028-04-11 → 2027-07-29 (-257d) | was named PT/H / 1.7.2 Primera actualización anual del Plan de Reversibilidad durante la implementación |
| 127 | 4.3.4 Devoluciones en terreno y control de envases (M8 Devoluciones y envases) | 2028-04-03 → 2027-07-30 (-248d) | 2028-06-09 → 2027-09-15 (-268d) | was named PT/H / 3.10.4.3 Innovación 5: cálculo y bloques 1 a 3 de la hoja de negocio (INN-05.P3) |
| 128 | 5.2.1 Intercambio de lote y trazabilidad con los proveedores | 2028-04-03 → 2027-08-02 (-245d) | 2028-10-31 → 2027-09-01 (-426d) | was named PT/H / 3.11.1 Documentación técnica, funcional, de arquitectura, de operación y de seguridad |
| 129 | 6.8.7 Contrato de custodia de fuentes con un tercero independiente | 2028-04-03 → 2027-08-02 (-245d) | 2028-09-29 → 2027-08-10 (-416d) | was named PT/H / 7.1.4 Traspaso al equipo de TI de cuatro personas del CLIENTE |
| 130 | 7.1.1 Innovación 1: documento de catálogo de acciones y protocolo del piloto (INN-01.P1) | 2028-05-02 → 2027-08-02 (-274d) | 2028-05-18 → 2027-10-08 (-223d) | was named PT/H / 3.9.1 Pruebas de integración y regresión sin afectar la Etapa 1 en producción (H9) |
| 131 | 8.4.3 Gabinetes de piso y switches de acceso instalados en las bodegas de Talca y Concepción | 2028-05-05 → 2027-08-02 (-277d) | 2028-09-29 → 2027-08-19 (-407d) | was named PT/H / 4.2.2 Estabilización de la Etapa 1, acompañamiento en ruta y restauraciones de soporte puente |
| 132 | 4.1.1 → 4.1.3 · Incremento para integración | 2028-05-02 → 2027-08-02 (-274d) | 2028-06-23 → 2027-08-02 (-326d) | was named PT/H / 7.2.2 Gestión del cambio con las cadenas y los transportistas |
| 133 | 4.1.3 · Integración con 4.1.1 | 2028-05-05 → 2027-08-03 (-276d) | 2028-05-15 → 2027-08-03 (-286d) | was named PT/H / 4.2.3 Acta de aceptación de la Etapa 1 (H7) |
| 134 | 4.1.3 · Integración con 4.1.2 | 2028-05-15 → 2027-08-03 (-286d) | 2028-05-15 → 2027-08-03 (-286d) | was named PT/H / H7 — entrega del expediente |
| 135 | 5.4.1 Informe de perfilamiento y datos saneados | 2028-05-18 → 2027-08-04 (-288d) | 2028-05-18 → 2027-10-01 (-230d) | was named PT/H / H9 — entrega del expediente |
| 136 | 4.3.1 · Cierre del paquete | 2028-05-19 → 2027-08-04 (-289d) | 2028-06-01 → 2027-08-04 (-302d) | was named PT/H / 3 elementos: 3.9.3, 3.9.4, 3.9.7 |
| 137 | 4.3.1 → 4.3.2 · Incremento para integración | 2028-05-19 → 2027-08-04 (-289d) | 2028-05-26 → 2027-08-04 (-296d) | was named PT/H / 3.9.5 Prueba de seguridad ofensiva de la Etapa 2, por un tercero independiente |
| 138 | 4.3.1 → 4.3.3 · Incremento para integración | 2028-05-29 → 2027-08-04 (-299d) | 2028-05-29 → 2027-08-04 (-299d) | was named RC / H7 — acta del CLIENTE (límite: mes 16) |
| 139 | 4.3.3 Aplicación móvil de reparto con prueba de entrega digital (M6 Reparto) | 2028-06-01 → 2027-08-05 (-301d) | 2028-08-23 → 2027-09-27 (-331d) | was named PT/H / 3.6.6 Incorporación de las demás cadenas al intercambio electrónico (INT-08) |
| 140 | 4.1.1 · Cierre del paquete | 2028-06-01 → 2027-08-05 (-301d) | 2028-06-09 → 2027-08-05 (-309d) | was named PT/H / 4.1.3 Plan de implantación y reversión de la Etapa 2 fuera de la ventana de 05:30 a 07:00 |

| ID | Task | Start | Finish | Other |
| --- | --- | --- | --- | --- |
| 141 | 4.1.3 · Cierre del paquete | 2028-06-01 → 2027-08-05 (-301d) | 2028-06-09 → 2027-08-05 (-309d) | was named PT/H / 5.4.3 Fórmula aprobada del tramo variable: reglas de atribución, canasta e índices (INN-04.P1) |
| 142 | 4.1.1 → 4.2.1 · Incremento para integración | 2028-06-01 → 2027-08-05 (-301d) | 2028-06-01 → 2027-08-05 (-301d) | was named PT/H / H9 — acta del CLIENTE (límite: mes 17) |
| 143 | 4.1.3 → 4.3.2 · Incremento para integración | 2028-06-02 → 2027-08-05 (-302d) | 2028-06-15 → 2027-08-05 (-315d) | was named PT/H / 3.9.2 Pruebas de aceptación y de accesibilidad con cadenas, transportistas, Comercial y Finanzas |
| 144 | 4.1.3 → 4.3.3 · Incremento para integración | 2028-06-16 → 2027-08-05 (-316d) | 2028-06-28 → 2027-08-05 (-328d) | was named PT/H / 3.9.6 Acta de certificación de la Etapa 2 y cierre del desarrollo (H10) |
| 145 | 4.3.2 Planificación de rutas corregible por el planificador (M4 Rutas) | 2028-06-28 → 2027-08-06 (-327d) | 2028-06-28 → 2027-09-20 (-282d) | was named PT/H / H10 — entrega del expediente |
| 146 | 4.3.3 → 4.3.5 · Contrato de interfaz disponible | 2028-07-03 → 2027-08-10 (-328d) | 2028-09-29 → 2027-08-10 (-416d) | was named PT/H / 3.10.4.4 Innovación 5: hoja certificada, en marcha blanca y en producción (INN-05.P4, primera parte) |
| 147 | 4.3.5 Cobro en ruta, rendición y conciliación (M7 Cobranza y rendición) | 2028-07-03 → 2027-08-11 (-327d) | 2028-07-25 → 2027-09-30 (-299d) | was named PT/H / 7.3.2 Certificación de Comercial y Finanzas en costo de servir (Etapa 2) |
| 148 | 4.3.3 · Construcción dependiente de 4.1.3 | 2028-07-12 → 2027-08-11 (-336d) | 2028-07-12 → 2027-08-11 (-336d) | was named PT/H / H10 — acta del CLIENTE (límite: mes 18) |
| 149 | 4.3.3 · Construcción dependiente de 4.3.1 | 2028-08-01 → 2027-08-11 (-356d) | 2028-08-01 → 2027-08-11 (-356d) | was named RC / H11 — inicio de marcha blanca (mes 19) |
| 150 | 4.3.2 · Construcción dependiente de 4.1.3 | 2028-08-01 → 2027-08-13 (-354d) | 2028-09-29 → 2027-08-13 (-413d) | was named PT/H / 4.3.1 Marcha blanca de la Etapa 2 en convivencia con la Etapa 1 y fuente única de datos (H11) |
| 151 | 4.3.2 · Construcción dependiente de 4.3.1 | 2028-09-13 → 2027-08-13 (-397d) | 2028-09-25 → 2027-08-13 (-409d) | was named PT/H / 4.3.4 Garantía de correcto funcionamiento constituida, condición de la aceptación final (H12) |
| 152 | 5.2.3 Integración con el servicio de mapas y geocodificación (INT-10) | 2028-10-05 → 2027-08-16 (-416d) | 2028-11-30 → 2027-09-10 (-447d) | was named PT/H / 4.3.2 Estabilización de la Etapa 2 con Comercial, Finanzas, cadenas y transportistas |
| 153 | 4.3.5 · Construcción dependiente de 4.3.3 | 2028-10-02 → 2027-08-18 (-411d) | 2028-10-11 → 2027-08-18 (-420d) | was named PT/H / 4.3.3 Acta de aceptación final de la implementación (H12) |
| 154 | 4.2.1 · Integración con 4.1.1 | 2028-10-11 → 2027-08-20 (-418d) | 2028-10-11 → 2027-08-20 (-418d) | was named PT/H / H12 — entrega del expediente |
| 155 | 4.2.1 · Integración con 4.1.2 | 2028-10-25 → 2027-08-20 (-432d) | 2028-10-25 → 2027-08-20 (-432d) | was named RC / H12 — acta del CLIENTE (límite: mes 21) |

## Version 3 (saved 2026-11-23)

Note of the change: a

Last finish stays 2031-09-30.

Added:

| ID | Task | Start | Finish |
| --- | --- | --- | --- |
| 15 | Especificación de equipos de frío disponible | 2027-02-01 | 2027-02-01 |
| 16 | Inicio contractual (supuesto V-12) | 2027-02-01 | 2027-02-01 |
| 49 | 8.3.1 Piso técnico de la sala y recepción de obra civil de separación (BTT, cap. 6, RT-06.06, p. 15) | 2027-04-01 | 2027-04-20 |
| 289 | Seguimiento de construcción E1 · 15/06/2027 | 2027-06-15 | 2027-06-15 |
| 290 | Seguimiento de construcción E1 · 30/06/2027 | 2027-06-30 | 2027-06-30 |
| 291 | Seguimiento de construcción E1 · 15/07/2027 | 2027-07-15 | 2027-07-15 |
| 292 | Entrega a QA · 4.1.2 | 2027-07-29 | 2027-07-29 |
| 293 | Demostración de módulos en QA E1 · 30/07/2027 | 2027-07-30 | 2027-07-30 |
| 294 | Seguimiento de construcción E1 · 30/07/2027 | 2027-07-30 | 2027-07-30 |
| 295 | Entrega a QA · 4.3.1 | 2027-08-04 | 2027-08-04 |
| 296 | Entrega a QA · 4.1.1 | 2027-08-05 | 2027-08-05 |
| 297 | Entrega a QA · 4.1.3 | 2027-08-05 | 2027-08-05 |
| 298 | Demostración de módulos en QA E1 · 13/08/2027 | 2027-08-13 | 2027-08-13 |
| 299 | Seguimiento de construcción E1 · 13/08/2027 | 2027-08-13 | 2027-08-13 |
| 300 | Entrega a QA · 4.2.2 | 2027-08-16 | 2027-08-16 |
| 301 | Entrega a QA · 4.2.1 | 2027-08-24 | 2027-08-24 |
| 302 | Demostración de módulos en QA E1 · 31/08/2027 | 2027-08-31 | 2027-08-31 |
| 303 | Seguimiento de construcción E1 · 31/08/2027 | 2027-08-31 | 2027-08-31 |
| 304 | Demostración de módulos en QA E1 · 15/09/2027 | 2027-09-15 | 2027-09-15 |
| 305 | Entrega a QA · 4.3.4 | 2027-09-15 | 2027-09-15 |
| 306 | Seguimiento de construcción E1 · 15/09/2027 | 2027-09-15 | 2027-09-15 |
| 307 | Entrega a QA · 4.3.2 | 2027-09-20 | 2027-09-20 |
| 308 | Entrega a QA · 4.3.3 | 2027-09-27 | 2027-09-27 |
| 309 | Entrega a QA · 4.5.1 | 2027-09-29 | 2027-09-29 |
| 310 | Demostración de módulos en QA E1 · 30/09/2027 | 2027-09-30 | 2027-09-30 |
| 311 | Entrega a QA · 4.3.5 | 2027-09-30 | 2027-09-30 |
| 312 | Seguimiento de construcción E1 · 30/09/2027 | 2027-09-30 | 2027-09-30 |
| 313 | Seguimiento de construcción E2 · 15/03/2028 | 2028-03-15 | 2028-03-15 |
| 314 | Seguimiento de construcción E2 · 31/03/2028 | 2028-03-31 | 2028-03-31 |
| 315 | Seguimiento de construcción E2 · 13/04/2028 | 2028-04-13 | 2028-04-13 |
| 316 | Demostración de módulos en QA E2 · 28/04/2028 | 2028-04-28 | 2028-04-28 |
| 317 | Entrega a QA · 4.4.1 | 2028-04-28 | 2028-04-28 |
| 318 | Entrega a QA · 4.4.2 | 2028-04-28 | 2028-04-28 |
| 319 | Entrega a QA · 4.4.3 | 2028-04-28 | 2028-04-28 |
| 320 | Entrega a QA · 4.5.2 | 2028-04-28 | 2028-04-28 |
| 321 | Seguimiento de construcción E2 · 28/04/2028 | 2028-04-28 | 2028-04-28 |

Removed: 47 8.3.1 Piso técnico de la sala y recepción de obra civil de separación (RT-06.06)

Changed:

| ID | Task | Start | Finish |
| --- | --- | --- | --- |
| 210 | H5 · Entrega de expediente | 2027-11-24 → 2027-12-01 (+7d) | 2027-11-24 → 2027-12-01 (+7d) |
| 211 | H5 · Evidencia disponible (6.7.1) | 2027-11-24 → 2027-12-01 (+7d) | 2027-11-24 → 2027-12-01 (+7d) |
| 213 | H5 · Revisión de la Contraparte (10 días hábiles) | 2027-11-25 → 2027-12-02 (+7d) | 2027-12-09 → 2027-12-16 (+7d) |
